# Cronograma

How a schedule from MS Project changed from version to version. A marks actual dates.

## Version 1 (data date 2015-03-26, saved 2015-03-26, file Cronograma.mpp)

Note of the change: Se agrega Backbone, Primer paso agregar producto, Relación de categorias con marcas en el Admin y BD

| ID | WBS | Task | Duration | Start | Finish | Predecessors | Complete | Total float |
| --- | --- | --- | --- | --- | --- | --- | --- | --- |
| 1 | 1 | **Tuils Proyecto** | 89.22d | 2015-03-26 08:00 A | 2015-08-27 11:00 |  | 1% | 0d |
| 2 | 1.1 | **Inicio** | 2.5d | 2015-03-26 08:00 A | 2015-03-30 15:30 |  | 75% |  |
| 3 | 1.1.1 | **Configurar ambiente Inicial** | 1.5d | 2015-03-26 08:00 A | 2015-03-27 14:30 |  | 92% | 0d |
| 4 |  | Configurar estructura github | 1.5h | 2015-03-26 08:00 A | 2015-03-26 09:30 A |  | 100% |  |
| 5 |  | Configurar solución | 4h | 2015-03-26 09:30 A | 2015-03-26 14:30 | 4 | 80% | 0.89d |
| 6 |  | Crear BD | 1h | 2015-03-26 14:30 A | 2015-03-26 15:30 A | 5 | 100% |  |
| 7 |  | Agregar proyecto a Github | 4h | 2015-03-26 15:30 A | 2015-03-27 10:30 A | 6 | 100% |  |
| 8 |  | Configurar idioma Español | 3h | 2015-03-27 10:30 A | 2015-03-27 14:30 | 7 | 90% | 0d |
| 9 | 1.1.2 | **Diseño** | 1d | 2015-03-27 14:30 A | 2015-03-30 15:30 | 3 | 50% | 0d |
| 10 |  | Diseño de BD | 9h | 2015-03-27 14:30 A | 2015-03-30 15:30 |  | 50% | 0d |
| 11 | 1.2 | **Fase 1 (Ventas)** | 53.83d | 2015-03-27 08:00 | 2015-06-30 13:30 |  |  | 0d |
| 12 | 1.2.1 | **Desarrollo** | 46.22d | 2015-03-30 15:30 | 2015-06-18 15:30 | 2 |  | 0d |
| 13 | 1.2.1.1 | **Publicacion Producto** | 8.89d | 2015-03-30 15:30 | 2015-04-15 15:30 |  |  | 0d |
| 14 | 1.2.1.1.1 | **Paso1 (Seleccionar Categoria)** | 2.44d | 2015-03-30 15:30 | 2015-04-06 13:30 |  |  | 0d |
| 15 |  | Ajustes de BD | 2h | 2015-03-30 15:30 | 2015-03-31 08:30 |  |  | 0d |
| 16 |  | Menú Superior Tipo Producto | 2h | 2015-03-31 08:30 | 2015-03-31 10:30 | 15 |  | 0d |
| 17 |  | Paso actual en el proceso | 2h | 2015-03-31 10:30 | 2015-03-31 13:30 | 16 |  | 0d |
| 18 | 1.2.1.1.1.4 | **Seleccion de Categorias** | 1.44d | 2015-03-31 13:30 | 2015-04-06 09:30 | 17 |  | 0d |
| 19 |  | Acceso a Datos | 3h | 2015-03-31 13:30 | 2015-03-31 16:30 |  |  | 0d |
| 20 |  | Filtro por seleccion | 3h | 2015-03-31 16:30 | 2015-04-01 10:30 | 19 |  | 0d |
| 21 |  | Filtro por texto | 3h | 2015-04-01 10:30 | 2015-04-01 14:30 | 20 |  | 0d |
| 22 |  | Ultimo seleccionado | 2h | 2015-04-01 14:30 | 2015-04-01 16:30 | 21 |  | 0d |
| 23 |  | Guardar | 2h | 2015-04-01 16:30 | 2015-04-06 09:30 | 22 |  | 0d |
| 24 |  | Pruebas Unitarias | 3h | 2015-04-06 09:30 | 2015-04-06 13:30 | 18 |  | 0d |
| 25 | 1.2.1.1.2 | **Paso2 (Detalle Producto)** | 2.56d | 2015-04-06 13:30 | 2015-04-09 11:30 | 14 |  | 0d |
| 26 |  | Menu tipo producto | 1h | 2015-04-06 13:30 | 2015-04-06 14:30 |  |  | 0d |
| 27 |  | Menu numero de paso | 1h | 2015-04-06 14:30 | 2015-04-06 15:30 | 26 |  | 0d |
| 28 |  | Acceso a datos | 2h | 2015-04-06 15:30 | 2015-04-07 08:30 | 27 |  | 0d |
| 29 |  | Datos básicos producto | 1h | 2015-04-07 08:30 | 2015-04-07 09:30 | 28 |  | 0d |
| 30 |  | Seleccionar tipo de moto | 5h | 2015-04-07 09:30 | 2015-04-07 15:30 | 29 |  | 0d |
| 31 |  | Datos de envío | 3h | 2015-04-07 15:30 | 2015-04-08 09:30 | 30 |  | 0d |
| 32 |  | Editor HTML | 6h | 2015-04-08 09:30 | 2015-04-08 16:30 | 30, 31 |  | 0d |
| 33 |  | Guardar | 2h | 2015-04-08 16:30 | 2015-04-09 09:30 | 32 |  | 0d |
| 34 |  | Pruebas unitarias | 2h | 2015-04-09 09:30 | 2015-04-09 11:30 | 33 |  | 0d |
| 35 | 1.2.1.1.3 | **Paso3 (Seleccionador Fotos)** | 2d | 2015-04-09 11:30 | 2015-04-13 14:30 | 25 |  | 0d |
| 36 |  | Mostrar fotos | 3h | 2015-04-09 11:30 | 2015-04-09 15:30 |  |  | 0d |
| 37 |  | Seleccionar foto | 3h | 2015-04-09 15:30 | 2015-04-10 09:30 | 36 |  | 0d |
| 38 |  | Cambiar foto | 3h | 2015-04-10 09:30 | 2015-04-10 13:30 | 37 |  | 0d |
| 39 |  | Eliminar foto | 3h | 2015-04-10 13:30 | 2015-04-10 16:30 | 38 |  | 0d |
| 40 |  | Guardar fotos | 3h | 2015-04-10 16:30 | 2015-04-13 10:30 | 39 |  | 0d |
| 41 |  | Pruebas unitarias | 3h | 2015-04-13 10:30 | 2015-04-13 14:30 | 40 |  | 0d |
| 42 | 1.2.1.1.4 | **Paso 4 (Resumen)** | 1.22d | 2015-04-13 14:30 | 2015-04-15 08:30 | 35 |  | 0d |
| 43 |  | Datos basicos | 2h | 2015-04-13 14:30 | 2015-04-13 16:30 |  |  | 0d |
| 44 |  | Imagenes | 2h | 2015-04-13 16:30 | 2015-04-14 09:30 | 43 |  | 0d |
| 45 |  | Aceptar terminos y condiciones | 1h | 2015-04-14 09:30 | 2015-04-14 10:30 | 44 |  | 0d |
| 46 |  | Volver | 2h | 2015-04-14 10:30 | 2015-04-14 13:30 | 45 |  | 0d |
| 47 |  | Publicar | 2h | 2015-04-14 13:30 | 2015-04-14 15:30 | 46 |  | 0d |
| 48 |  | Pruebas unitarias | 2h | 2015-04-14 15:30 | 2015-04-15 08:30 | 47 |  | 0d |
| 49 |  | Ajustar Diseño | 6h | 2015-04-15 08:30 | 2015-04-15 15:30 | 42, 191 |  | 0d |
| 50 |  | Seleccionar tipo de producto | 4h | 2015-04-15 15:30 | 2015-04-16 10:30 | 13 |  | 0d |
| 51 | 1.2.1.3 | **Publicación Moto** | 6.22d | 2015-04-16 10:30 | 2015-04-27 10:30 | 50 |  | 0d |
| 52 | 1.2.1.3.1 | **Paso1 (Seleccionar Categoria)** | 2.22d | 2015-04-16 10:30 | 2015-04-20 15:30 |  |  | 0d |
| 53 |  | Ajustes de BD | 4h | 2015-04-16 10:30 | 2015-04-16 15:30 |  |  | 0d |
| 54 |  | Menú Superior Tipo Producto | 1h | 2015-04-16 15:30 | 2015-04-16 16:30 | 53 |  | 0d |
| 55 |  | Paso actual en el proceso | 1h | 2015-04-16 16:30 | 2015-04-17 08:30 | 54 |  | 0d |
| 56 | 1.2.1.3.1.4 | **Seleccion de Categorias** | 1.22d | 2015-04-17 08:30 | 2015-04-20 11:30 | 55 |  | 0d |
| 57 |  | Acceso a Datos | 4h | 2015-04-17 08:30 | 2015-04-17 13:30 |  |  | 0d |
| 58 |  | Filtro por seleccion | 2h | 2015-04-17 13:30 | 2015-04-17 15:30 | 57 |  | 0d |
| 59 |  | Filtro por texto | 2h | 2015-04-17 15:30 | 2015-04-20 08:30 | 58 |  | 0d |
| 60 |  | Ultimo seleccionado | 1h | 2015-04-20 08:30 | 2015-04-20 09:30 | 59 |  | 0d |
| 61 |  | Guardar | 2h | 2015-04-20 09:30 | 2015-04-20 11:30 | 60 |  | 0d |
| 62 |  | Pruebas Unitarias | 3h | 2015-04-20 11:30 | 2015-04-20 15:30 | 56 |  | 0d |
| 63 | 1.2.1.3.2 | **Paso2 (Detalle Producto)** | 1.56d | 2015-04-20 15:30 | 2015-04-22 13:30 | 52 |  | 0d |
| 64 |  | Acceso a datos | 4h | 2015-04-20 15:30 | 2015-04-21 10:30 |  |  | 0d |
| 65 |  | Datos básicos producto | 1h | 2015-04-21 10:30 | 2015-04-21 11:30 | 64 |  | 0d |
| 66 |  | Seleccionar tipo de moto | 5h | 2015-04-21 11:30 | 2015-04-22 08:30 | 65 |  | 0d |
| 67 |  | Guardar | 2h | 2015-04-22 08:30 | 2015-04-22 10:30 | 66 |  | 0d |
| 68 |  | Pruebas unitarias | 2h | 2015-04-22 10:30 | 2015-04-22 13:30 | 67 |  | 0d |
| 69 | 1.2.1.3.3 | **Paso3 (Seleccionador Fotos)** | 0.89d | 2015-04-22 13:30 | 2015-04-23 13:30 | 63 |  | 0d |
| 70 |  | Mostrar fotos | 2h | 2015-04-22 13:30 | 2015-04-22 15:30 |  |  | 0d |

| ID | WBS | Task | Duration | Start | Finish | Predecessors | Total float |
| --- | --- | --- | --- | --- | --- | --- | --- |
| 71 |  | Seleccionar foto | 1h | 2015-04-22 15:30 | 2015-04-22 16:30 | 70 | 0d |
| 72 |  | Cambiar foto | 1h | 2015-04-22 16:30 | 2015-04-23 08:30 | 71 | 0d |
| 73 |  | Eliminar foto | 1h | 2015-04-23 08:30 | 2015-04-23 09:30 | 72 | 0d |
| 74 |  | Guardar fotos | 1h | 2015-04-23 09:30 | 2015-04-23 10:30 | 73 | 0d |
| 75 |  | Pruebas unitarias | 2h | 2015-04-23 10:30 | 2015-04-23 13:30 | 74 | 0d |
| 76 | 1.2.1.3.4 | **Paso 4 (Resumen)** | 0.89d | 2015-04-23 13:30 | 2015-04-24 13:30 | 69 | 0d |
| 77 |  | Datos basicos | 2h | 2015-04-23 13:30 | 2015-04-23 15:30 |  | 0d |
| 78 |  | Imagenes | 1h | 2015-04-23 15:30 | 2015-04-23 16:30 | 77 | 0d |
| 79 |  | Aceptar terminos y condiciones | 1h | 2015-04-23 16:30 | 2015-04-24 08:30 | 78 | 0d |
| 80 |  | Volver | 1h | 2015-04-24 08:30 | 2015-04-24 09:30 | 79 | 0d |
| 81 |  | Publicar | 1h | 2015-04-24 09:30 | 2015-04-24 10:30 | 80 | 0d |
| 82 |  | Pruebas unitarias | 2h | 2015-04-24 10:30 | 2015-04-24 13:30 | 81 | 0d |
| 83 |  | Ajustar Diseño | 6h | 2015-04-24 13:30 | 2015-04-27 10:30 | 76, 197 | 0d |
| 84 | 1.2.1.4 | **Listado de productos** | 2.22d | 2015-04-27 10:30 | 2015-04-29 15:30 | 51 | 0d |
| 85 |  | Listado de productos | 4h | 2015-04-27 10:30 | 2015-04-27 15:30 |  | 0d |
| 86 |  | Mejorar filtrado | 16h | 2015-04-27 15:30 | 2015-04-29 15:30 | 85 | 0d |
| 87 | 1.2.1.5 | **Detalle del Producto** | 2.78d | 2015-04-29 15:30 | 2015-05-05 16:30 | 84 | 0d |
| 88 |  | Revision de links y carga de info | 4h | 2015-04-29 15:30 | 2015-04-30 10:30 |  | 0d |
| 89 |  | Comprar y notificar | 3h | 2015-04-30 10:30 | 2015-04-30 14:30 | 88 | 0d |
| 90 | 1.2.1.5.3 | **Pestaña detalle de producto** | 0.67d | 2015-04-30 14:30 | 2015-05-04 11:30 | 89 | 0d |
| 91 |  | Cargar caracteristcas | 2h | 2015-04-30 14:30 | 2015-04-30 16:30 |  | 0d |
| 92 |  | Cargar HTML | 4h | 2015-04-30 16:30 | 2015-05-04 11:30 | 91 | 0d |
| 93 | 1.2.1.5.4 | **Pestaña reviews** | 0.22d | 2015-05-04 11:30 | 2015-05-04 14:30 | 90 | 0d |
| 94 |  | Cargar Reviews | 1h | 2015-05-04 11:30 | 2015-05-04 13:30 |  | 0d |
| 95 |  | Quitar parcialmente opcion de nuevo review | 1h | 2015-05-04 13:30 | 2015-05-04 14:30 | 94 | 0d |
| 96 |  | Quitar pestaña envios | 0.5h | 2015-05-04 14:30 | 2015-05-04 15:00 | 93 | 0d |
| 97 |  | Quitar pestaña price match | 0.5h | 2015-05-04 15:00 | 2015-05-04 15:30 | 96 | 0d |
| 98 | 1.2.1.5.7 | **Preguntas** | 1d | 2015-05-04 15:30 | 2015-05-05 16:30 | 97 | 0d |
| 99 |  | BD | 2h | 2015-05-04 15:30 | 2015-05-05 08:30 |  | 0d |
| 100 |  | Listar preguntas | 4h | 2015-05-05 08:30 | 2015-05-05 13:30 | 99 | 0d |
| 101 |  | Agregar preguntas | 3h | 2015-05-05 13:30 | 2015-05-05 16:30 | 100 | 0d |
| 102 | 1.2.1.6 | **Home** | 4.67d | 2015-05-05 16:30 | 2015-05-13 09:30 | 87 | 0d |
| 103 |  | Menu de categorias | 10h | 2015-05-05 16:30 | 2015-05-07 09:30 |  | 0d |
| 104 |  | Menu principal | 10h | 2015-05-07 09:30 | 2015-05-08 11:30 | 103 | 0d |
| 105 |  | Ajustes generales | 4h | 2015-05-08 11:30 | 2015-05-08 16:30 | 104 | 0d |
| 106 |  | Revision de Buscador | 10h | 2015-05-08 16:30 | 2015-05-12 09:30 | 105 | 0d |
| 107 |  | Eliminación funcionalidades innecesarias | 4h | 2015-05-12 09:30 | 2015-05-12 14:30 | 106 | 0d |
| 108 |  | Pruebas unitarias | 4h | 2015-05-12 14:30 | 2015-05-13 09:30 | 107 | 0d |
| 109 | 1.2.1.7 | **Registro** | 2.33d | 2015-05-13 09:30 | 2015-05-15 15:30 | 102 | 0d |
| 110 |  | Tipo persona | 3h | 2015-05-13 09:30 | 2015-05-13 13:30 |  | 0d |
| 111 |  | Datos basicos | 3h | 2015-05-13 13:30 | 2015-05-13 16:30 | 110 | 0d |
| 112 |  | Guardar datos | 3h | 2015-05-13 16:30 | 2015-05-14 10:30 | 111 | 0d |
| 113 |  | Enviar correo de confirmacion | 1h | 2015-05-14 10:30 | 2015-05-14 11:30 | 112 | 0d |
| 114 |  | Pruebas unitarias | 3h | 2015-05-14 11:30 | 2015-05-14 15:30 | 113 | 0d |
| 115 | 1.2.1.7.6 | **Registro rapido** | 0.89d | 2015-05-14 15:30 | 2015-05-15 15:30 | 114 | 0d |
| 116 |  | Creacion funcionalidad | 6h | 2015-05-14 15:30 | 2015-05-15 13:30 |  | 0d |
| 117 |  | Llamado en los sitios pendientes | 2h | 2015-05-15 13:30 | 2015-05-15 15:30 | 116 | 0d |
| 118 | 1.2.1.8 | **Autenticacion** | 1.33d | 2015-05-15 15:30 | 2015-05-20 10:30 | 109 | 0d |
| 119 |  | Datos basicos | 3h | 2015-05-15 15:30 | 2015-05-19 09:30 |  | 0d |
| 120 |  | Autenticacion | 2h | 2015-05-19 09:30 | 2015-05-19 11:30 | 119 | 0d |
| 121 |  | Pruebas unitarias | 2h | 2015-05-19 11:30 | 2015-05-19 14:30 | 120 | 0d |
| 122 | 1.2.1.8.4 | **Autenticacion Rapida** | 0.56d | 2015-05-19 14:30 | 2015-05-20 10:30 | 121 | 0d |
| 123 |  | Crear funcionalidad | 3h | 2015-05-19 14:30 | 2015-05-20 08:30 |  | 0d |
| 124 |  | Llamado en los sitios pendientes | 2h | 2015-05-20 08:30 | 2015-05-20 10:30 | 123 | 0d |
| 125 | 1.2.1.9 | **Recordar Clave** | 0.33d | 2015-05-20 10:30 | 2015-05-20 14:30 | 118 | 0d |
| 126 |  | Revisar funcionalidad | 2h | 2015-05-20 10:30 | 2015-05-20 13:30 |  | 0d |
| 127 |  | Enviar correo | 1h | 2015-05-20 13:30 | 2015-05-20 14:30 | 126 | 0d |
| 128 | 1.2.1.10 | **Detalle del Vendedor (Usuario)** | 2.44d | 2015-05-20 14:30 | 2015-05-25 11:30 | 125 | 0d |
| 129 |  | Acceso a datos | 4h | 2015-05-20 14:30 | 2015-05-21 09:30 |  | 0d |
| 130 |  | Informacion Básica | 3h | 2015-05-21 09:30 | 2015-05-21 13:30 | 129 | 0d |
| 131 |  | Comentarios Recibidos | 3h | 2015-05-21 13:30 | 2015-05-21 16:30 | 130 | 0d |
| 132 |  | Enviar mensaje prviado | 5h | 2015-05-21 16:30 | 2015-05-22 13:30 | 131 | 0d |
| 133 |  | Contar experiencia | 5h | 2015-05-22 13:30 | 2015-05-25 09:30 | 132 | 0d |
| 134 |  | Enviar correos de notificación | 2h | 2015-05-25 09:30 | 2015-05-25 11:30 | 133 | 0d |
| 135 | 1.2.1.11 | **Panel de Control** | 10.56d | 2015-05-25 11:30 | 2015-06-11 10:30 | 128 | 0d |
| 136 |  | Home Panel De Control | 6h | 2015-05-25 11:30 | 2015-05-26 09:30 |  | 0d |
| 137 | 1.2.1.11.2 | **Mis datos** | 1.89d | 2015-05-26 09:30 | 2015-05-28 10:30 | 136 | 0d |
| 138 |  | BD | 2h | 2015-05-26 09:30 | 2015-05-26 11:30 |  | 0d |
| 139 |  | Datos basicos | 3h | 2015-05-26 11:30 | 2015-05-26 15:30 | 138 | 0d |
| 140 | 1.2.1.11.2.3 | **Mi moto** | 0.56d | 2015-05-26 15:30 | 2015-05-27 11:30 | 139 | 0d |

| ID | WBS | Task | Duration | Start | Finish | Predecessors | Total float | Constraint |
| --- | --- | --- | --- | --- | --- | --- | --- | --- |
| 141 |  | Seleccion de marca | 3h | 2015-05-26 15:30 | 2015-05-27 09:30 |  | 0d |  |
| 142 |  | Datos adicionales | 1h | 2015-05-27 09:30 | 2015-05-27 10:30 | 141 | 0d |  |
| 143 |  | Carga de logo | 1h | 2015-05-27 10:30 | 2015-05-27 11:30 | 142 | 0d |  |
| 144 | 1.2.1.11.2.4 | **Cambiar Clave** | 0.22d | 2015-05-27 11:30 | 2015-05-27 14:30 | 140 | 0d |  |
| 145 |  | Ajustar diseño | 1h | 2015-05-27 11:30 | 2015-05-27 13:30 |  | 0d |  |
| 146 |  | Retornar a edicion de datos | 1h | 2015-05-27 13:30 | 2015-05-27 14:30 | 145 | 0d |  |
| 147 |  | Guardar | 2h | 2015-05-27 14:30 | 2015-05-27 16:30 | 144 | 0d |  |
| 148 |  | Pruebas unitarias | 3h | 2015-05-27 16:30 | 2015-05-28 10:30 | 147 | 0d |  |
| 149 | 1.2.1.11.3 | **Mis productos** | 2d | 2015-05-28 10:30 | 2015-06-01 13:30 | 137 | 0d |  |
| 150 |  | Filtro de tipo de producto | 2h | 2015-05-28 10:30 | 2015-05-28 13:30 |  | 0d |  |
| 151 |  | Filtro estado | 2h | 2015-05-28 13:30 | 2015-05-28 15:30 | 150 | 0d |  |
| 152 |  | Listado de productos | 3h | 2015-05-28 15:30 | 2015-05-29 09:30 | 151 | 0d |  |
| 153 |  | Acceso a datos | 2h | 2015-05-29 09:30 | 2015-05-29 11:30 | 152 | 0d |  |
| 154 | 1.2.1.11.3.5 | **Responder preguntas** | 0.67d | 2015-05-29 11:30 | 2015-06-01 09:30 | 153 | 0d |  |
| 155 |  | Listado de preguntas | 3h | 2015-05-29 11:30 | 2015-05-29 15:30 |  | 0d |  |
| 156 |  | Guardado de datos | 2h | 2015-05-29 15:30 | 2015-06-01 08:30 | 155 | 0d |  |
| 157 |  | Enviar notificacion | 1h | 2015-06-01 08:30 | 2015-06-01 09:30 | 156 | 0d |  |
| 158 |  | Pruebas unitarias | 3h | 2015-06-01 09:30 | 2015-06-01 13:30 | 154 | 0d |  |
| 159 | 1.2.1.11.4 | **Mis ventas** | 1d | 2015-06-01 13:30 | 2015-06-02 14:30 | 149 | 0d |  |
| 160 |  | Listado de productos | 3h | 2015-06-01 13:30 | 2015-06-01 16:30 |  | 0d |  |
| 161 |  | Filtro | 2h | 2015-06-01 16:30 | 2015-06-02 09:30 | 160 | 0d |  |
| 162 |  | Acceso a datos | 2h | 2015-06-02 09:30 | 2015-06-02 11:30 | 161 | 0d |  |
| 163 |  | Pruebas unitarias | 2h | 2015-06-02 11:30 | 2015-06-02 14:30 | 162 | 0d |  |
| 164 | 1.2.1.11.5 | **Mis Compras** | 2.33d | 2015-06-02 14:30 | 2015-06-05 10:30 | 159 | 0d |  |
| 165 |  | Listado de productos | 4h | 2015-06-02 14:30 | 2015-06-03 09:30 |  | 0d |  |
| 166 |  | Filtros | 3h | 2015-06-03 09:30 | 2015-06-03 13:30 | 165 | 0d |  |
| 167 |  | Paginacion | 2h | 2015-06-03 13:30 | 2015-06-03 15:30 | 166 | 0d |  |
| 168 |  | BD | 2h | 2015-06-03 15:30 | 2015-06-04 08:30 | 167 | 0d |  |
| 169 | 1.2.1.11.5.5 | **Calificar** | 0.78d | 2015-06-04 08:30 | 2015-06-04 16:30 | 168 | 0d |  |
| 170 |  | Datos basicos | 2h | 2015-06-04 08:30 | 2015-06-04 10:30 |  | 0d |  |
| 171 |  | BD | 2h | 2015-06-04 10:30 | 2015-06-04 13:30 | 170 | 0d |  |
| 172 |  | Guardar | 2h | 2015-06-04 13:30 | 2015-06-04 15:30 | 171 | 0d |  |
| 173 |  | Volver a listado | 1h | 2015-06-04 15:30 | 2015-06-04 16:30 | 172 | 0d |  |
| 174 |  | Pruebas unitarias | 3h | 2015-06-04 16:30 | 2015-06-05 10:30 | 169 | 0d |  |
| 175 | 1.2.1.11.6 | **Mensajes Recibidos** | 1.67d | 2015-06-05 10:30 | 2015-06-10 09:30 | 164 | 0d |  |
| 176 |  | Listado de mensajes | 4h | 2015-06-05 10:30 | 2015-06-05 15:30 |  | 0d |  |
| 177 |  | Filtro | 2h | 2015-06-05 15:30 | 2015-06-09 08:30 | 176 | 0d |  |
| 178 |  | Cargar hilo de mensajes | 4h | 2015-06-09 08:30 | 2015-06-09 13:30 | 177 | 0d |  |
| 179 |  | Responder mensaje | 2h | 2015-06-09 13:30 | 2015-06-09 15:30 | 178 | 0d |  |
| 180 |  | Pruebas unitarias | 3h | 2015-06-09 15:30 | 2015-06-10 09:30 | 179 | 0d |  |
| 181 |  | Panel de notificaciones | 9h | 2015-06-10 09:30 | 2015-06-11 10:30 | 175 | 0d |  |
| 182 |  | Mapa del sitio | 2h | 2015-06-11 10:30 | 2015-06-11 13:30 | 135 | 0d |  |
| 183 |  | Condiciones de uso | 1h | 2015-06-11 13:30 | 2015-06-11 14:30 | 182 | 0d |  |
| 184 |  | Contacto | 4h | 2015-06-11 14:30 | 2015-06-12 09:30 | 183 | 0d |  |
| 185 |  | Acerca de nosotros | 2h | 2015-06-12 09:30 | 2015-06-12 11:30 | 184 | 0d |  |
| 186 |  | Ajustes adicionales | 27h | 2015-06-12 11:30 | 2015-06-18 15:30 | 185 | 0d |  |
| 187 | 1.2.2 | **Diseño Web** | 31.44d | 2015-03-27 08:00 | 2015-05-21 11:00 |  | 1.17d |  |
| 188 |  | Visuales | 9h | 2015-03-27 08:00 | 2015-03-30 09:00 |  | 1.17d | start no earlier than 2015-03-27 08:00 |
| 189 |  | Home | 9h | 2015-03-30 09:00 | 2015-03-31 10:00 | 188 | 1.17d | start no earlier than 2015-03-26 08:00 |
| 190 | 1.2.2.3 | **Panel de Control** | 16.44d | 2015-03-31 10:00 | 2015-04-28 15:00 | 189 | 1.17d |  |
| 191 | 1.2.2.3.1 | **Publicacion Producto** | 3.11d | 2015-04-08 10:00 | 2015-04-13 15:00 | 204 | 1.17d |  |
| 192 |  | Paso1 | 0.44d | 2015-04-08 10:00 | 2015-04-08 15:00 |  | 1.17d |  |
| 193 |  | Paso2 | 0.89d | 2015-04-08 15:00 | 2015-04-09 15:00 | 192 | 1.17d |  |
| 194 |  | Paso3 | 0.89d | 2015-04-09 15:00 | 2015-04-10 15:00 | 193 | 1.17d |  |
| 195 |  | Paso4 | 0.89d | 2015-04-10 15:00 | 2015-04-13 15:00 | 194 | 1.17d |  |
| 196 |  | Home Panel De Control | 0.89d | 2015-03-31 10:00 | 2015-04-01 10:00 |  | 1.17d |  |
| 197 | 1.2.2.3.3 | **Publicacion Moto** | 3.56d | 2015-04-13 15:00 | 2015-04-17 15:00 | 191 | 4.28d |  |
| 198 |  | Paso1 | 0.89d | 2015-04-13 15:00 | 2015-04-14 15:00 |  | 4.28d |  |
| 199 |  | Paso2 | 0.89d | 2015-04-14 15:00 | 2015-04-15 15:00 | 198 | 4.28d |  |
| 200 |  | Paso3 | 0.89d | 2015-04-15 15:00 | 2015-04-16 15:00 | 199 | 4.28d |  |
| 201 |  | Paso4 | 0.89d | 2015-04-16 15:00 | 2015-04-17 15:00 | 200 | 4.28d |  |
| 202 |  | Actualizacion de datos | 0.89d | 2015-04-01 10:00 | 2015-04-06 10:00 | 196 | 1.17d |  |
| 203 |  | Cambiar Clave | 0.89d | 2015-04-06 10:00 | 2015-04-07 10:00 | 202 | 1.17d |  |
| 204 |  | Seleccionar tipo de producto | 0.89d | 2015-04-07 10:00 | 2015-04-08 10:00 | 203 | 1.17d |  |
| 205 |  | Mensajes Recibidos | 0.89d | 2015-04-17 15:00 | 2015-04-20 15:00 | 197 | 22.39d |  |
| 206 |  | Mis Compras | 0.89d | 2015-04-20 15:00 | 2015-04-21 15:00 | 205 | 22.39d |  |
| 207 |  | Calificar | 0.89d | 2015-04-21 15:00 | 2015-04-22 15:00 | 206 | 22.39d |  |
| 208 |  | Mis Ventas | 0.89d | 2015-04-22 15:00 | 2015-04-23 15:00 | 207 | 22.39d |  |
| 209 |  | Mis Productos | 0.89d | 2015-04-23 15:00 | 2015-04-24 15:00 | 208 | 22.39d |  |
| 210 |  | Responder Preguntas | 0.89d | 2015-04-24 15:00 | 2015-04-27 15:00 | 209 | 22.39d |  |

| ID | WBS | Task | Duration | Start | Finish | Predecessors | Total float |
| --- | --- | --- | --- | --- | --- | --- | --- |
| 211 |  | Mis Datos | 0.89d | 2015-04-27 15:00 | 2015-04-28 15:00 | 210 | 22.39d |
| 212 |  | Registro | 9h | 2015-04-28 15:00 | 2015-04-29 16:00 | 190 | 22.39d |
| 213 |  | Autenticacion | 9h | 2015-04-29 16:00 | 2015-04-30 17:00 | 212 | 22.39d |
| 214 |  | Recordar Clave | 9h | 2015-05-04 08:00 | 2015-05-05 09:00 | 213 | 22.39d |
| 215 |  | Listado de productos | 9h | 2015-05-05 09:00 | 2015-05-06 10:00 | 214 | 22.39d |
| 216 |  | Detalle del producto | 1d | 2015-05-06 10:00 | 2015-05-07 11:00 | 215 | 22.39d |
| 217 |  | Detalle vendedor usuario | 1d | 2015-05-07 11:00 | 2015-05-08 12:00 | 216 | 22.39d |
| 218 |  | Preguntar a Vendedor | 1d | 2015-05-08 13:00 | 2015-05-11 14:00 | 217 | 22.39d |
| 219 |  | Panel de notificaciones | 1d | 2015-05-11 14:00 | 2015-05-12 15:00 | 218 | 22.39d |
| 220 |  | Newsletter | 1d | 2015-05-12 15:00 | 2015-05-13 16:00 | 219 | 22.39d |
| 221 |  | Mapa del sitio | 1d | 2015-05-13 16:00 | 2015-05-14 17:00 | 220 | 22.39d |
| 222 |  | Condiciones de uso | 1d | 2015-05-15 08:00 | 2015-05-19 09:00 | 221 | 22.39d |
| 223 |  | Contacto | 1d | 2015-05-19 09:00 | 2015-05-20 10:00 | 222 | 22.39d |
| 224 |  | Acerca de nosotros | 1d | 2015-05-20 10:00 | 2015-05-21 11:00 | 223 | 22.39d |
| 225 | 1.2.3 | **Pruebas** | 9d | 2015-06-12 11:30 | 2015-06-30 13:30 |  | 0d |
| 226 |  | Pruebas Generales | 3d | 2015-06-12 11:30 | 2015-06-18 15:30 | 185 | 6d |
| 227 |  | Correciones | 3d | 2015-06-18 15:30 | 2015-06-24 09:30 | 186 | 0d |
| 228 |  | Primeras visitas cliente | 3d | 2015-06-24 09:30 | 2015-06-30 13:30 | 227 | 0d |
| 229 | 1.3 | **Fase 2 (Tienda)** | 14.33d | 2015-06-30 13:30 | 2015-07-23 14:30 | 11 | 0d |
| 230 | 1.3.1 | **Desarrollo** | 9d | 2015-06-30 13:30 | 2015-07-14 14:30 |  | 0d |
| 231 | 1.3.1.1 | **Categorias** | 0.67d | 2015-06-30 13:30 | 2015-07-01 10:30 |  | 0d |
| 232 |  | Revision de funcionalidad correcta | 3h | 2015-06-30 13:30 | 2015-06-30 16:30 |  | 0d |
| 233 |  | Pruebas unitarias | 3h | 2015-06-30 16:30 | 2015-07-01 10:30 | 232 | 0d |
| 234 | 1.3.1.2 | **Actualizacion de Tienda** | 4.89d | 2015-07-01 10:30 | 2015-07-08 15:30 | 231 | 0d |
| 235 |  | BD | 2h | 2015-07-01 10:30 | 2015-07-01 13:30 |  | 0d |
| 236 |  | Datos basicos | 2h | 2015-07-01 13:30 | 2015-07-01 15:30 | 235 | 0d |
| 237 |  | Cargar logo | 3h | 2015-07-01 15:30 | 2015-07-02 09:30 | 236 | 0d |
| 238 |  | Cargar fondo | 2h | 2015-07-02 09:30 | 2015-07-02 11:30 | 237 | 0d |
| 239 |  | Servicios especializados | 6h | 2015-07-02 11:30 | 2015-07-03 09:30 | 238 | 0d |
| 240 |  | Recibir cotizaciones de | 2h | 2015-07-03 09:30 | 2015-07-03 11:30 | 239 | 0d |
| 241 |  | Referencias especializadas | 4h | 2015-07-03 11:30 | 2015-07-03 16:30 | 240 | 0d |
| 242 | 1.3.1.2.8 | **Imagenes Adicionales** | 0.78d | 2015-07-03 16:30 | 2015-07-06 15:30 | 241 | 0d |
| 243 |  | Agregar | 4h | 2015-07-03 16:30 | 2015-07-06 11:30 |  | 0d |
| 244 |  | Eliminar | 1h | 2015-07-06 11:30 | 2015-07-06 13:30 | 243 | 0d |
| 245 |  | Cambiar | 2h | 2015-07-06 13:30 | 2015-07-06 15:30 | 244 | 0d |
| 246 | 1.3.1.2.9 | **Sedes** | 1.78d | 2015-07-06 15:30 | 2015-07-08 15:30 | 242 | 0d |
| 247 |  | BD | 3h | 2015-07-06 15:30 | 2015-07-07 09:30 |  | 0d |
| 248 |  | Listar | 2h | 2015-07-07 09:30 | 2015-07-07 11:30 | 247 | 0d |
| 249 |  | Crear | 4h | 2015-07-07 11:30 | 2015-07-07 16:30 | 248 | 0d |
| 250 |  | Editar | 2h | 2015-07-07 16:30 | 2015-07-08 09:30 | 249 | 0d |
| 251 |  | Eliminar | 1h | 2015-07-08 09:30 | 2015-07-08 10:30 | 250 | 0d |
| 252 |  | Ubicar en mapa | 4h | 2015-07-08 10:30 | 2015-07-08 15:30 | 251 | 0d |
| 253 | 1.3.1.3 | **Detalle Tienda** | 3.44d | 2015-07-08 15:30 | 2015-07-14 14:30 | 234 | 0d |
| 254 |  | Fondo de tienda | 2h | 2015-07-08 15:30 | 2015-07-09 08:30 |  | 0d |
| 255 |  | Imagenes adicionales | 5h | 2015-07-09 08:30 | 2015-07-09 14:30 | 254 | 0d |
| 256 |  | Informacion básica | 2h | 2015-07-09 14:30 | 2015-07-09 16:30 | 255 | 0d |
| 257 |  | Enviar mensaje privado | 1h | 2015-07-09 16:30 | 2015-07-10 08:30 | 256 | 0d |
| 258 |  | Contar experiencia | 1h | 2015-07-10 08:30 | 2015-07-10 09:30 | 257 | 0d |
| 259 | 1.3.1.3.6 | **Listado de productos** | 0.89d | 2015-07-10 09:30 | 2015-07-13 09:30 | 258 | 0d |
| 260 |  | Listar productos | 4h | 2015-07-10 09:30 | 2015-07-10 14:30 |  | 0d |
| 261 |  | Filtrar Productos | 3h | 2015-07-10 14:30 | 2015-07-13 08:30 | 260 | 0d |
| 262 |  | Paginar productos | 1h | 2015-07-13 08:30 | 2015-07-13 09:30 | 261 | 0d |
| 263 |  | Listar comentarios | 3h | 2015-07-13 09:30 | 2015-07-13 13:30 | 259 | 0d |
| 264 | 1.3.1.3.8 | **Mapas** | 1d | 2015-07-13 13:30 | 2015-07-14 14:30 | 263 | 0d |
| 265 |  | Mostrar sedes | 4h | 2015-07-13 13:30 | 2015-07-14 08:30 |  | 0d |
| 266 |  | Informacion básica | 1h | 2015-07-14 08:30 | 2015-07-14 09:30 | 265 | 0d |
| 267 |  | Ubicar punto | 4h | 2015-07-14 09:30 | 2015-07-14 14:30 | 266 | 0d |
| 268 | 1.3.2 | **Diseño Web** | 2.67d | 2015-06-30 13:30 | 2015-07-03 13:30 | 187 | 11.67d |
| 269 |  | Categorias | 0.89d | 2015-06-30 13:30 | 2015-07-01 13:30 |  | 11.67d |
| 270 |  | Detalle Tienda | 0.89d | 2015-07-01 13:30 | 2015-07-02 13:30 | 269 | 11.67d |
| 271 |  | Actualizacion de Tienda | 0.89d | 2015-07-02 13:30 | 2015-07-03 13:30 | 270 | 11.67d |
| 272 |  | Pruebas Generales | 2.67d | 2015-07-14 14:30 | 2015-07-17 14:30 | 230 | 0d |
| 273 |  | Correciones | 2.67d | 2015-07-17 14:30 | 2015-07-23 14:30 | 272 | 0d |
| 274 | 1.4 | **Fase 3 (Cotizaciones)** | 20.17d | 2015-07-23 14:30 | 2015-08-27 11:00 | 229 | 0d |
| 275 | 1.4.1 | **Desarrollo** | 14.83d | 2015-07-23 14:30 | 2015-08-19 11:00 |  | 0d |
| 276 | 1.4.1.1 | **Publicacion Producto** | 5d | 2015-07-23 14:30 | 2015-07-31 10:30 |  | 0d |
| 277 | 1.4.1.1.1 | **Paso1 (Seleccionar Categoria)** | 1.44d | 2015-07-23 14:30 | 2015-07-27 10:30 |  | 0d |
| 278 |  | Ajustes de BD | 3h | 2015-07-23 14:30 | 2015-07-24 08:30 |  | 0d |
| 279 |  | Menú Superior Tipo Producto | 1h | 2015-07-24 08:30 | 2015-07-24 09:30 | 278 | 0d |
| 280 |  | Paso actual en el proceso | 1h | 2015-07-24 09:30 | 2015-07-24 10:30 | 279 | 0d |

| ID | WBS | Task | Duration | Start | Finish | Predecessors | Total float |
| --- | --- | --- | --- | --- | --- | --- | --- |
| 281 | 1.4.1.1.1.4 | **Seleccion de Categorias** | 0.67d | 2015-07-24 10:30 | 2015-07-27 08:30 | 280 | 0d |
| 282 |  | Acceso a Datos | 1h | 2015-07-24 10:30 | 2015-07-24 11:30 |  | 0d |
| 283 |  | Filtro por seleccion | 2h | 2015-07-24 11:30 | 2015-07-24 14:30 | 282 | 0d |
| 284 |  | Filtro por texto | 1h | 2015-07-24 14:30 | 2015-07-24 15:30 | 283 | 0d |
| 285 |  | Ultimo seleccionado | 1h | 2015-07-24 15:30 | 2015-07-24 16:30 | 284 | 0d |
| 286 |  | Guardar | 1h | 2015-07-24 16:30 | 2015-07-27 08:30 | 285 | 0d |
| 287 |  | Pruebas Unitarias | 2h | 2015-07-27 08:30 | 2015-07-27 10:30 | 281 | 0d |
| 288 | 1.4.1.1.2 | **Paso2 (Detalle Producto)** | 2.56d | 2015-07-27 10:30 | 2015-07-30 09:30 | 277 | 0d |
| 289 |  | Acceso a datos | 4h | 2015-07-27 10:30 | 2015-07-27 15:30 |  | 0d |
| 290 |  | Datos básicos producto | 2h | 2015-07-27 15:30 | 2015-07-28 08:30 | 289 | 0d |
| 291 |  | Seleccionar tipo de moto | 3h | 2015-07-28 08:30 | 2015-07-28 11:30 | 290 | 0d |
| 292 |  | Datos de domicilio | 4h | 2015-07-28 11:30 | 2015-07-28 16:30 | 291 | 0d |
| 293 |  | Insumos | 4h | 2015-07-28 16:30 | 2015-07-29 11:30 | 292 | 0d |
| 294 |  | Editor HTML | 2h | 2015-07-29 11:30 | 2015-07-29 14:30 | 291, 293 | 0d |
| 295 |  | Guardar | 1h | 2015-07-29 14:30 | 2015-07-29 15:30 | 294 | 0d |
| 296 |  | Pruebas unitarias | 3h | 2015-07-29 15:30 | 2015-07-30 09:30 | 295 | 0d |
| 297 | 1.4.1.1.3 | **Paso 3 (Resumen)** | 1d | 2015-07-30 09:30 | 2015-07-31 10:30 | 288 | 0d |
| 298 |  | Datos basicos | 2h | 2015-07-30 09:30 | 2015-07-30 11:30 |  | 0d |
| 299 |  | Imagenes | 2h | 2015-07-30 11:30 | 2015-07-30 14:30 | 298 | 0d |
| 300 |  | Aceptar terminos y condiciones | 1h | 2015-07-30 14:30 | 2015-07-30 15:30 | 299 | 0d |
| 301 |  | Volver | 1h | 2015-07-30 15:30 | 2015-07-30 16:30 | 300 | 0d |
| 302 |  | Publicar | 1h | 2015-07-30 16:30 | 2015-07-31 08:30 | 301 | 0d |
| 303 |  | Pruebas unitarias | 2h | 2015-07-31 08:30 | 2015-07-31 10:30 | 302 | 0d |
| 304 | 1.4.1.2 | **Publicar Cotizacion** | 2.17d | 2015-07-31 10:30 | 2015-08-04 15:00 | 276 | 0d |
| 305 |  | BD | 3h | 2015-07-31 10:30 | 2015-07-31 14:30 |  | 0d |
| 306 |  | Datos basicos | 3h | 2015-07-31 14:30 | 2015-08-03 08:30 | 305 | 0d |
| 307 |  | Cambiar ubicacion | 2h | 2015-08-03 08:30 | 2015-08-03 10:30 | 306 | 0d |
| 308 |  | Cambiar moto | 3h | 2015-08-03 10:30 | 2015-08-03 14:30 | 307 | 0d |
| 309 |  | Cargar posibles problemas | 4h | 2015-08-03 14:30 | 2015-08-04 09:30 | 308 | 0d |
| 310 |  | Cargar imagenes | 1.5h | 2015-08-04 09:30 | 2015-08-04 11:00 | 309 | 0d |
| 311 |  | Pruebas unitarias | 3h | 2015-08-04 11:00 | 2015-08-04 15:00 | 310 | 0d |
| 312 | 1.4.1.3 | **Mis Cotizaciones (Taller)** | 1.89d | 2015-08-04 15:00 | 2015-08-06 16:00 | 304 | 0d |
| 313 |  | Mostrar indicadores | 3h | 2015-08-04 15:00 | 2015-08-05 09:00 |  | 0d |
| 314 |  | Cargar filtros | 5h | 2015-08-05 09:00 | 2015-08-05 15:00 | 313 | 0d |
| 315 |  | Listado de cotizaciones | 3h | 2015-08-05 15:00 | 2015-08-06 09:00 | 314 | 0d |
| 316 |  | Paginacion | 2h | 2015-08-06 09:00 | 2015-08-06 11:00 | 315 | 0d |
| 317 |  | BD | 2h | 2015-08-06 11:00 | 2015-08-06 14:00 | 316 | 0d |
| 318 |  | Pruebas unitarias | 2h | 2015-08-06 14:00 | 2015-08-06 16:00 | 317 | 0d |
| 319 | 1.4.1.4 | **Detalle Cotizacion(Taller)** | 2d | 2015-08-06 16:00 | 2015-08-12 09:00 | 312 | 0d |
| 320 |  | BD | 3h | 2015-08-06 16:00 | 2015-08-10 10:00 |  | 0d |
| 321 |  | Indicadores | 2h | 2015-08-10 10:00 | 2015-08-10 12:00 | 320 | 0d |
| 322 |  | Informacion de la solciitud | 3h | 2015-08-10 13:00 | 2015-08-10 16:00 | 321 | 0d |
| 323 |  | Imagenes | 2h | 2015-08-10 16:00 | 2015-08-11 09:00 | 322 | 0d |
| 324 | 1.4.1.4.5 | **Propuesta** | 0.44d | 2015-08-11 09:00 | 2015-08-11 14:00 | 323 | 0d |
| 325 |  | Datos basicos | 1h | 2015-08-11 09:00 | 2015-08-11 10:00 |  | 0d |
| 326 |  | Responder | 3h | 2015-08-11 10:00 | 2015-08-11 14:00 | 325 | 0d |
| 327 |  | Mensajes anteriores | 4h | 2015-08-11 14:00 | 2015-08-12 09:00 | 324 | 0d |
| 328 | 1.4.1.5 | **Mis Cotizaciones(Persona)** | 1.56d | 2015-08-12 09:00 | 2015-08-13 16:00 | 319 | 0d |
| 329 |  | BD | 2h | 2015-08-12 09:00 | 2015-08-12 11:00 |  | 0d |
| 330 |  | Indicadores | 2h | 2015-08-12 11:00 | 2015-08-12 14:00 | 329 | 0d |
| 331 |  | Filtro | 2h | 2015-08-12 14:00 | 2015-08-12 16:00 | 330 | 0d |
| 332 |  | Listado de propuestas | 4h | 2015-08-12 16:00 | 2015-08-13 11:00 | 331 | 0d |
| 333 |  | Paginacion | 2h | 2015-08-13 11:00 | 2015-08-13 14:00 | 332 | 0d |
| 334 |  | Pruebas unitarias | 2h | 2015-08-13 14:00 | 2015-08-13 16:00 | 333 | 0d |
| 335 | 1.4.1.6 | **Detalle Cotizacion(Persona)** | 2.22d | 2015-08-13 16:00 | 2015-08-19 11:00 | 328 | 0d |
| 336 |  | BD | 3h | 2015-08-13 16:00 | 2015-08-14 10:00 |  | 0d |
| 337 |  | Detalle de la solicitud | 2h | 2015-08-14 10:00 | 2015-08-14 12:00 | 336 | 0d |
| 338 |  | Listado de propuestas | 4h | 2015-08-14 13:00 | 2015-08-14 17:00 | 337 | 0d |
| 339 |  | Detalle de propuesta | 3h | 2015-08-18 08:00 | 2015-08-18 11:00 | 338 | 0d |
| 340 |  | Aceptar/Rechazar propiesta | 2h | 2015-08-18 11:00 | 2015-08-18 14:00 | 339 | 0d |
| 341 |  | Responder mensajes | 3h | 2015-08-18 14:00 | 2015-08-18 17:00 | 340 | 0d |
| 342 |  | Pruebas unitarias | 3h | 2015-08-19 08:00 | 2015-08-19 11:00 | 341 | 0d |
| 343 | 1.4.2 | **Diseño Web** | 7.11d | 2015-07-23 14:30 | 2015-08-04 14:30 | 272 | 13.06d |
| 344 | 1.4.2.1 | **Publicacion Servicio** | 2.67d | 2015-07-23 14:30 | 2015-07-28 14:30 |  | 13.06d |
| 345 |  | Paso1 | 0.89d | 2015-07-23 14:30 | 2015-07-24 14:30 |  | 13.06d |
| 346 |  | Paso2 | 0.89d | 2015-07-24 14:30 | 2015-07-27 14:30 | 345 | 13.06d |
| 347 |  | Paso3 | 0.89d | 2015-07-27 14:30 | 2015-07-28 14:30 | 346 | 13.06d |
| 348 |  | Publicar Cotizacion | 0.89d | 2015-07-28 14:30 | 2015-07-29 14:30 | 344 | 13.06d |
| 349 |  | Mis Cotizaciones (Taller) | 0.89d | 2015-07-29 14:30 | 2015-07-30 14:30 | 348 | 13.06d |
| 350 |  | Detalle Cotizacion(Taller) | 0.89d | 2015-07-30 14:30 | 2015-07-31 14:30 | 349 | 13.06d |

| ID | Task | Duration | Start | Finish | Predecessors | Total float |
| --- | --- | --- | --- | --- | --- | --- |
| 351 | Mis Cotizaciones(Persona) | 0.89d | 2015-07-31 14:30 | 2015-08-03 14:30 | 350 | 13.06d |
| 352 | Detalle Cotizacion(Persona) | 0.89d | 2015-08-03 14:30 | 2015-08-04 14:30 | 351 | 13.06d |
| 353 | Pruebas Generales | 2.67d | 2015-08-19 11:00 | 2015-08-24 11:00 | 275 | 0d |
| 354 | Correciones | 2.67d | 2015-08-24 11:00 | 2015-08-27 11:00 | 353 | 0d |

## Version 2 (data date 2015-03-26, saved 2015-04-02, file Cronograma.mpp)

Note of the change: Se agrega paso 1 y paso 2 de la creación de un producto

Last finish stays 2015-08-27. Complete tasks 3 → 7.

Changed:

| ID | Task | Start | Finish | Complete | Total float |
| --- | --- | --- | --- | --- | --- |
| 1 | **Tuils Proyecto** |  |  | 1% → 2% |  |
| 2 | **Inicio** |  |  | 75% → 79% |  |
| 3 | **Configurar ambiente Inicial** |  |  | 92% → 98% |  |
| 5 | Configurar solución |  | 2015-03-26 14:30 A | 80% → 100% | 0.89d → none |
| 11 | **Fase 1 (Ventas)** | 2015-03-27 08:00 A |  | 0% → 1% |  |
| 12 | **Desarrollo** | 2015-03-30 15:30 A |  | 0% → 3% |  |
| 13 | **Publicacion Producto** | 2015-03-30 15:30 A |  | 0% → 14% |  |
| 14 | **Paso1 (Seleccionar Categoria)** | 2015-03-30 15:30 A |  | 0% → 50% |  |
| 15 | Ajustes de BD | 2015-03-30 15:30 A |  | 0% → 50% | 0d → 0.11d |
| 16 | Menú Superior Tipo Producto | 2015-03-31 08:30 A |  | 0% → 50% | 0d → 0.11d |
| 17 | Paso actual en el proceso | 2015-03-31 10:30 A |  | 0% → 50% | 0d → 0.33d |
| 18 | **Seleccion de Categorias** | 2015-03-31 13:30 A |  | 0% → 62% |  |
| 20 | Filtro por seleccion | 2015-03-31 16:30 A | 2015-04-01 10:30 A | 0% → 100% | 0d → none |
| 21 | Filtro por texto | 2015-04-01 10:30 A | 2015-04-01 14:30 A | 0% → 100% | 0d → none |
| 22 | Ultimo seleccionado | 2015-04-01 14:30 A | 2015-04-01 16:30 A | 0% → 100% | 0d → none |

## Version 3 (data date 2015-03-26, saved 2015-04-07, file Cronograma.mpp)

Note of the change: Se terminan pasos de publicación de producto. Ya guarda en BD

Last finish stays 2015-08-27. Complete tasks 7 → 24.

Changed:

| ID | Task | Start | Finish | Complete | Total float | Predecessors |
| --- | --- | --- | --- | --- | --- | --- |
| 1 | **Tuils Proyecto** |  |  | 2% → 6% |  |  |
| 2 | **Inicio** |  | 2015-03-30 15:30 A | 79% → 100% |  |  |
| 3 | **Configurar ambiente Inicial** |  | 2015-03-27 14:30 A | 98% → 100% | 0d → none |  |
| 8 | Configurar idioma Español |  | 2015-03-27 14:30 A | 90% → 100% | 0d → none |  |
| 9 | **Diseño** |  | 2015-03-30 15:30 A | 50% → 100% | 0d → none |  |
| 10 | Diseño de BD |  | 2015-03-30 15:30 A | 50% → 100% | 0d → none |  |
| 11 | **Fase 1 (Ventas)** |  |  | 1% → 7% |  |  |
| 12 | **Desarrollo** |  |  | 3% → 13% |  |  |
| 13 | **Publicacion Producto** |  |  | 14% → 68% |  |  |
| 14 | **Paso1 (Seleccionar Categoria)** |  |  | 50% → 84% | 0d → 0.11d |  |
| 15 | Ajustes de BD |  | 2015-03-31 08:30 A | 50% → 100% | 0.11d → none |  |
| 16 | Menú Superior Tipo Producto |  | 2015-03-31 10:30 A | 50% → 100% | 0.11d → none |  |
| 17 | Paso actual en el proceso |  | 2015-03-31 13:30 A | 50% → 100% | 0.33d → none |  |
| 18 | **Seleccion de Categorias** |  |  | 62% → 85% | 0d → 0.17d |  |
| 19 | Acceso a Datos | 2015-03-31 13:30 A | 2015-03-31 16:30 A | 0% → 100% | 1.11d → none |  |
| 24 | Pruebas Unitarias | 2015-04-06 09:30 A |  | 0% → 50% | 0d → 0.11d |  |
| 25 | **Paso2 (Detalle Producto)** | 2015-04-06 13:30 A |  | 0% → 77% |  |  |
| 27 | Menu numero de paso | 2015-04-06 14:30 A | 2015-04-06 15:30 A | 0% → 100% | 0d → none |  |
| 28 | Acceso a datos | 2015-04-06 15:30 A | 2015-04-07 08:30 A | 0% → 100% | 0d → none |  |
| 29 | Datos básicos producto | 2015-04-07 08:30 A | 2015-04-07 09:30 A | 0% → 100% | 0d → none |  |
| 30 | Seleccionar tipo de moto | 2015-04-07 09:30 A | 2015-04-07 15:30 A | 0% → 100% | 0d → none |  |
| 31 | Datos de envío | 2015-04-07 15:30 A | 2015-04-08 09:30 A | 0% → 100% | 0d → none |  |
| 32 | Editor HTML | 2015-04-08 09:30 A |  | 0% → 80% | 0d → 0.11d | 30, 31 → 31 |
| 34 | Pruebas unitarias | 2015-04-09 09:30 A |  | 0% → 50% |  |  |
| 35 | **Paso3 (Seleccionador Fotos)** | 2015-04-09 11:30 A |  | 0% → 67% |  |  |
| 36 | Mostrar fotos | 2015-04-09 11:30 A | 2015-04-09 15:30 A | 0% → 100% | 0d → none |  |
| 37 | Seleccionar foto | 2015-04-09 15:30 A | 2015-04-10 09:30 A | 0% → 100% | 0d → none |  |
| 38 | Cambiar foto | 2015-04-10 09:30 A | 2015-04-10 13:30 A | 0% → 100% | 0d → none |  |
| 39 | Eliminar foto | 2015-04-10 13:30 A |  | 0% → 50% | 0d → 0.17d |  |
| 41 | Pruebas unitarias | 2015-04-13 10:30 A |  | 0% → 50% |  |  |
| 42 | **Paso 4 (Resumen)** | 2015-04-13 14:30 A |  | 0% → 55% |  |  |
| 43 | Datos basicos | 2015-04-13 14:30 A | 2015-04-13 16:30 A | 0% → 100% | 0d → none |  |
| 44 | Imagenes | 2015-04-13 16:30 A | 2015-04-14 09:30 A | 0% → 100% | 0d → none |  |
| 46 | Volver | 2015-04-14 10:30 A | 2015-04-14 13:30 A | 0% → 100% | 0d → none |  |

## Version 4 (data date 2015-03-26, saved 2015-04-10, file Cronograma.mpp)

Note of the change: Se agrega RequireJS

Last finish stays 2015-08-27. Complete tasks 24 → 34.

Changed:

| ID | Task | Start | Finish | Complete | Total float |
| --- | --- | --- | --- | --- | --- |
| 1 | **Tuils Proyecto** |  |  | 6% → 8% |  |
| 11 | **Fase 1 (Ventas)** |  |  | 7% → 9% |  |
| 12 | **Desarrollo** |  |  | 13% → 17% |  |
| 13 | **Publicacion Producto** |  |  | 68% → 89% |  |
| 14 | **Paso1 (Seleccionar Categoria)** |  | 2015-04-06 13:30 A | 84% → 100% | 0.11d → none |
| 18 | **Seleccion de Categorias** |  | 2015-04-06 09:30 A | 85% → 100% | 0.17d → none |
| 23 | Guardar | 2015-04-01 16:30 A | 2015-04-06 09:30 A | 0% → 100% | 0.17d → none |
| 24 | Pruebas Unitarias |  | 2015-04-06 13:30 A | 50% → 100% | 0.11d → none |
| 25 | **Paso2 (Detalle Producto)** |  |  | 77% → 95% |  |
| 26 | Menu tipo producto | 2015-04-06 13:30 A | 2015-04-06 14:30 A | 0% → 100% | 2.44d → none |
| 33 | Guardar | 2015-04-08 16:30 A | 2015-04-09 09:30 A | 0% → 100% | 0.11d → none |
| 34 | Pruebas unitarias |  | 2015-04-09 11:30 A | 50% → 100% | 0d → none |
| 35 | **Paso3 (Seleccionador Fotos)** |  |  | 67% → 92% |  |
| 40 | Guardar fotos | 2015-04-10 16:30 A | 2015-04-13 10:30 A | 0% → 100% | 0.17d → none |
| 41 | Pruebas unitarias |  | 2015-04-13 14:30 A | 50% → 100% | 0d → none |
| 42 | **Paso 4 (Resumen)** |  | 2015-04-15 08:30 A | 55% → 100% | 0d → none |
| 45 | Aceptar terminos y condiciones | 2015-04-14 09:30 A | 2015-04-14 10:30 A | 0% → 100% | 0.67d → none |
| 47 | Publicar | 2015-04-14 13:30 A | 2015-04-14 15:30 A | 0% → 100% | 0d → none |
| 48 | Pruebas unitarias | 2015-04-14 15:30 A | 2015-04-15 08:30 A | 0% → 100% | 0d → none |

## Version 5 (data date 2015-03-26, saved 2015-04-15, file Cronograma.mpp)

Note of the change: Merge branch 'dev' of https://github.com/betocastillo86/Tuils into dev

Last finish stays 2015-08-27. Complete tasks 34 → 56.

Changed:

| ID | Task | Start | Finish | Complete | Total float |
| --- | --- | --- | --- | --- | --- |
| 1 | **Tuils Proyecto** |  |  | 8% → 12% |  |
| 11 | **Fase 1 (Ventas)** |  |  | 9% → 16% |  |
| 12 | **Desarrollo** |  |  | 17% → 30% |  |
| 13 | **Publicacion Producto** |  |  | 89% → 97% | 0d → 0.29d |
| 49 | Ajustar Diseño | 2015-04-15 08:30 A | 2015-04-15 15:30 A | 0% → 100% | 0d → none |
| 50 | Seleccionar tipo de producto | 2015-04-15 15:30 A |  | 0% → 66% |  |
| 51 | **Publicación Moto** | 2015-04-16 10:30 A |  | 0% → 80% |  |
| 52 | **Paso1 (Seleccionar Categoria)** | 2015-04-16 10:30 A |  | 0% → 66% | 0d → 4d |
| 53 | Ajustes de BD | 2015-04-16 10:30 A |  | 0% → 50% | 0d → 5.78d |
| 54 | Menú Superior Tipo Producto | 2015-04-16 15:30 A | 2015-04-16 16:30 A | 0% → 100% | 0d → none |
| 55 | Paso actual en el proceso | 2015-04-16 16:30 A | 2015-04-17 08:30 A | 0% → 100% | 0d → none |
| 56 | **Seleccion de Categorias** | 2015-04-17 08:30 A |  | 0% → 84% | 0d → 4d |
| 57 | Acceso a Datos | 2015-04-17 08:30 A | 2015-04-17 13:30 A | 0% → 100% | 0d → none |
| 58 | Filtro por seleccion | 2015-04-17 13:30 A | 2015-04-17 15:30 A | 0% → 100% | 0d → none |
| 59 | Filtro por texto | 2015-04-17 15:30 A |  | 0% → 10% | 0d → 4.33d |
| 60 | Ultimo seleccionado | 2015-04-20 08:30 A | 2015-04-20 09:30 A | 0% → 100% | 0d → none |
| 61 | Guardar | 2015-04-20 09:30 A | 2015-04-20 11:30 A | 0% → 100% | 0d → none |
| 63 | **Paso2 (Detalle Producto)** | 2015-04-20 15:30 A | 2015-04-22 13:30 A | 0% → 100% | 0d → none |
| 64 | Acceso a datos | 2015-04-20 15:30 A | 2015-04-21 10:30 A | 0% → 100% | 0d → none |
| 65 | Datos básicos producto | 2015-04-21 10:30 A | 2015-04-21 11:30 A | 0% → 100% | 0d → none |
| 66 | Seleccionar tipo de moto | 2015-04-21 11:30 A | 2015-04-22 08:30 A | 0% → 100% | 0d → none |
| 67 | Guardar | 2015-04-22 08:30 A | 2015-04-22 10:30 A | 0% → 100% | 0d → none |
| 68 | Pruebas unitarias | 2015-04-22 10:30 A | 2015-04-22 13:30 A | 0% → 100% | 0d → none |
| 69 | **Paso3 (Seleccionador Fotos)** | 2015-04-22 13:30 A | 2015-04-23 13:30 A | 0% → 100% | 0d → none |
| 70 | Mostrar fotos | 2015-04-22 13:30 A | 2015-04-22 15:30 A | 0% → 100% | 0d → none |
| 71 | Seleccionar foto | 2015-04-22 15:30 A | 2015-04-22 16:30 A | 0% → 100% | 0d → none |
| 72 | Cambiar foto | 2015-04-22 16:30 A | 2015-04-23 08:30 A | 0% → 100% | 0d → none |
| 73 | Eliminar foto | 2015-04-23 08:30 A | 2015-04-23 09:30 A | 0% → 100% | 0d → none |
| 74 | Guardar fotos | 2015-04-23 09:30 A | 2015-04-23 10:30 A | 0% → 100% | 0d → none |
| 75 | Pruebas unitarias | 2015-04-23 10:30 A | 2015-04-23 13:30 A | 0% → 100% | 0d → none |
| 76 | **Paso 4 (Resumen)** | 2015-04-23 13:30 A |  | 0% → 81% | 0d → 0.33d |
| 77 | Datos basicos | 2015-04-23 13:30 A | 2015-04-23 15:30 A | 0% → 100% | 0d → none |
| 78 | Imagenes | 2015-04-23 15:30 A | 2015-04-23 16:30 A | 0% → 100% | 0d → none |
| 79 | Aceptar terminos y condiciones | 2015-04-23 16:30 A | 2015-04-24 08:30 A | 0% → 100% | 0d → none |
| 80 | Volver | 2015-04-24 08:30 A | 2015-04-24 09:30 A | 0% → 100% | 0d → none |
| 81 | Publicar | 2015-04-24 09:30 A |  | 0% → 50% | 0d → 0.11d |
| 82 | Pruebas unitarias | 2015-04-24 10:30 A |  | 0% → 50% | 0d → 0.33d |
| 83 | Ajustar Diseño | 2015-04-24 13:30 A |  | 0% → 50% |  |

## Version 6 (data date 2015-03-26, saved 2015-04-17, file Cronograma.mpp)

Note of the change: Ajustes publicación del producto

Last finish stays 2015-08-27. Complete tasks 56 → 60.

Changed:

| ID | Task | Finish | Complete | Total float |
| --- | --- | --- | --- | --- |
| 1 | **Tuils Proyecto** |  | 12% → 13% |  |
| 11 | **Fase 1 (Ventas)** |  | 16% → 17% |  |
| 12 | **Desarrollo** |  | 30% → 32% |  |
| 51 | **Publicación Moto** |  | 80% → 93% |  |
| 52 | **Paso1 (Seleccionar Categoria)** |  | 66% → 85% |  |
| 53 | Ajustes de BD | 2015-04-16 15:30 A | 50% → 100% | 5.78d → none |
| 56 | **Seleccion de Categorias** | 2015-04-20 11:30 A | 84% → 100% | 4d → none |
| 59 | Filtro por texto | 2015-04-20 08:30 A | 10% → 100% | 4.33d → none |
| 76 | **Paso 4 (Resumen)** | 2015-04-24 13:30 A | 81% → 100% | 0.33d → none |
| 81 | Publicar | 2015-04-24 10:30 A | 50% → 100% | 0.11d → none |
| 82 | Pruebas unitarias | 2015-04-24 13:30 A | 50% → 100% | 0.33d → none |
| 83 | Ajustar Diseño |  | 50% → 80% |  |

## Version 7 (data date 2015-03-26, saved 2015-04-21, file Cronograma.mpp)

Note of the change: Merge branch 'dev'

Last finish stays 2015-08-27. Complete tasks 60 → 62.

Changed:

| ID | Task | Start | Finish | Complete | Total float |
| --- | --- | --- | --- | --- | --- |
| 1 | **Tuils Proyecto** |  |  | 13% → 14% |  |
| 11 | **Fase 1 (Ventas)** |  |  | 17% → 18% |  |
| 12 | **Desarrollo** |  |  | 32% → 34% |  |
| 109 | **Registro** | 2015-05-13 09:30 A |  | 0% → 19% |  |
| 115 | **Registro rapido** | 2015-05-14 15:30 A |  | 0% → 50% |  |
| 116 | Creacion funcionalidad | 2015-05-14 15:30 A |  | 0% → 50% | 0d → 0.11d |
| 117 | Llamado en los sitios pendientes | 2015-05-15 13:30 A |  | 0% → 50% |  |
| 118 | **Autenticacion** | 2015-05-15 15:30 A |  | 0% → 42% |  |
| 122 | **Autenticacion Rapida** | 2015-05-19 14:30 A | 2015-05-20 10:30 A | 0% → 100% | 0d → none |
| 123 | Crear funcionalidad | 2015-05-19 14:30 A | 2015-05-20 08:30 A | 0% → 100% | 0d → none |
| 124 | Llamado en los sitios pendientes | 2015-05-20 08:30 A | 2015-05-20 10:30 A | 0% → 100% | 0d → none |

## Version 8 (saved 2015-05-08, file CronogramaAjustado.mpp)

Note of the change: Merge branch 'dev'

Last finish 2015-08-27 → 2015-08-11 (-16d). Complete tasks 62 → 115.

Added:

| ID | Task | Duration | Start | Finish | Predecessors |
| --- | --- | --- | --- | --- | --- |
| 51 | **Publicacion Producto Servicio** | 5d | 2015-04-14 08:30 A | 2015-04-21 14:30 | 50 |
| 344 | Publicacion Servicio | 0.79d | 2015-07-17 16:51 | 2015-07-20 15:58 |  |

Removed: 276 Publicacion Producto; 344 Publicacion Servicio

Changed:

| ID | Task | Start | Finish | Duration | Complete | Total float | Predecessors | Other |
| --- | --- | --- | --- | --- | --- | --- | --- | --- |
| 1 | **Tuils Proyecto** |  | 2015-08-27 11:00 → 2015-03-31 17:00 (-149d) | 89.22d → 3.56d | 14% → 25% | 0d → none |  | baseline start 2015-03-25 08:00 → none; baseline finish 2015-08-26 16:00 → none |
| 2 | **Inicio** |  |  |  |  |  |  | baseline start 2015-03-25 08:00 → none; baseline finish 2015-03-27 15:30 → none |
| 3 | **Configurar ambiente Inicial** |  |  |  |  |  |  | baseline start 2015-03-25 08:00 → none; baseline finish 2015-03-26 14:30 → none |
| 4 | Configurar estructura github |  |  |  |  |  |  | baseline start 2015-03-25 08:00 → none; baseline finish 2015-03-25 09:30 → none |
| 5 | Configurar solución |  |  |  |  |  |  | baseline start 2015-03-25 09:30 → none; baseline finish 2015-03-25 14:30 → none |
| 6 | Crear BD |  |  |  |  |  |  | baseline start 2015-03-25 14:30 → none; baseline finish 2015-03-25 15:30 → none |
| 7 | Agregar proyecto a Github |  |  |  |  |  |  | baseline start 2015-03-25 15:30 → none; baseline finish 2015-03-26 10:30 → none |
| 8 | Configurar idioma Español |  |  |  |  |  |  | baseline start 2015-03-26 10:30 → none; baseline finish 2015-03-26 14:30 → none |
| 9 | **Diseño** |  |  |  |  |  |  | baseline start 2015-03-26 14:30 → none; baseline finish 2015-03-27 15:30 → none |
| 10 | Diseño de BD |  |  |  |  |  |  | baseline start 2015-03-26 14:30 → none; baseline finish 2015-03-27 15:30 → none |
| 11 | **Fase 1 (Ventas)** | 2015-03-27 08:00 A → 2015-03-30 15:30 A (+3d) | 2015-06-30 13:30 → 2015-07-09 15:30 (+9d) | 53.83d → 64.89d | 18% → 31% | 0d → -22d | none → 2 | baseline start 2015-03-27 15:30 → none; baseline finish 2015-06-30 08:30 → none |
| 12 | **Desarrollo** |  | 2015-06-18 15:30 → 2015-06-26 15:30 (+8d) | 46.22d → 56.89d | 34% → 51% | 0d → -14d | 2 → none | baseline start 2015-03-27 15:30 → none; baseline finish 2015-06-18 10:30 → none |
| 13 | **Publicacion Producto** |  | 2015-04-15 15:30 → 2015-04-13 15:30 A (-2d) |  | 97% → 100% | 0.29d → none |  | baseline start 2015-03-27 15:30 → none; baseline finish 2015-04-15 10:30 → none |
| 14 | **Paso1 (Seleccionar Categoria)** |  | 2015-04-06 13:30 A → 2015-04-02 13:30 A (-4d) |  |  |  |  | baseline start 2015-03-27 15:30 → none; baseline finish 2015-04-01 13:30 → none |
| 15 | Ajustes de BD |  |  |  |  |  |  | baseline start 2015-03-27 15:30 → none; baseline finish 2015-03-30 08:30 → none |
| 16 | Menú Superior Tipo Producto |  |  |  |  |  |  | baseline start 2015-03-30 08:30 → none; baseline finish 2015-03-30 10:30 → none |
| 17 | Paso actual en el proceso |  |  |  |  |  |  | baseline start 2015-03-30 10:30 → none; baseline finish 2015-03-30 13:30 → none |
| 18 | **Seleccion de Categorias** |  | 2015-04-06 09:30 A → 2015-04-02 09:30 A (-4d) |  |  |  |  | baseline start 2015-03-30 13:30 → none; baseline finish 2015-04-01 09:30 → none |
| 19 | Acceso a Datos |  |  |  |  |  |  | baseline start 2015-03-30 13:30 → none; baseline finish 2015-03-30 16:30 → none |
| 20 | Filtro por seleccion |  |  |  |  |  |  | baseline start 2015-03-30 16:30 → none; baseline finish 2015-03-31 10:30 → none |
| 21 | Filtro por texto |  |  |  |  |  |  | baseline start 2015-03-31 10:30 → none; baseline finish 2015-03-31 14:30 → none |
| 22 | Ultimo seleccionado |  |  |  |  |  |  | baseline start 2015-03-31 14:30 → none; baseline finish 2015-03-31 16:30 → none |
| 23 | Guardar |  | 2015-04-06 09:30 A → 2015-04-02 09:30 A (-4d) |  |  |  |  | baseline start 2015-03-31 16:30 → none; baseline finish 2015-04-01 09:30 → none |
| 24 | Pruebas Unitarias | 2015-04-06 09:30 A → 2015-04-02 09:30 A (-4d) | 2015-04-06 13:30 A → 2015-04-02 13:30 A (-4d) |  |  |  |  | baseline start 2015-04-01 09:30 → none; baseline finish 2015-04-01 13:30 → none |
| 25 | **Paso2 (Detalle Producto)** | 2015-04-06 13:30 A → 2015-04-02 13:30 A (-4d) | 2015-04-09 11:30 → 2015-04-07 11:30 A (-2d) |  | 95% → 100% | 0d → none |  | baseline start 2015-04-01 13:30 → none; baseline finish 2015-04-08 11:30 → none |
| 26 | Menu tipo producto | 2015-04-06 13:30 A → 2015-04-02 13:30 A (-4d) | 2015-04-06 14:30 A → 2015-04-02 14:30 A (-4d) |  |  |  |  | baseline start 2015-04-01 13:30 → none; baseline finish 2015-04-01 14:30 → none |
| 27 | Menu numero de paso | 2015-04-06 14:30 A → 2015-04-02 14:30 A (-4d) | 2015-04-06 15:30 A → 2015-04-02 15:30 A (-4d) |  |  |  |  | baseline start 2015-04-01 14:30 → none; baseline finish 2015-04-01 15:30 → none |
| 28 | Acceso a datos | 2015-04-06 15:30 A → 2015-04-02 15:30 A (-4d) | 2015-04-07 08:30 A → 2015-04-03 08:30 A (-4d) |  |  |  |  | baseline start 2015-04-01 15:30 → none; baseline finish 2015-04-06 08:30 → none |
| 29 | Datos básicos producto | 2015-04-07 08:30 A → 2015-04-03 08:30 A (-4d) | 2015-04-07 09:30 A → 2015-04-03 09:30 A (-4d) |  |  |  |  | baseline start 2015-04-06 08:30 → none; baseline finish 2015-04-06 09:30 → none |
| 30 | Seleccionar tipo de moto | 2015-04-07 09:30 A → 2015-04-03 09:30 A (-4d) | 2015-04-07 15:30 A → 2015-04-03 15:30 A (-4d) |  |  |  |  | baseline start 2015-04-06 09:30 → none; baseline finish 2015-04-06 15:30 → none |
| 31 | Datos de envío | 2015-04-07 15:30 A → 2015-04-03 15:30 A (-4d) | 2015-04-08 09:30 A → 2015-04-06 09:30 A (-2d) |  |  |  |  | baseline start 2015-04-06 15:30 → none; baseline finish 2015-04-07 09:30 → none |
| 32 | Editor HTML | 2015-04-08 09:30 A → 2015-04-06 09:30 A (-2d) | 2015-04-08 16:30 → 2015-04-06 16:30 A (-2d) |  | 80% → 100% | 0.44d → none |  | baseline start 2015-04-07 09:30 → none; baseline finish 2015-04-07 16:30 → none |
| 33 | Guardar | 2015-04-08 16:30 A → 2015-04-06 16:30 A (-2d) | 2015-04-09 09:30 A → 2015-04-07 09:30 A (-2d) |  |  |  |  | baseline start 2015-04-07 16:30 → none; baseline finish 2015-04-08 09:30 → none |
| 34 | Pruebas unitarias | 2015-04-09 09:30 A → 2015-04-07 09:30 A (-2d) | 2015-04-09 11:30 A → 2015-04-07 11:30 A (-2d) |  |  |  |  | baseline start 2015-04-08 09:30 → none; baseline finish 2015-04-08 11:30 → none |
| 35 | **Paso3 (Seleccionador Fotos)** | 2015-04-09 11:30 A → 2015-04-07 11:30 A (-2d) | 2015-04-13 14:30 → 2015-04-09 14:30 A (-4d) |  | 92% → 100% | 2.18d → none |  | baseline start 2015-04-08 11:30 → none; baseline finish 2015-04-10 14:30 → none |
| 36 | Mostrar fotos | 2015-04-09 11:30 A → 2015-04-07 11:30 A (-2d) | 2015-04-09 15:30 A → 2015-04-07 15:30 A (-2d) |  |  |  |  | baseline start 2015-04-08 11:30 → none; baseline finish 2015-04-08 15:30 → none |
| 37 | Seleccionar foto | 2015-04-09 15:30 A → 2015-04-07 15:30 A (-2d) | 2015-04-10 09:30 A → 2015-04-08 09:30 A (-2d) |  |  |  |  | baseline start 2015-04-08 15:30 → none; baseline finish 2015-04-09 09:30 → none |
| 38 | Cambiar foto | 2015-04-10 09:30 A → 2015-04-08 09:30 A (-2d) | 2015-04-10 13:30 A → 2015-04-08 13:30 A (-2d) |  |  |  |  | baseline start 2015-04-09 09:30 → none; baseline finish 2015-04-09 13:30 → none |
| 39 | Eliminar foto | 2015-04-10 13:30 A → 2015-04-08 13:30 A (-2d) | 2015-04-10 16:30 → 2015-04-08 16:30 A (-2d) |  | 50% → 100% | 2.7d → none |  | baseline start 2015-04-09 13:30 → none; baseline finish 2015-04-09 16:30 → none |
| 40 | Guardar fotos | 2015-04-10 16:30 A → 2015-04-08 16:30 A (-2d) | 2015-04-13 10:30 A → 2015-04-09 10:30 A (-4d) |  |  |  |  | baseline start 2015-04-09 16:30 → none; baseline finish 2015-04-10 10:30 → none |
| 41 | Pruebas unitarias | 2015-04-13 10:30 A → 2015-04-09 10:30 A (-4d) | 2015-04-13 14:30 A → 2015-04-09 14:30 A (-4d) |  |  |  |  | baseline start 2015-04-10 10:30 → none; baseline finish 2015-04-10 14:30 → none |
| 42 | **Paso 4 (Resumen)** | 2015-04-13 14:30 A → 2015-04-09 14:30 A (-4d) | 2015-04-15 08:30 A → 2015-04-13 08:30 A (-2d) |  |  |  |  | baseline start 2015-04-10 14:30 → none; baseline finish 2015-04-14 08:30 → none |
| 43 | Datos basicos | 2015-04-13 14:30 A → 2015-04-09 14:30 A (-4d) | 2015-04-13 16:30 A → 2015-04-09 16:30 A (-4d) |  |  |  |  | baseline start 2015-04-10 14:30 → none; baseline finish 2015-04-10 16:30 → none |
| 44 | Imagenes | 2015-04-13 16:30 A → 2015-04-09 16:30 A (-4d) | 2015-04-14 09:30 A → 2015-04-10 09:30 A (-4d) |  |  |  |  | baseline start 2015-04-10 16:30 → none; baseline finish 2015-04-13 09:30 → none |
| 45 | Aceptar terminos y condiciones | 2015-04-14 09:30 A → 2015-04-10 09:30 A (-4d) | 2015-04-14 10:30 A → 2015-04-10 10:30 A (-4d) |  |  |  |  | baseline start 2015-04-13 09:30 → none; baseline finish 2015-04-13 10:30 → none |
| 46 | Volver | 2015-04-14 10:30 A → 2015-04-10 10:30 A (-4d) | 2015-04-14 13:30 A → 2015-04-10 13:30 A (-4d) |  |  |  |  | baseline start 2015-04-13 10:30 → none; baseline finish 2015-04-13 13:30 → none |
| 47 | Publicar | 2015-04-14 13:30 A → 2015-04-10 13:30 A (-4d) | 2015-04-14 15:30 A → 2015-04-10 15:30 A (-4d) |  |  |  |  | baseline start 2015-04-13 13:30 → none; baseline finish 2015-04-13 15:30 → none |
| 48 | Pruebas unitarias | 2015-04-14 15:30 A → 2015-04-10 15:30 A (-4d) | 2015-04-15 08:30 A → 2015-04-13 08:30 A (-2d) |  |  |  |  | baseline start 2015-04-13 15:30 → none; baseline finish 2015-04-14 08:30 → none |
| 49 | Ajustar Diseño | 2015-04-15 08:30 A → 2015-04-13 08:30 A (-2d) | 2015-04-15 15:30 A → 2015-04-13 15:30 A (-2d) |  |  |  | 42, 246 → 42 | baseline start 2015-04-14 13:30 → none; baseline finish 2015-04-15 10:30 → none |
| 50 | Seleccionar tipo de producto | 2015-04-15 15:30 A → 2015-04-13 15:30 A (-2d) | 2015-04-16 10:30 → 2015-04-14 08:30 A (-2d) | 4h → 2h | 66% → 100% | 0d → none |  | baseline start 2015-04-15 10:30 → none; baseline finish 2015-04-15 15:30 → none |
| 52 | **Paso1 (Seleccionar Categoria)** | 2015-04-16 10:30 A → 2015-04-14 08:30 A (-2d) | 2015-04-20 15:30 → 2015-04-15 14:30 A (-5d) | 2.22d → 1.44d | 85% → 100% | 4d → none |  | baseline start 2015-04-15 15:30 → none; baseline finish 2015-04-20 10:30 → none |
| 53 | Ajustes de BD | 2015-04-16 10:30 A → 2015-04-14 08:30 A (-2d) | 2015-04-16 15:30 A → 2015-04-14 11:30 A (-2d) | 4h → 3h |  |  |  | baseline start 2015-04-15 15:30 → none; baseline finish 2015-04-16 10:30 → none |
| 54 | Menú Superior Tipo Producto | 2015-04-16 15:30 A → 2015-04-14 11:30 A (-2d) | 2015-04-16 16:30 A → 2015-04-14 13:30 A (-2d) |  |  |  |  | baseline start 2015-04-16 10:30 → none; baseline finish 2015-04-16 11:30 → none |
| 55 | Paso actual en el proceso | 2015-04-16 16:30 A → 2015-04-14 13:30 A (-2d) | 2015-04-17 08:30 A → 2015-04-14 14:30 A (-3d) |  |  |  |  | baseline start 2015-04-16 11:30 → none; baseline finish 2015-04-16 13:30 → none |
| 56 | **Seleccion de Categorias** | 2015-04-17 08:30 A → 2015-04-14 14:30 A (-3d) | 2015-04-20 11:30 A → 2015-04-15 11:30 A (-5d) | 1.22d → 0.67d |  |  |  | baseline start 2015-04-16 13:30 → none; baseline finish 2015-04-17 16:30 → none |
| 57 | Acceso a Datos | 2015-04-17 08:30 A → 2015-04-14 14:30 A (-3d) | 2015-04-17 13:30 A → 2015-04-14 15:30 A (-3d) | 4h → 1h |  |  |  | baseline start 2015-04-16 13:30 → none; baseline finish 2015-04-17 08:30 → none |
| 58 | Filtro por seleccion | 2015-04-17 13:30 A → 2015-04-14 15:30 A (-3d) | 2015-04-17 15:30 A → 2015-04-15 08:30 A (-2d) |  |  |  |  | baseline start 2015-04-17 08:30 → none; baseline finish 2015-04-17 10:30 → none |
| 59 | Filtro por texto | 2015-04-17 15:30 A → 2015-04-15 08:30 A (-2d) | 2015-04-20 08:30 A → 2015-04-15 09:30 A (-5d) | 2h → 1h |  |  |  | baseline start 2015-04-17 10:30 → none; baseline finish 2015-04-17 13:30 → none |
| 60 | Ultimo seleccionado | 2015-04-20 08:30 A → 2015-04-15 09:30 A (-5d) | 2015-04-20 09:30 A → 2015-04-15 10:30 A (-5d) |  |  |  |  | baseline start 2015-04-17 13:30 → none; baseline finish 2015-04-17 14:30 → none |
| 61 | Guardar | 2015-04-20 09:30 A → 2015-04-15 10:30 A (-5d) | 2015-04-20 11:30 A → 2015-04-15 11:30 A (-5d) | 2h → 1h |  |  |  | baseline start 2015-04-17 14:30 → none; baseline finish 2015-04-17 16:30 → none |
| 62 | Pruebas Unitarias | 2015-04-20 11:30 → 2015-04-15 11:30 A (-5d) | 2015-04-20 15:30 → 2015-04-15 14:30 A (-5d) | 3h → 2h | 0% → 100% | 4d → none |  | baseline start 2015-04-17 16:30 → none; baseline finish 2015-04-20 10:30 → none |
| 63 | **Paso2 (Detalle Producto)** | 2015-04-20 15:30 A → 2015-04-15 14:30 A (-5d) | 2015-04-22 13:30 A → 2015-04-20 13:30 (-2d) | 1.56d → 2.56d | 100% → 79% | none → 0d |  | baseline start 2015-04-20 10:30 → none; baseline finish 2015-04-22 08:30 → none |
| 64 | Acceso a datos | 2015-04-20 15:30 A → 2015-04-15 14:30 A (-5d) | 2015-04-21 10:30 A → 2015-04-16 09:30 A (-5d) |  |  |  |  | baseline start 2015-04-20 10:30 → none; baseline finish 2015-04-20 15:30 → none |
| 65 | Datos básicos producto | 2015-04-21 10:30 A → 2015-04-16 09:30 A (-5d) | 2015-04-21 11:30 A → 2015-04-16 11:30 A (-5d) | 1h → 2h |  |  |  | baseline start 2015-04-20 15:30 → none; baseline finish 2015-04-20 16:30 → none |
| 66 | Seleccionar tipo de moto | 2015-04-21 11:30 A → 2015-04-16 11:30 A (-5d) | 2015-04-22 08:30 A → 2015-04-16 15:30 A (-6d) | 5h → 3h |  |  |  | baseline start 2015-04-20 16:30 → none; baseline finish 2015-04-21 13:30 → none |
| 67 | Datos de domicilio | 2015-07-28 11:30 → 2015-04-16 15:30 A (-103d) | 2015-07-28 16:30 → 2015-04-17 10:30 (-102d) |  | 0% → 50% | 0d → -39.01d | 94 → 66 | baseline start 2015-07-27 16:30 → none; baseline finish 2015-07-28 11:30 → none |
| 68 | Insumos | 2015-07-28 16:30 → 2015-04-17 10:30 A (-102d) | 2015-07-29 11:30 → 2015-04-17 15:30 (-103d) |  | 0% → 30% | 0d → -39.45d |  | baseline start 2015-07-28 11:30 → none; baseline finish 2015-07-28 16:30 → none |
| 69 | Editor HTML | 2015-07-29 11:30 → 2015-04-17 15:30 A (-103d) | 2015-07-29 14:30 → 2015-04-20 08:30 A (-100d) |  | 0% → 100% | 0d → none | 94, 68 → 68 | baseline start 2015-07-28 16:30 → none; baseline finish 2015-07-29 09:30 → none |
| 70 | Guardar | 2015-04-22 08:30 A → 2015-04-20 08:30 A (-2d) | 2015-04-22 10:30 A → 2015-04-20 09:30 A (-2d) | 2h → 1h |  |  | 66 → 69 | baseline start 2015-04-21 13:30 → none; baseline finish 2015-04-21 15:30 → none |
| 71 | Pruebas unitarias | 2015-04-22 10:30 A → 2015-04-20 09:30 A (-2d) | 2015-04-22 13:30 A → 2015-04-20 13:30 A (-2d) | 2h → 3h |  |  |  | baseline start 2015-04-21 15:30 → none; baseline finish 2015-04-22 08:30 → none |

| ID | Task | Start | Finish | Duration | Complete | Total float | Predecessors | Other |
| --- | --- | --- | --- | --- | --- | --- | --- | --- |
| 72 | **Paso 3 (Resumen)** | 2015-07-30 09:30 → 2015-04-20 13:30 A (-101d) | 2015-07-31 10:30 → 2015-04-21 14:30 A (-101d) |  | 0% → 100% | 0d → none | 91 → 63 | baseline start 2015-07-29 14:30 → none; baseline finish 2015-07-30 15:30 → none |
| 73 | Datos basicos | 2015-04-23 13:30 A → 2015-04-20 13:30 A (-3d) | 2015-04-23 15:30 A → 2015-04-20 15:30 A (-3d) |  |  |  |  | baseline start 2015-04-23 08:30 → none; baseline finish 2015-04-23 10:30 → none |
| 74 | Imagenes | 2015-04-23 15:30 A → 2015-04-20 15:30 A (-3d) | 2015-04-23 16:30 A → 2015-04-21 08:30 A (-2d) | 1h → 2h |  |  |  | baseline start 2015-04-23 10:30 → none; baseline finish 2015-04-23 11:30 → none |
| 75 | Aceptar terminos y condiciones | 2015-04-23 16:30 A → 2015-04-21 08:30 A (-2d) | 2015-04-24 08:30 A → 2015-04-21 09:30 A (-3d) |  |  |  |  | baseline start 2015-04-23 11:30 → none; baseline finish 2015-04-23 13:30 → none |
| 76 | Volver | 2015-04-24 08:30 A → 2015-04-21 09:30 A (-3d) | 2015-04-24 09:30 A → 2015-04-21 10:30 A (-3d) |  |  |  |  | baseline start 2015-04-23 13:30 → none; baseline finish 2015-04-23 14:30 → none |
| 77 | Publicar | 2015-04-24 09:30 A → 2015-04-21 10:30 A (-3d) | 2015-04-24 10:30 A → 2015-04-21 11:30 A (-3d) |  |  |  |  | baseline start 2015-04-23 14:30 → none; baseline finish 2015-04-23 15:30 → none |
| 78 | Pruebas unitarias | 2015-04-23 10:30 A → 2015-04-21 11:30 A (-2d) | 2015-04-23 13:30 A → 2015-04-21 14:30 A (-2d) |  |  |  | 102 → 77 | baseline start 2015-04-22 15:30 → none; baseline finish 2015-04-23 08:30 → none |
| 79 | **Publicación Moto** | 2015-04-16 10:30 A → 2015-04-21 14:30 A (+5d) | 2015-04-27 10:30 → 2015-04-30 14:30 A (+3d) |  | 93% → 100% | 0d → none | 50 → 51 | baseline start 2015-04-15 15:30 → none; baseline finish 2015-04-24 15:30 → none |
| 80 | **Paso1 (Seleccionar Categoria)** | 2015-07-23 14:30 → 2015-04-21 14:30 A (-93d) | 2015-07-27 10:30 → 2015-04-24 09:30 A (-94d) | 1.44d → 2.22d | 0% → 100% | 0d → none |  | baseline start 2015-07-23 09:30 → none; baseline finish 2015-07-24 15:30 → none |
| 81 | Ajustes de BD | 2015-07-23 14:30 → 2015-04-21 14:30 A (-93d) | 2015-07-24 08:30 → 2015-04-22 09:30 A (-93d) | 3h → 4h | 0% → 100% | 0d → none |  | baseline start 2015-07-23 09:30 → none; baseline finish 2015-07-23 13:30 → none |
| 82 | Menú Superior Tipo Producto | 2015-07-24 08:30 → 2015-04-22 09:30 A (-93d) | 2015-07-24 09:30 → 2015-04-22 10:30 A (-93d) |  | 0% → 100% | 0d → none |  | baseline start 2015-07-23 13:30 → none; baseline finish 2015-07-23 14:30 → none |
| 83 | Paso actual en el proceso | 2015-07-24 09:30 → 2015-04-22 10:30 A (-93d) | 2015-07-24 10:30 → 2015-04-22 11:30 A (-93d) |  | 0% → 100% | 0d → none |  | baseline start 2015-07-23 14:30 → none; baseline finish 2015-07-23 15:30 → none |
| 84 | **Seleccion de Categorias** | 2015-07-24 10:30 → 2015-04-22 11:30 A (-93d) | 2015-07-27 08:30 → 2015-04-23 15:30 A (-95d) | 0.67d → 1.22d | 0% → 100% | 0d → none |  | baseline start 2015-07-23 15:30 → none; baseline finish 2015-07-24 13:30 → none |
| 85 | Acceso a Datos | 2015-07-24 10:30 → 2015-04-22 11:30 A (-93d) | 2015-07-24 11:30 → 2015-04-22 16:30 A (-93d) | 1h → 4h | 0% → 100% | 0d → none |  | baseline start 2015-07-23 15:30 → none; baseline finish 2015-07-23 16:30 → none |
| 86 | Filtro por seleccion | 2015-07-24 11:30 → 2015-04-22 16:30 A (-93d) | 2015-07-24 14:30 → 2015-04-23 09:30 A (-92d) |  | 0% → 100% | 0d → none |  | baseline start 2015-07-23 16:30 → none; baseline finish 2015-07-24 09:30 → none |
| 87 | Filtro por texto | 2015-07-24 14:30 → 2015-04-23 09:30 A (-92d) | 2015-07-24 15:30 → 2015-04-23 11:30 A (-92d) | 1h → 2h | 0% → 100% | 0d → none |  | baseline start 2015-07-24 09:30 → none; baseline finish 2015-07-24 10:30 → none |
| 88 | Ultimo seleccionado | 2015-07-24 15:30 → 2015-04-23 11:30 A (-92d) | 2015-07-24 16:30 → 2015-04-23 13:30 A (-92d) |  | 0% → 100% | 0d → none |  | baseline start 2015-07-24 10:30 → none; baseline finish 2015-07-24 11:30 → none |
| 89 | Guardar | 2015-05-27 14:30 → 2015-04-23 13:30 A (-34d) | 2015-05-27 16:30 → 2015-04-23 15:30 A (-34d) |  | 0% → 100% | 0d → none | 136 → 88 | baseline start 2015-05-27 09:30 → none; baseline finish 2015-05-27 11:30 → none |
| 90 | Pruebas Unitarias | 2015-07-27 08:30 → 2015-04-23 15:30 A (-95d) | 2015-07-27 10:30 → 2015-04-24 09:30 A (-94d) | 2h → 3h | 0% → 100% | 0d → none |  | baseline start 2015-07-24 13:30 → none; baseline finish 2015-07-24 15:30 → none |
| 91 | **Paso2 (Detalle Producto)** | 2015-07-27 10:30 → 2015-04-24 09:30 A (-94d) | 2015-07-30 09:30 → 2015-04-27 16:30 A (-94d) | 2.56d → 1.56d | 0% → 100% | 0d → none |  | baseline start 2015-07-24 15:30 → none; baseline finish 2015-07-29 14:30 → none |
| 92 | Acceso a datos | 2015-05-20 14:30 → 2015-04-24 09:30 A (-26d) | 2015-05-21 09:30 → 2015-04-24 14:30 A (-27d) |  | 0% → 100% | 0d → none |  | baseline start 2015-05-20 09:30 → none; baseline finish 2015-05-20 14:30 → none |
| 93 | Datos básicos producto | 2015-07-27 15:30 → 2015-04-24 14:30 A (-94d) | 2015-07-28 08:30 → 2015-04-24 15:30 A (-95d) | 2h → 1h | 0% → 100% | 0d → none | 287 → 92 | baseline start 2015-07-27 10:30 → none; baseline finish 2015-07-27 13:30 → none |
| 94 | Seleccionar tipo de moto | 2015-07-28 08:30 → 2015-04-24 15:30 A (-95d) | 2015-07-28 11:30 → 2015-04-27 11:30 A (-92d) | 3h → 5h | 0% → 100% | 0d → none |  | baseline start 2015-07-27 13:30 → none; baseline finish 2015-07-27 16:30 → none |
| 95 | Guardar | 2015-06-04 13:30 → 2015-04-27 11:30 A (-38d) | 2015-06-04 15:30 → 2015-04-27 14:30 A (-38d) |  | 0% → 100% | 0d → none | 179 → 94 | baseline start 2015-06-04 08:30 → none; baseline finish 2015-06-04 10:30 → none |
| 96 | Pruebas unitarias | 2015-04-24 10:30 A → 2015-04-27 14:30 A (+3d) | 2015-04-24 13:30 A → 2015-04-27 16:30 A (+3d) |  |  |  | 77 → 95 | baseline start 2015-04-23 15:30 → none; baseline finish 2015-04-24 08:30 → none |
| 97 | **Paso3 (Seleccionador Fotos)** | 2015-04-22 13:30 A → 2015-04-27 16:30 A (+5d) | 2015-04-23 13:30 A → 2015-04-28 16:30 A (+5d) |  |  |  | 63 → 91 | baseline start 2015-04-22 08:30 → none; baseline finish 2015-04-23 08:30 → none |
| 98 | Mostrar fotos | 2015-04-22 13:30 A → 2015-04-27 16:30 A (+5d) | 2015-04-22 15:30 A → 2015-04-28 09:30 A (+6d) |  |  |  |  | baseline start 2015-04-22 08:30 → none; baseline finish 2015-04-22 10:30 → none |
| 99 | Seleccionar foto | 2015-04-22 15:30 A → 2015-04-28 09:30 A (+6d) | 2015-04-22 16:30 A → 2015-04-28 10:30 A (+6d) |  |  |  |  | baseline start 2015-04-22 10:30 → none; baseline finish 2015-04-22 11:30 → none |
| 100 | Cambiar foto | 2015-04-22 16:30 A → 2015-04-28 10:30 A (+6d) | 2015-04-23 08:30 A → 2015-04-28 11:30 A (+5d) |  |  |  |  | baseline start 2015-04-22 11:30 → none; baseline finish 2015-04-22 13:30 → none |
| 101 | Eliminar foto | 2015-04-23 08:30 A → 2015-04-28 11:30 A (+5d) | 2015-04-23 09:30 A → 2015-04-28 13:30 A (+5d) |  |  |  |  | baseline start 2015-04-22 13:30 → none; baseline finish 2015-04-22 14:30 → none |
| 102 | Guardar fotos | 2015-04-23 09:30 A → 2015-04-28 13:30 A (+5d) | 2015-04-23 10:30 A → 2015-04-28 14:30 A (+5d) |  |  |  |  | baseline start 2015-04-22 14:30 → none; baseline finish 2015-04-22 15:30 → none |
| 103 | Pruebas unitarias | 2015-05-12 14:30 → 2015-04-28 14:30 A (-14d) | 2015-05-13 09:30 → 2015-04-28 16:30 A (-15d) | 4h → 2h | 0% → 100% | 0d → none | 235 → 102 | baseline start 2015-05-12 09:30 → none; baseline finish 2015-05-12 14:30 → none |
| 104 | **Paso 4 (Resumen)** | 2015-04-23 13:30 A → 2015-04-28 16:30 A (+5d) | 2015-04-24 13:30 A → 2015-04-29 16:30 A (+5d) |  |  |  |  | baseline start 2015-04-23 08:30 → none; baseline finish 2015-04-24 08:30 → none |
| 105 | Datos basicos | 2015-05-13 13:30 → 2015-04-28 16:30 A (-15d) | 2015-05-13 16:30 → 2015-04-29 09:30 A (-14d) | 3h → 2h | 0% → 100% | 0d → none | 194 → none | baseline start 2015-05-13 08:30 → none; baseline finish 2015-05-13 11:30 → none |
| 106 | Imagenes | 2015-07-30 11:30 → 2015-04-29 09:30 A (-92d) | 2015-07-30 14:30 → 2015-04-29 10:30 A (-92d) | 2h → 1h | 0% → 100% | 0d → none | 203 → 105 | baseline start 2015-07-29 16:30 → none; baseline finish 2015-07-30 09:30 → none |
| 107 | Aceptar terminos y condiciones | 2015-07-30 14:30 → 2015-04-29 10:30 A (-92d) | 2015-07-30 15:30 → 2015-04-29 11:30 A (-92d) |  | 0% → 100% | 0d → none |  | baseline start 2015-07-30 09:30 → none; baseline finish 2015-07-30 10:30 → none |
| 108 | Volver | 2015-07-30 15:30 → 2015-04-29 11:30 A (-92d) | 2015-07-30 16:30 → 2015-04-29 13:30 A (-92d) |  | 0% → 100% | 0d → none |  | baseline start 2015-07-30 10:30 → none; baseline finish 2015-07-30 11:30 → none |
| 109 | Publicar | 2015-07-30 16:30 → 2015-04-29 13:30 A (-92d) | 2015-07-31 08:30 → 2015-04-29 14:30 A (-93d) |  | 0% → 100% | 0d → none |  | baseline start 2015-07-30 11:30 → none; baseline finish 2015-07-30 13:30 → none |
| 110 | Pruebas unitarias | 2015-05-14 11:30 → 2015-04-29 14:30 A (-15d) | 2015-05-14 15:30 → 2015-04-29 16:30 A (-15d) | 3h → 2h | 0% → 100% | 0d → none | 197 → 109 | baseline start 2015-05-13 16:30 → none; baseline finish 2015-05-14 10:30 → none |
| 111 | Ajustar Diseño | 2015-04-24 13:30 A → 2015-04-29 16:30 A (+5d) | 2015-04-27 10:30 → 2015-04-30 14:30 A (+3d) |  | 80% → 100% | 0d → none | 104, 252 → 104 | baseline start 2015-04-24 08:30 → none; baseline finish 2015-04-24 15:30 → none |
| 112 | **Detalle Tienda** | 2015-07-08 15:30 → 2015-04-30 14:30 A (-69d) | 2015-07-14 14:30 → 2015-05-06 13:30 (-69d) |  | 0% → 94% |  | 141 → 79 | baseline start 2015-07-08 10:30 → none; baseline finish 2015-07-14 09:30 → none |
| 113 | Fondo de tienda | 2015-07-08 15:30 → 2015-04-30 14:30 A (-69d) | 2015-07-09 08:30 → 2015-04-30 16:30 A (-70d) |  | 0% → 100% | 0d → none |  | baseline start 2015-07-08 10:30 → none; baseline finish 2015-07-08 13:30 → none |
| 114 | Imagenes adicionales | 2015-07-09 08:30 → 2015-04-30 16:30 A (-70d) | 2015-07-09 14:30 → 2015-05-01 13:30 A (-69d) |  | 0% → 100% | 0d → none |  | baseline start 2015-07-08 13:30 → none; baseline finish 2015-07-09 09:30 → none |
| 115 | Informacion básica | 2015-07-09 14:30 → 2015-05-01 13:30 A (-69d) | 2015-07-09 16:30 → 2015-05-01 15:30 A (-69d) |  | 0% → 100% | 0d → none |  | baseline start 2015-07-09 09:30 → none; baseline finish 2015-07-09 11:30 → none |
| 116 | Enviar mensaje privado | 2015-07-09 16:30 → 2015-05-01 15:30 (-69d) | 2015-07-10 08:30 → 2015-05-01 16:30 (-70d) |  |  | 0d → -74.45d |  | baseline start 2015-07-09 11:30 → none; baseline finish 2015-07-09 13:30 → none |
| 117 | Contar experiencia | 2015-05-22 13:30 → 2015-05-01 16:30 (-21d) | 2015-05-25 09:30 → 2015-05-04 08:30 (-21d) | 5h → 1h |  | 0d → -74.45d | 290 → 116 | baseline start 2015-05-22 08:30 → none; baseline finish 2015-05-22 14:30 → none |
| 118 | **Listado de productos** | 2015-04-27 10:30 → 2015-05-04 08:30 A (+7d) | 2015-04-29 15:30 → 2015-05-05 08:30 A (+6d) | 2.22d → 0.89d | 0% → 100% | 0d → none | 79 → 117 | baseline start 2015-04-24 15:30 → none; baseline finish 2015-04-29 10:30 → none |
| 119 | Listar productos | 2015-07-10 09:30 → 2015-05-04 08:30 A (-67d) | 2015-07-10 14:30 → 2015-05-04 13:30 A (-67d) |  | 0% → 100% | 0d → none |  | baseline start 2015-07-09 14:30 → none; baseline finish 2015-07-10 09:30 → none |
| 120 | Filtrar Productos | 2015-07-10 14:30 → 2015-05-04 13:30 A (-67d) | 2015-07-13 08:30 → 2015-05-04 16:30 A (-70d) |  | 0% → 100% | 0d → none |  | baseline start 2015-07-10 09:30 → none; baseline finish 2015-07-10 13:30 → none |
| 121 | Paginar productos | 2015-07-13 08:30 → 2015-05-04 16:30 A (-70d) | 2015-07-13 09:30 → 2015-05-05 08:30 A (-69d) |  | 0% → 100% | 0d → none |  | baseline start 2015-07-10 13:30 → none; baseline finish 2015-07-10 14:30 → none |
| 122 | Listar comentarios | 2015-07-13 09:30 → 2015-05-05 08:30 A (-69d) | 2015-07-13 13:30 → 2015-05-05 11:30 A (-69d) |  | 0% → 100% | 0d → none | 212 → 118 | baseline start 2015-07-10 14:30 → none; baseline finish 2015-07-13 08:30 → none |
| 123 | **Mapas** | 2015-07-13 13:30 → 2015-05-05 11:30 A (-69d) | 2015-07-14 14:30 → 2015-05-06 13:30 A (-69d) |  | 0% → 100% | 0d → none |  | baseline start 2015-07-13 08:30 → none; baseline finish 2015-07-14 09:30 → none |
| 124 | Mostrar sedes | 2015-07-13 13:30 → 2015-05-05 11:30 A (-69d) | 2015-07-14 08:30 → 2015-05-05 16:30 A (-70d) |  | 0% → 100% | 0d → none |  | baseline start 2015-07-13 08:30 → none; baseline finish 2015-07-13 13:30 → none |
| 125 | Informacion básica | 2015-07-14 08:30 → 2015-05-05 16:30 A (-70d) | 2015-07-14 09:30 → 2015-05-06 08:30 A (-69d) |  | 0% → 100% | 0d → none |  | baseline start 2015-07-13 13:30 → none; baseline finish 2015-07-13 14:30 → none |
| 126 | Ubicar punto | 2015-07-14 09:30 → 2015-05-06 08:30 A (-69d) | 2015-07-14 14:30 → 2015-05-06 13:30 A (-69d) |  | 0% → 100% | 0d → none |  | baseline start 2015-07-13 14:30 → none; baseline finish 2015-07-14 09:30 → none |
| 127 | **Panel de Control** | 2015-05-25 11:30 → 2015-05-06 13:30 A (-19d) | 2015-06-11 10:30 → 2015-05-29 16:30 (-13d) | 10.56d → 15.44d | 0% → 28% | 0d → -8d | 286 → 112 | baseline start 2015-05-22 16:30 → none; baseline finish 2015-06-10 15:30 → none |
| 128 | Home Panel De Control | 2015-05-25 11:30 → 2015-05-06 13:30 (-19d) | 2015-05-26 09:30 → 2015-05-07 10:30 (-19d) |  |  | 0d → -76.68d |  | baseline start 2015-05-22 16:30 → none; baseline finish 2015-05-25 14:30 → none |
| 129 | **Mis datos** | 2015-05-26 09:30 → 2015-05-07 10:30 A (-19d) | 2015-05-28 10:30 → 2015-05-11 11:30 (-17d) |  | 0% → 88% |  |  | baseline start 2015-05-25 14:30 → none; baseline finish 2015-05-27 15:30 → none |
| 130 | BD | 2015-05-04 15:30 → 2015-05-07 10:30 A (+3d) | 2015-05-05 08:30 → 2015-05-07 13:30 A (+2d) |  | 0% → 100% | 0d → none |  | baseline start 2015-05-04 10:30 → none; baseline finish 2015-05-04 13:30 → none |
| 131 | Datos basicos | 2015-05-15 15:30 → 2015-05-07 13:30 A (-8d) | 2015-05-19 09:30 → 2015-05-07 16:30 A (-12d) |  | 0% → 100% | 0d → none | none → 130 | baseline start 2015-05-15 10:30 → none; baseline finish 2015-05-15 14:30 → none |
| 132 | **Mi moto** | 2015-05-26 15:30 → 2015-05-07 16:30 A (-19d) | 2015-05-27 11:30 → 2015-05-08 13:30 (-19d) |  | 0% → 80% | 0d → -0.11d | 143 → 131 | baseline start 2015-05-26 10:30 → none; baseline finish 2015-05-26 16:30 → none |
| 133 | Seleccion de marca | 2015-05-26 15:30 → 2015-05-07 16:30 A (-19d) | 2015-05-27 09:30 → 2015-05-08 10:30 A (-19d) |  | 0% → 100% | 0d → none |  | baseline start 2015-05-26 10:30 → none; baseline finish 2015-05-26 14:30 → none |
| 134 | Datos adicionales | 2015-05-27 09:30 → 2015-05-08 10:30 A (-19d) | 2015-05-27 10:30 → 2015-05-08 11:30 A (-19d) |  | 0% → 100% | 0d → none |  | baseline start 2015-05-26 14:30 → none; baseline finish 2015-05-26 15:30 → none |
| 135 | Carga de logo | 2015-05-27 10:30 → 2015-05-08 11:30 (-19d) | 2015-05-27 11:30 → 2015-05-08 13:30 (-19d) |  |  | 0d → -77.68d |  | baseline start 2015-05-26 15:30 → none; baseline finish 2015-05-26 16:30 → none |
| 136 | **Cambiar Clave** | 2015-05-27 11:30 → 2015-05-08 13:30 A (-19d) | 2015-05-27 14:30 → 2015-05-08 15:30 (-19d) |  | 0% → 50% |  |  | baseline start 2015-05-26 16:30 → none; baseline finish 2015-05-27 09:30 → none |
| 137 | Ajustar diseño | 2015-05-27 11:30 → 2015-05-08 13:30 (-19d) | 2015-05-27 13:30 → 2015-05-08 14:30 (-19d) |  |  | 0d → -77.68d |  | baseline start 2015-05-26 16:30 → none; baseline finish 2015-05-27 08:30 → none |
| 138 | Retornar a edicion de datos | 2015-05-27 13:30 → 2015-05-08 14:30 A (-19d) | 2015-05-27 14:30 → 2015-05-08 15:30 A (-19d) |  | 0% → 100% | 0d → none |  | baseline start 2015-05-27 08:30 → none; baseline finish 2015-05-27 09:30 → none |
| 139 | Guardar | 2015-07-24 16:30 → 2015-05-08 15:30 A (-77d) | 2015-07-27 08:30 → 2015-05-11 08:30 A (-77d) | 1h → 2h | 0% → 100% | 0d → none | 88 → 136 | baseline start 2015-07-24 11:30 → none; baseline finish 2015-07-24 13:30 → none |
| 140 | Pruebas unitarias | 2015-05-19 11:30 → 2015-05-11 08:30 A (-8d) | 2015-05-19 14:30 → 2015-05-11 11:30 A (-8d) | 2h → 3h | 0% → 100% | 0d → none | 204 → 139 | baseline start 2015-05-15 16:30 → none; baseline finish 2015-05-19 09:30 → none |
| 141 | **Actualizacion de Tienda** | 2015-07-01 10:30 → 2015-05-11 11:30 A (-51d) | 2015-07-08 15:30 → 2015-05-18 16:30 (-51d) |  | 0% → 55% |  | 293 → 129 | baseline start 2015-06-30 15:30 → none; baseline finish 2015-07-08 10:30 → none |

| ID | Task | Start | Finish | Duration | Complete | Total float | Predecessors | Other |
| --- | --- | --- | --- | --- | --- | --- | --- | --- |
| 142 | BD | 2015-05-26 09:30 → 2015-05-11 11:30 A (-15d) | 2015-05-26 11:30 → 2015-05-11 14:30 (-15d) |  | 0% → 50% | 0d → -77.01d |  | baseline start 2015-05-25 14:30 → none; baseline finish 2015-05-25 16:30 → none |
| 143 | Datos basicos | 2015-05-26 11:30 → 2015-05-11 14:30 A (-15d) | 2015-05-26 15:30 → 2015-05-11 16:30 A (-15d) | 3h → 2h | 0% → 100% | 0d → none |  | baseline start 2015-05-25 16:30 → none; baseline finish 2015-05-26 10:30 → none |
| 144 | Cargar logo | 2015-07-01 15:30 → 2015-05-11 16:30 A (-51d) | 2015-07-02 09:30 → 2015-05-12 10:30 A (-51d) |  | 0% → 100% | 0d → none | 195 → 143 | baseline start 2015-07-01 10:30 → none; baseline finish 2015-07-01 14:30 → none |
| 145 | Cargar fondo | 2015-07-02 09:30 → 2015-05-12 10:30 A (-51d) | 2015-07-02 11:30 → 2015-05-12 13:30 A (-51d) |  | 0% → 100% | 0d → none |  | baseline start 2015-07-01 14:30 → none; baseline finish 2015-07-01 16:30 → none |
| 146 | Servicios especializados | 2015-07-02 11:30 → 2015-05-12 13:30 (-51d) | 2015-07-03 09:30 → 2015-05-13 10:30 (-51d) |  |  | 0d → -79.9d |  | baseline start 2015-07-01 16:30 → none; baseline finish 2015-07-02 14:30 → none |
| 147 | Recibir cotizaciones de | 2015-07-03 09:30 → 2015-05-13 10:30 (-51d) | 2015-07-03 11:30 → 2015-05-13 13:30 (-51d) |  |  | 0d → -79.9d |  | baseline start 2015-07-02 14:30 → none; baseline finish 2015-07-02 16:30 → none |
| 148 | Referencias especializadas | 2015-07-03 11:30 → 2015-05-13 13:30 (-51d) | 2015-07-03 16:30 → 2015-05-14 08:30 (-50d) |  |  | 0d → -79.9d |  | baseline start 2015-07-02 16:30 → none; baseline finish 2015-07-03 11:30 → none |
| 149 | **Imagenes Adicionales** | 2015-07-03 16:30 → 2015-05-14 08:30 (-50d) | 2015-07-06 15:30 → 2015-05-14 16:30 (-53d) |  |  | 0d → -79.34d |  | baseline start 2015-07-03 11:30 → none; baseline finish 2015-07-06 10:30 → none |
| 150 | Agregar | 2015-07-03 16:30 → 2015-05-14 08:30 (-50d) | 2015-07-06 11:30 → 2015-05-14 13:30 (-53d) |  |  | 0d → -82.12d |  | baseline start 2015-07-03 11:30 → none; baseline finish 2015-07-03 16:30 → none |
| 151 | Eliminar | 2015-07-06 11:30 → 2015-05-14 13:30 (-53d) | 2015-07-06 13:30 → 2015-05-14 14:30 (-53d) |  |  | 0d → -82.12d |  | baseline start 2015-07-03 16:30 → none; baseline finish 2015-07-06 08:30 → none |
| 152 | Cambiar | 2015-07-06 13:30 → 2015-05-14 14:30 (-53d) | 2015-07-06 15:30 → 2015-05-14 16:30 (-53d) |  |  | 0d → -82.12d |  | baseline start 2015-07-06 08:30 → none; baseline finish 2015-07-06 10:30 → none |
| 153 | **Sedes** | 2015-07-06 15:30 → 2015-05-14 16:30 A (-53d) | 2015-07-08 15:30 → 2015-05-18 16:30 A (-51d) |  | 0% → 100% | 0d → none |  | baseline start 2015-07-06 10:30 → none; baseline finish 2015-07-08 10:30 → none |
| 154 | BD | 2015-06-03 15:30 → 2015-05-14 16:30 A (-20d) | 2015-06-04 08:30 → 2015-05-15 10:30 A (-20d) | 2h → 3h | 0% → 100% | 0d → none | 178 → none | baseline start 2015-06-03 10:30 → none; baseline finish 2015-06-03 13:30 → none |
| 155 | Listar | 2015-07-07 09:30 → 2015-05-15 10:30 A (-53d) | 2015-07-07 11:30 → 2015-05-15 13:30 A (-53d) |  | 0% → 100% | 0d → none | 227 → 154 | baseline start 2015-07-06 14:30 → none; baseline finish 2015-07-06 16:30 → none |
| 156 | Crear | 2015-07-07 11:30 → 2015-05-15 13:30 A (-53d) | 2015-07-07 16:30 → 2015-05-18 08:30 A (-50d) |  | 0% → 100% | 0d → none |  | baseline start 2015-07-06 16:30 → none; baseline finish 2015-07-07 11:30 → none |
| 157 | Editar | 2015-07-07 16:30 → 2015-05-18 08:30 A (-50d) | 2015-07-08 09:30 → 2015-05-18 10:30 A (-51d) |  | 0% → 100% | 0d → none |  | baseline start 2015-07-07 11:30 → none; baseline finish 2015-07-07 14:30 → none |
| 158 | Eliminar | 2015-07-08 09:30 → 2015-05-18 10:30 A (-51d) | 2015-07-08 10:30 → 2015-05-18 11:30 A (-51d) |  | 0% → 100% | 0d → none |  | baseline start 2015-07-07 14:30 → none; baseline finish 2015-07-07 15:30 → none |
| 159 | Ubicar en mapa | 2015-07-08 10:30 → 2015-05-18 11:30 A (-51d) | 2015-07-08 15:30 → 2015-05-18 16:30 A (-51d) |  | 0% → 100% | 0d → none |  | baseline start 2015-07-07 15:30 → none; baseline finish 2015-07-08 10:30 → none |
| 160 | **Mis productos** | 2015-05-28 10:30 → 2015-05-18 16:30 (-10d) | 2015-06-01 13:30 → 2015-05-21 09:30 (-11d) |  |  | 0d → -81.12d | 129 → 141 | baseline start 2015-05-27 15:30 → none; baseline finish 2015-06-01 08:30 → none |
| 161 | Filtro de tipo de producto | 2015-05-28 10:30 → 2015-05-18 16:30 (-10d) | 2015-05-28 13:30 → 2015-05-19 09:30 (-9d) |  |  | 0d → -81.68d |  | baseline start 2015-05-27 15:30 → none; baseline finish 2015-05-28 08:30 → none |
| 162 | Filtro estado | 2015-05-28 13:30 → 2015-05-19 09:30 (-9d) | 2015-05-28 15:30 → 2015-05-19 11:30 (-9d) |  |  | 0d → -81.68d |  | baseline start 2015-05-28 08:30 → none; baseline finish 2015-05-28 10:30 → none |
| 163 | Listado de productos | 2015-04-27 10:30 → 2015-05-19 11:30 (+22d) | 2015-04-27 15:30 → 2015-05-19 15:30 (+22d) | 4h → 3h |  | 0d → -81.68d | none → 162 | baseline start 2015-04-24 15:30 → none; baseline finish 2015-04-27 10:30 → none |
| 164 | Acceso a datos | 2015-05-29 09:30 → 2015-05-19 15:30 (-10d) | 2015-05-29 11:30 → 2015-05-20 08:30 (-9d) |  |  | 0d → -81.68d | 171 → 163 | baseline start 2015-05-28 14:30 → none; baseline finish 2015-05-28 16:30 → none |
| 165 | **Responder preguntas** | 2015-05-29 11:30 → 2015-05-20 08:30 (-9d) | 2015-06-01 09:30 → 2015-05-20 15:30 (-12d) |  |  | 0d → -81.12d |  | baseline start 2015-05-28 16:30 → none; baseline finish 2015-05-29 14:30 → none |
| 166 | Listado de preguntas | 2015-05-29 11:30 → 2015-05-20 08:30 (-9d) | 2015-05-29 15:30 → 2015-05-20 11:30 (-9d) |  |  | 0d → -81.68d |  | baseline start 2015-05-28 16:30 → none; baseline finish 2015-05-29 10:30 → none |
| 167 | Guardado de datos | 2015-05-29 15:30 → 2015-05-20 11:30 (-9d) | 2015-06-01 08:30 → 2015-05-20 14:30 (-12d) |  |  | 0d → -81.68d |  | baseline start 2015-05-29 10:30 → none; baseline finish 2015-05-29 13:30 → none |
| 168 | Enviar notificacion | 2015-06-01 08:30 → 2015-05-20 14:30 (-12d) | 2015-06-01 09:30 → 2015-05-20 15:30 (-12d) |  |  | 0d → -81.68d |  | baseline start 2015-05-29 13:30 → none; baseline finish 2015-05-29 14:30 → none |
| 169 | Pruebas unitarias | 2015-05-27 16:30 → 2015-05-20 15:30 (-7d) | 2015-05-28 10:30 → 2015-05-21 09:30 (-7d) |  |  | 0d → -81.68d | 89 → 165 | baseline start 2015-05-27 11:30 → none; baseline finish 2015-05-27 15:30 → none |
| 170 | **Mis ventas** | 2015-06-01 13:30 → 2015-05-21 09:30 (-11d) | 2015-06-02 14:30 → 2015-05-22 10:30 (-11d) |  |  | 0d → -81.12d |  | baseline start 2015-06-01 08:30 → none; baseline finish 2015-06-02 09:30 → none |
| 171 | Listado de productos | 2015-05-28 15:30 → 2015-05-21 09:30 (-7d) | 2015-05-29 09:30 → 2015-05-21 13:30 (-8d) |  |  | 0d → -81.68d | 162 → none | baseline start 2015-05-28 10:30 → none; baseline finish 2015-05-28 14:30 → none |
| 172 | Filtro | 2015-06-01 16:30 → 2015-05-21 13:30 (-11d) | 2015-06-02 09:30 → 2015-05-21 15:30 (-12d) |  |  | 0d → -81.68d | 176 → 171 | baseline start 2015-06-01 11:30 → none; baseline finish 2015-06-01 14:30 → none |
| 173 | Acceso a datos | 2015-06-02 09:30 → 2015-05-21 15:30 (-12d) | 2015-06-02 11:30 → 2015-05-22 08:30 (-11d) |  |  | 0d → -81.68d |  | baseline start 2015-06-01 14:30 → none; baseline finish 2015-06-01 16:30 → none |
| 174 | Pruebas unitarias | 2015-06-01 09:30 → 2015-05-22 08:30 (-10d) | 2015-06-01 13:30 → 2015-05-22 10:30 (-10d) | 3h → 2h |  | 0d → -81.68d | 165 → 173 | baseline start 2015-05-29 14:30 → none; baseline finish 2015-06-01 08:30 → none |
| 175 | **Mis Compras** | 2015-06-02 14:30 → 2015-05-22 10:30 (-11d) | 2015-06-05 10:30 → 2015-05-26 16:30 (-10d) |  |  | 0d → -81.12d |  | baseline start 2015-06-02 09:30 → none; baseline finish 2015-06-04 15:30 → none |
| 176 | Listado de productos | 2015-06-01 13:30 → 2015-05-22 10:30 (-10d) | 2015-06-01 16:30 → 2015-05-22 15:30 (-10d) | 3h → 4h |  | 0d → -81.68d |  | baseline start 2015-06-01 08:30 → none; baseline finish 2015-06-01 11:30 → none |
| 177 | Filtros | 2015-06-03 09:30 → 2015-05-22 15:30 (-12d) | 2015-06-03 13:30 → 2015-05-25 09:30 (-9d) |  |  | 0d → -81.68d | 213 → 176 | baseline start 2015-06-02 14:30 → none; baseline finish 2015-06-03 08:30 → none |
| 178 | Paginacion | 2015-06-03 13:30 → 2015-05-25 09:30 (-9d) | 2015-06-03 15:30 → 2015-05-25 11:30 (-9d) |  |  | 0d → -81.68d |  | baseline start 2015-06-03 08:30 → none; baseline finish 2015-06-03 10:30 → none |
| 179 | BD | 2015-06-04 10:30 → 2015-05-25 11:30 (-10d) | 2015-06-04 13:30 → 2015-05-25 14:30 (-10d) |  |  | 0d → -81.68d | 181 → 178 | baseline start 2015-06-03 15:30 → none; baseline finish 2015-06-04 08:30 → none |
| 180 | **Calificar** | 2015-06-04 08:30 → 2015-05-25 14:30 (-10d) | 2015-06-04 16:30 → 2015-05-26 13:30 (-9d) |  |  | 0d → -81.12d | 154 → 179 | baseline start 2015-06-03 13:30 → none; baseline finish 2015-06-04 11:30 → none |
| 181 | Datos basicos | 2015-06-04 08:30 → 2015-05-25 14:30 (-10d) | 2015-06-04 10:30 → 2015-05-25 16:30 (-10d) |  |  | 0d → -81.68d |  | baseline start 2015-06-03 13:30 → none; baseline finish 2015-06-03 15:30 → none |
| 182 | BD | 2015-07-01 10:30 → 2015-05-25 16:30 (-37d) | 2015-07-01 13:30 → 2015-05-26 09:30 (-36d) |  |  | 0d → -81.68d | none → 181 | baseline start 2015-06-30 15:30 → none; baseline finish 2015-07-01 08:30 → none |
| 183 | Guardar | 2015-07-29 14:30 → 2015-05-26 09:30 (-64d) | 2015-07-29 15:30 → 2015-05-26 11:30 (-64d) | 1h → 2h |  | 0d → -81.68d | 69 → 182 | baseline start 2015-07-29 09:30 → none; baseline finish 2015-07-29 10:30 → none |
| 184 | Volver a listado | 2015-06-04 15:30 → 2015-05-26 11:30 (-9d) | 2015-06-04 16:30 → 2015-05-26 13:30 (-9d) |  |  | 0d → -81.68d | 95 → 183 | baseline start 2015-06-04 10:30 → none; baseline finish 2015-06-04 11:30 → none |
| 185 | Pruebas unitarias | 2015-06-02 11:30 → 2015-05-26 13:30 (-7d) | 2015-06-02 14:30 → 2015-05-26 16:30 (-7d) | 2h → 3h |  | 0d → -81.68d | 173 → 180 | baseline start 2015-06-01 16:30 → none; baseline finish 2015-06-02 09:30 → none |
| 186 | **Mensajes Recibidos** | 2015-06-05 10:30 → 2015-05-26 16:30 (-10d) | 2015-06-10 09:30 → 2015-05-28 15:30 (-13d) |  |  | 0d → -81.12d |  | baseline start 2015-06-04 15:30 → none; baseline finish 2015-06-09 14:30 → none |
| 187 | Listado de mensajes | 2015-06-05 10:30 → 2015-05-26 16:30 (-10d) | 2015-06-05 15:30 → 2015-05-27 11:30 (-9d) |  |  | 0d → -81.68d |  | baseline start 2015-06-04 15:30 → none; baseline finish 2015-06-05 10:30 → none |
| 188 | Filtro | 2015-06-05 15:30 → 2015-05-27 11:30 (-9d) | 2015-06-09 08:30 → 2015-05-27 14:30 (-13d) |  |  | 0d → -81.68d |  | baseline start 2015-06-05 10:30 → none; baseline finish 2015-06-05 13:30 → none |
| 189 | Cargar hilo de mensajes | 2015-06-09 08:30 → 2015-05-27 14:30 (-13d) | 2015-06-09 13:30 → 2015-05-28 09:30 (-12d) |  |  | 0d → -81.68d |  | baseline start 2015-06-05 13:30 → none; baseline finish 2015-06-09 08:30 → none |
| 190 | Responder mensaje | 2015-06-09 13:30 → 2015-05-28 09:30 (-12d) | 2015-06-09 15:30 → 2015-05-28 11:30 (-12d) |  |  | 0d → -81.68d |  | baseline start 2015-06-09 08:30 → none; baseline finish 2015-06-09 10:30 → none |
| 191 | Pruebas unitarias | 2015-06-04 16:30 → 2015-05-28 11:30 (-7d) | 2015-06-05 10:30 → 2015-05-28 15:30 (-8d) |  |  | 0d → -81.68d | 180 → 190 | baseline start 2015-06-04 11:30 → none; baseline finish 2015-06-04 15:30 → none |
| 192 | Panel de notificaciones | 2015-06-10 09:30 → 2015-05-28 15:30 (-13d) | 2015-06-11 10:30 → 2015-05-29 16:30 (-13d) |  |  | 0d → -81.12d |  | baseline start 2015-06-09 14:30 → none; baseline finish 2015-06-10 15:30 → none |
| 193 | **Registro** | 2015-05-13 09:30 A → 2015-05-29 16:30 A (+16d) | 2015-05-15 15:30 → 2015-06-03 13:30 (+19d) |  | 19% → 65% |  | 230 → 127 | baseline start 2015-05-12 14:30 → none; baseline finish 2015-05-15 10:30 → none |
| 194 | Tipo persona | 2015-05-13 09:30 → 2015-05-29 16:30 A (+16d) | 2015-05-13 13:30 → 2015-06-01 10:30 (+19d) |  | 0% → 20% | 0d → -81.34d |  | baseline start 2015-05-12 14:30 → none; baseline finish 2015-05-13 08:30 → none |
| 195 | Datos basicos | 2015-07-01 13:30 → 2015-06-01 10:30 A (-30d) | 2015-07-01 15:30 → 2015-06-01 14:30 A (-30d) | 2h → 3h | 0% → 100% | 0d → none | 182 → 194 | baseline start 2015-07-01 08:30 → none; baseline finish 2015-07-01 10:30 → none |
| 196 | Guardar datos | 2015-05-13 16:30 → 2015-06-01 14:30 A (+19d) | 2015-05-14 10:30 → 2015-06-02 08:30 A (+19d) |  | 0% → 100% | 0d → none | 105 → 195 | baseline start 2015-05-13 11:30 → none; baseline finish 2015-05-13 15:30 → none |
| 197 | Enviar correo de confirmacion | 2015-05-14 10:30 → 2015-06-02 08:30 (+19d) | 2015-05-14 11:30 → 2015-06-02 09:30 (+19d) |  |  | 0d → -82.12d |  | baseline start 2015-05-13 15:30 → none; baseline finish 2015-05-13 16:30 → none |
| 198 | Pruebas unitarias | 2015-06-09 15:30 → 2015-06-02 09:30 A (-7d) | 2015-06-10 09:30 → 2015-06-02 13:30 A (-8d) |  | 0% → 100% | 0d → none | 190 → 197 | baseline start 2015-06-09 10:30 → none; baseline finish 2015-06-09 14:30 → none |
| 199 | **Registro rapido** | 2015-05-14 15:30 A → 2015-06-02 13:30 A (+19d) | 2015-05-15 15:30 → 2015-06-03 13:30 (+19d) |  |  |  | 110 → 198 | baseline start 2015-05-14 10:30 → none; baseline finish 2015-05-15 10:30 → none |
| 200 | Creacion funcionalidad | 2015-05-14 15:30 A → 2015-06-02 13:30 A (+19d) | 2015-05-15 13:30 → 2015-06-03 10:30 (+19d) |  |  | 0.11d → -83.12d |  | baseline start 2015-05-14 10:30 → none; baseline finish 2015-05-15 08:30 → none |
| 201 | Llamado en los sitios pendientes | 2015-05-15 13:30 A → 2015-06-03 10:30 A (+19d) | 2015-05-15 15:30 → 2015-06-03 13:30 (+19d) |  |  | 0d → -83.34d |  | baseline start 2015-05-15 08:30 → none; baseline finish 2015-05-15 10:30 → none |
| 202 | **Autenticacion** | 2015-05-15 15:30 A → 2015-06-03 13:30 A (+19d) | 2015-05-20 10:30 → 2015-06-05 08:30 (+16d) |  | 42% → 21% |  |  | baseline start 2015-05-15 10:30 → none; baseline finish 2015-05-19 15:30 → none |
| 203 | Datos basicos | 2015-07-30 09:30 → 2015-06-03 13:30 (-57d) | 2015-07-30 11:30 → 2015-06-03 16:30 (-57d) | 2h → 3h |  | 0d → -83.34d |  | baseline start 2015-07-29 14:30 → none; baseline finish 2015-07-29 16:30 → none |
| 204 | Autenticacion | 2015-05-19 09:30 → 2015-06-03 16:30 (+15d) | 2015-05-19 11:30 → 2015-06-04 09:30 (+16d) |  |  | 0d → -83.34d | 131 → 203 | baseline start 2015-05-15 14:30 → none; baseline finish 2015-05-15 16:30 → none |
| 205 | Pruebas unitarias | 2015-06-30 16:30 → 2015-06-04 09:30 (-26d) | 2015-07-01 10:30 → 2015-06-04 11:30 (-27d) | 3h → 2h |  | 0d → -83.34d | 294 → 204 | baseline start 2015-06-30 11:30 → none; baseline finish 2015-06-30 15:30 → none |
| 206 | **Autenticacion Rapida** | 2015-05-19 14:30 A → 2015-06-04 11:30 A (+16d) | 2015-05-20 10:30 A → 2015-06-05 08:30 (+16d) |  | 100% → 50% | none → 0d | 140 → 205 | baseline start 2015-05-19 09:30 → none; baseline finish 2015-05-19 15:30 → none |
| 207 | Crear funcionalidad | 2015-05-19 14:30 A → 2015-06-04 11:30 A (+16d) | 2015-05-20 08:30 A → 2015-06-04 15:30 (+15d) |  | 100% → 50% | none → -83.68d |  | baseline start 2015-05-19 09:30 → none; baseline finish 2015-05-19 13:30 → none |
| 208 | Llamado en los sitios pendientes | 2015-05-20 08:30 A → 2015-06-04 15:30 A (+15d) | 2015-05-20 10:30 A → 2015-06-05 08:30 (+16d) |  | 100% → 50% | none → 0d |  | baseline start 2015-05-19 13:30 → none; baseline finish 2015-05-19 15:30 → none |
| 209 | **Recordar Clave** | 2015-05-20 10:30 → 2015-06-05 08:30 (+16d) | 2015-05-20 14:30 → 2015-06-05 11:30 (+16d) |  |  | 0d → -83.9d |  | baseline start 2015-05-19 15:30 → none; baseline finish 2015-05-20 09:30 → none |
| 210 | Revisar funcionalidad | 2015-05-20 10:30 → 2015-06-05 08:30 (+16d) | 2015-05-20 13:30 → 2015-06-05 10:30 (+16d) |  |  | 0d → -83.9d |  | baseline start 2015-05-19 15:30 → none; baseline finish 2015-05-20 08:30 → none |
| 211 | Enviar correo | 2015-05-20 13:30 → 2015-06-05 10:30 (+16d) | 2015-05-20 14:30 → 2015-06-05 11:30 (+16d) |  |  | 0d → -83.9d |  | baseline start 2015-05-20 08:30 → none; baseline finish 2015-05-20 09:30 → none |

| ID | Task | Start | Finish | Duration | Total float | Predecessors | Other |
| --- | --- | --- | --- | --- | --- | --- | --- |
| 212 | **Listado de productos** | 2015-07-10 09:30 → 2015-06-05 11:30 (-35d) | 2015-07-13 09:30 → 2015-06-09 16:30 (-34d) | 0.89d → 2.22d | 0d → -83.9d | 291 → 209 | baseline start 2015-07-09 14:30 → none; baseline finish 2015-07-10 14:30 → none |
| 213 | Listado de productos | 2015-06-02 14:30 → 2015-06-05 11:30 (+3d) | 2015-06-03 09:30 → 2015-06-05 16:30 (+2d) |  | 0d → -83.9d |  | baseline start 2015-06-02 09:30 → none; baseline finish 2015-06-02 14:30 → none |
| 214 | Mejorar filtrado | 2015-04-27 15:30 → 2015-06-05 16:30 (+39d) | 2015-04-29 15:30 → 2015-06-09 16:30 (+41d) |  | 0d → -83.9d | 163 → 213 | baseline start 2015-04-27 10:30 → none; baseline finish 2015-04-29 10:30 → none |
| 215 | **Detalle del Producto** | 2015-04-29 15:30 → 2015-06-09 16:30 (+41d) | 2015-05-05 16:30 → 2015-06-15 08:30 (+41d) |  | 0d → -83.9d | 118 → 212 | baseline start 2015-04-29 10:30 → none; baseline finish 2015-05-05 11:30 → none |
| 216 | Revision de links y carga de info | 2015-04-29 15:30 → 2015-06-09 16:30 (+41d) | 2015-04-30 10:30 → 2015-06-10 11:30 (+41d) |  | 0d → -83.9d |  | baseline start 2015-04-29 10:30 → none; baseline finish 2015-04-29 15:30 → none |
| 217 | Comprar y notificar | 2015-04-30 10:30 → 2015-06-10 11:30 (+41d) | 2015-04-30 14:30 → 2015-06-10 15:30 (+41d) |  | 0d → -83.9d |  | baseline start 2015-04-29 15:30 → none; baseline finish 2015-04-30 09:30 → none |
| 218 | **Pestaña detalle de producto** | 2015-04-30 14:30 → 2015-06-10 15:30 (+41d) | 2015-05-04 11:30 → 2015-06-11 13:30 (+38d) |  | 0d → -83.9d |  | baseline start 2015-04-30 09:30 → none; baseline finish 2015-04-30 16:30 → none |
| 219 | Cargar caracteristcas | 2015-04-30 14:30 → 2015-06-10 15:30 (+41d) | 2015-04-30 16:30 → 2015-06-11 08:30 (+42d) |  | 0d → -83.9d |  | baseline start 2015-04-30 09:30 → none; baseline finish 2015-04-30 11:30 → none |
| 220 | Cargar HTML | 2015-04-30 16:30 → 2015-06-11 08:30 (+42d) | 2015-05-04 11:30 → 2015-06-11 13:30 (+38d) |  | 0d → -83.9d |  | baseline start 2015-04-30 11:30 → none; baseline finish 2015-04-30 16:30 → none |
| 221 | **Pestaña reviews** | 2015-05-04 11:30 → 2015-06-11 13:30 (+38d) | 2015-05-04 14:30 → 2015-06-11 15:30 (+38d) |  | 0d → -83.9d |  | baseline start 2015-04-30 16:30 → none; baseline finish 2015-05-04 09:30 → none |
| 222 | Cargar Reviews | 2015-05-04 11:30 → 2015-06-11 13:30 (+38d) | 2015-05-04 13:30 → 2015-06-11 14:30 (+38d) |  | 0d → -83.9d |  | baseline start 2015-04-30 16:30 → none; baseline finish 2015-05-04 08:30 → none |
| 223 | Quitar parcialmente opcion de nuevo review | 2015-05-04 13:30 → 2015-06-11 14:30 (+38d) | 2015-05-04 14:30 → 2015-06-11 15:30 (+38d) |  | 0d → -83.9d |  | baseline start 2015-05-04 08:30 → none; baseline finish 2015-05-04 09:30 → none |
| 224 | Quitar pestaña envios | 2015-05-04 14:30 → 2015-06-11 15:30 (+38d) | 2015-05-04 15:00 → 2015-06-11 16:00 (+38d) |  | 0d → -83.9d |  | baseline start 2015-05-04 09:30 → none; baseline finish 2015-05-04 10:00 → none |
| 225 | Quitar pestaña price match | 2015-05-04 15:00 → 2015-06-11 16:00 (+38d) | 2015-05-04 15:30 → 2015-06-11 16:30 (+38d) |  | 0d → -83.9d |  | baseline start 2015-05-04 10:00 → none; baseline finish 2015-05-04 10:30 → none |
| 226 | **Preguntas** | 2015-05-04 15:30 → 2015-06-11 16:30 (+38d) | 2015-05-05 16:30 → 2015-06-15 08:30 (+41d) |  | 0d → -83.9d |  | baseline start 2015-05-04 10:30 → none; baseline finish 2015-05-05 11:30 → none |
| 227 | BD | 2015-07-06 15:30 → 2015-06-11 16:30 (-25d) | 2015-07-07 09:30 → 2015-06-12 09:30 (-25d) | 3h → 2h | 0d → -83.9d |  | baseline start 2015-07-06 10:30 → none; baseline finish 2015-07-06 14:30 → none |
| 228 | Listar preguntas | 2015-05-05 08:30 → 2015-06-12 09:30 (+38d) | 2015-05-05 13:30 → 2015-06-12 14:30 (+38d) |  | 0d → -83.9d | 130 → 227 | baseline start 2015-05-04 13:30 → none; baseline finish 2015-05-05 08:30 → none |
| 229 | Agregar preguntas | 2015-05-05 13:30 → 2015-06-12 14:30 (+38d) | 2015-05-05 16:30 → 2015-06-15 08:30 (+41d) |  | 0d → -83.9d |  | baseline start 2015-05-05 08:30 → none; baseline finish 2015-05-05 11:30 → none |
| 230 | **Home** | 2015-05-05 16:30 → 2015-06-15 08:30 (+41d) | 2015-05-13 09:30 → 2015-06-22 10:30 (+40d) |  | 0d → -83.9d |  | baseline start 2015-05-05 11:30 → none; baseline finish 2015-05-12 14:30 → none |
| 231 | Menu de categorias | 2015-05-05 16:30 → 2015-06-15 08:30 (+41d) | 2015-05-07 09:30 → 2015-06-16 10:30 (+40d) |  | 0d → -83.9d |  | baseline start 2015-05-05 11:30 → none; baseline finish 2015-05-06 14:30 → none |
| 232 | Menu principal | 2015-05-07 09:30 → 2015-06-16 10:30 (+40d) | 2015-05-08 11:30 → 2015-06-17 13:30 (+40d) |  | 0d → -83.9d |  | baseline start 2015-05-06 14:30 → none; baseline finish 2015-05-07 16:30 → none |
| 233 | Ajustes generales | 2015-05-08 11:30 → 2015-06-17 13:30 (+40d) | 2015-05-08 16:30 → 2015-06-18 08:30 (+41d) |  | 0d → -83.9d |  | baseline start 2015-05-07 16:30 → none; baseline finish 2015-05-08 11:30 → none |
| 234 | Revision de Buscador | 2015-05-08 16:30 → 2015-06-18 08:30 (+41d) | 2015-05-12 09:30 → 2015-06-19 10:30 (+38d) |  | 0d → -83.9d |  | baseline start 2015-05-08 11:30 → none; baseline finish 2015-05-11 14:30 → none |
| 235 | Eliminación funcionalidades innecesarias | 2015-05-12 09:30 → 2015-06-19 10:30 (+38d) | 2015-05-12 14:30 → 2015-06-19 15:30 (+38d) |  | 0d → -83.9d |  | baseline start 2015-05-11 14:30 → none; baseline finish 2015-05-12 09:30 → none |
| 236 | Pruebas unitarias | 2015-07-29 15:30 → 2015-06-19 15:30 (-40d) | 2015-07-30 09:30 → 2015-06-22 10:30 (-38d) | 3h → 4h | 0d → -83.9d | 183 → 235 | baseline start 2015-07-29 10:30 → none; baseline finish 2015-07-29 14:30 → none |
| 237 | Mapa del sitio | 2015-06-11 10:30 → 2015-06-22 10:30 (+11d) | 2015-06-11 13:30 → 2015-06-22 13:30 (+11d) |  | 0d → -83.9d | 127 → 230 | baseline start 2015-06-10 15:30 → none; baseline finish 2015-06-11 08:30 → none |
| 238 | Condiciones de uso | 2015-06-11 13:30 → 2015-06-22 13:30 (+11d) | 2015-06-11 14:30 → 2015-06-22 14:30 (+11d) |  | 0d → -83.9d |  | baseline start 2015-06-11 08:30 → none; baseline finish 2015-06-11 09:30 → none |
| 239 | Contacto | 2015-06-11 14:30 → 2015-06-22 14:30 (+11d) | 2015-06-12 09:30 → 2015-06-23 09:30 (+11d) |  | 0d → -83.9d |  | baseline start 2015-06-11 09:30 → none; baseline finish 2015-06-11 14:30 → none |
| 240 | Acerca de nosotros | 2015-06-12 09:30 → 2015-06-23 09:30 (+11d) | 2015-06-12 11:30 → 2015-06-23 11:30 (+11d) |  | 0d → -83.9d |  | baseline start 2015-06-11 14:30 → none; baseline finish 2015-06-11 16:30 → none |
| 241 | Ajustes adicionales | 2015-06-12 11:30 → 2015-06-23 11:30 (+11d) | 2015-06-18 15:30 → 2015-06-26 15:30 (+8d) |  | 0d → -83.9d |  | baseline start 2015-06-11 16:30 → none; baseline finish 2015-06-18 10:30 → none |
| 242 | **Diseño Web** | 2015-03-27 08:00 → 2015-03-30 15:30 (+3d) | 2015-05-21 11:00 → 2015-05-14 08:10 (-7d) | 31.44d → 28.63d | 4.81d → -47.64d | none → 2 | baseline start 2015-03-27 15:30 → none; baseline finish 2015-05-22 09:30 → none |
| 243 | Visuales | 2015-03-27 08:00 → 2015-03-30 15:30 (+3d) | 2015-03-30 09:00 → 2015-03-31 16:30 (+1d) |  | 1.17d → -47.64d |  | constraint start no earlier than 2015-03-27 08:00 → none; baseline start 2015-03-27 15:30 → none; baseline finish 2015-03-30 16:30 → none |
| 244 | Home | 2015-03-30 09:00 → 2015-03-31 16:30 (+1d) | 2015-03-31 10:00 → 2015-04-02 08:30 (+2d) |  | 1.17d → -47.64d |  | constraint start no earlier than 2015-03-26 08:00 → none; baseline start 2015-03-30 16:30 → none; baseline finish 2015-04-01 08:30 → none |
| 245 | **Panel de Control** | 2015-03-31 10:00 → 2015-04-02 08:30 (+2d) | 2015-04-28 15:00 → 2015-04-24 13:10 (-4d) | 16.44d → 14.63d | 4.81d → -47.64d |  | baseline start 2015-04-01 08:30 → none; baseline finish 2015-04-29 13:30 → none |
| 246 | **Publicacion Producto** | 2015-04-08 10:00 → 2015-04-02 08:30 (-6d) | 2015-04-13 15:00 → 2015-04-07 09:22 (-6d) | 3.11d → 2.76d | 4.81d → -47.64d | 259 → none | baseline start 2015-04-09 08:30 → none; baseline finish 2015-04-14 13:30 → none |
| 247 | Paso1 | 2015-04-08 10:00 → 2015-04-02 08:30 (-6d) | 2015-04-08 15:00 → 2015-04-02 13:01 (-6d) | 0.44d → 0.39d | 1.17d → -47.64d |  | baseline start 2015-04-09 08:30 → none; baseline finish 2015-04-09 13:30 → none |
| 248 | Paso2 | 2015-04-08 15:00 → 2015-04-02 13:01 (-6d) | 2015-04-09 15:00 → 2015-04-03 11:08 (-6d) | 0.89d → 0.79d | 1.17d → -47.64d |  | baseline start 2015-04-09 13:30 → none; baseline finish 2015-04-10 13:30 → none |
| 249 | Paso3 | 2015-04-09 15:00 → 2015-04-03 11:08 (-6d) | 2015-04-10 15:00 → 2015-04-06 10:15 (-4d) | 0.89d → 0.79d | 1.17d → -47.64d |  | baseline start 2015-04-10 13:30 → none; baseline finish 2015-04-13 13:30 → none |
| 250 | Paso4 | 2015-04-10 15:00 → 2015-04-06 10:15 (-4d) | 2015-04-13 15:00 → 2015-04-07 09:22 (-6d) | 0.89d → 0.79d | 1.17d → -47.64d |  | baseline start 2015-04-13 13:30 → none; baseline finish 2015-04-14 13:30 → none |
| 251 | Home Panel De Control | 2015-03-31 10:00 → 2015-04-07 09:22 (+7d) | 2015-04-01 10:00 → 2015-04-08 08:30 (+7d) | 0.89d → 0.79d | 1.17d → -47.64d | none → 246 | baseline start 2015-04-01 08:30 → none; baseline finish 2015-04-06 08:30 → none |
| 252 | **Publicacion Moto** | 2015-04-13 15:00 → 2015-04-08 08:30 (-5d) | 2015-04-17 15:00 → 2015-04-13 13:58 (-4d) | 3.56d → 3.16d | 4.81d → -47.64d | 246 → 251 | baseline start 2015-04-14 13:30 → none; baseline finish 2015-04-20 13:30 → none |
| 253 | Paso1 | 2015-04-13 15:00 → 2015-04-08 08:30 (-5d) | 2015-04-14 15:00 → 2015-04-08 16:37 (-6d) | 0.89d → 0.79d | 4.28d → -47.64d |  | baseline start 2015-04-14 13:30 → none; baseline finish 2015-04-15 13:30 → none |
| 254 | Paso2 | 2015-04-14 15:00 → 2015-04-08 16:37 (-6d) | 2015-04-15 15:00 → 2015-04-09 15:44 (-6d) | 0.89d → 0.79d | 4.28d → -47.64d |  | baseline start 2015-04-15 13:30 → none; baseline finish 2015-04-16 13:30 → none |
| 255 | Paso3 | 2015-04-15 15:00 → 2015-04-09 15:44 (-6d) | 2015-04-16 15:00 → 2015-04-10 14:51 (-6d) | 0.89d → 0.79d | 4.28d → -47.64d |  | baseline start 2015-04-16 13:30 → none; baseline finish 2015-04-17 13:30 → none |
| 256 | Paso4 | 2015-04-16 15:00 → 2015-04-10 14:51 (-6d) | 2015-04-17 15:00 → 2015-04-13 13:58 (-4d) | 0.89d → 0.79d | 4.28d → -47.64d |  | baseline start 2015-04-17 13:30 → none; baseline finish 2015-04-20 13:30 → none |
| 257 | Actualizacion de datos | 2015-04-01 10:00 → 2015-04-13 13:58 (+12d) | 2015-04-06 10:00 → 2015-04-14 13:06 (+8d) | 0.89d → 0.79d | 1.17d → -47.64d | 251 → 252 | baseline start 2015-04-06 08:30 → none; baseline finish 2015-04-07 08:30 → none |
| 258 | Cambiar Clave | 2015-04-06 10:00 → 2015-04-14 13:06 (+8d) | 2015-04-07 10:00 → 2015-04-15 11:13 (+8d) | 0.89d → 0.79d | 1.17d → -47.64d |  | baseline start 2015-04-07 08:30 → none; baseline finish 2015-04-08 08:30 → none |
| 259 | Seleccionar tipo de producto | 2015-04-07 10:00 → 2015-04-15 11:13 (+8d) | 2015-04-08 10:00 → 2015-04-16 10:20 (+8d) | 0.89d → 0.79d | 1.17d → -47.64d |  | baseline start 2015-04-08 08:30 → none; baseline finish 2015-04-09 08:30 → none |
| 260 | Mensajes Recibidos | 2015-04-17 15:00 → 2015-04-16 10:20 (-1d) | 2015-04-20 15:00 → 2015-04-17 09:27 (-3d) | 0.89d → 0.79d | 22.39d → -47.64d | 252 → 259 | baseline start 2015-04-20 13:30 → none; baseline finish 2015-04-21 13:30 → none |
| 261 | Mis Compras | 2015-04-20 15:00 → 2015-04-17 09:27 (-3d) | 2015-04-21 15:00 → 2015-04-20 08:34 (-1d) | 0.89d → 0.79d | 22.39d → -47.64d |  | baseline start 2015-04-21 13:30 → none; baseline finish 2015-04-22 13:30 → none |
| 262 | Calificar | 2015-04-21 15:00 → 2015-04-20 08:34 (-1d) | 2015-04-22 15:00 → 2015-04-20 16:42 (-2d) | 0.89d → 0.79d | 22.39d → -47.64d |  | baseline start 2015-04-22 13:30 → none; baseline finish 2015-04-23 13:30 → none |
| 263 | Mis Ventas | 2015-04-22 15:00 → 2015-04-20 16:42 (-2d) | 2015-04-23 15:00 → 2015-04-21 15:49 (-2d) | 0.89d → 0.79d | 22.39d → -47.64d |  | baseline start 2015-04-23 13:30 → none; baseline finish 2015-04-24 13:30 → none |
| 264 | Mis Productos | 2015-04-23 15:00 → 2015-04-21 15:49 (-2d) | 2015-04-24 15:00 → 2015-04-22 14:56 (-2d) | 0.89d → 0.79d | 22.39d → -47.64d |  | baseline start 2015-04-24 13:30 → none; baseline finish 2015-04-27 13:30 → none |
| 265 | Responder Preguntas | 2015-04-24 15:00 → 2015-04-22 14:56 (-2d) | 2015-04-27 15:00 → 2015-04-23 14:03 (-4d) | 0.89d → 0.79d | 22.39d → -47.64d |  | baseline start 2015-04-27 13:30 → none; baseline finish 2015-04-28 13:30 → none |
| 266 | Mis Datos | 2015-04-27 15:00 → 2015-04-23 14:03 (-4d) | 2015-04-28 15:00 → 2015-04-24 13:10 (-4d) | 0.89d → 0.79d | 22.39d → -47.64d |  | baseline start 2015-04-28 13:30 → none; baseline finish 2015-04-29 13:30 → none |
| 267 | Registro | 2015-04-28 15:00 → 2015-04-24 13:10 (-4d) | 2015-04-29 16:00 → 2015-04-27 14:10 (-2d) |  | 22.39d → -47.64d |  | baseline start 2015-04-29 13:30 → none; baseline finish 2015-04-30 14:30 → none |
| 268 | Autenticacion | 2015-04-29 16:00 → 2015-04-27 14:10 (-2d) | 2015-04-30 17:00 → 2015-04-28 15:10 (-2d) |  | 22.39d → -47.64d |  | baseline start 2015-04-30 14:30 → none; baseline finish 2015-05-04 15:30 → none |
| 269 | Recordar Clave | 2015-05-04 08:00 → 2015-04-28 15:10 (-6d) | 2015-05-05 09:00 → 2015-04-29 16:10 (-6d) |  | 22.39d → -47.64d |  | baseline start 2015-05-04 15:30 → none; baseline finish 2015-05-05 16:30 → none |
| 270 | Listado de productos | 2015-05-05 09:00 → 2015-04-29 16:10 (-6d) | 2015-05-06 10:00 → 2015-05-01 08:10 (-5d) |  | 22.39d → -47.64d |  | baseline start 2015-05-05 16:30 → none; baseline finish 2015-05-07 08:30 → none |
| 271 | Detalle del producto | 2015-05-06 10:00 → 2015-05-01 08:10 (-5d) | 2015-05-07 11:00 → 2015-05-04 08:10 (-3d) | 1d → 0.89d | 22.39d → -47.64d |  | baseline start 2015-05-07 08:30 → none; baseline finish 2015-05-08 09:30 → none |
| 272 | Detalle vendedor usuario | 2015-05-07 11:00 → 2015-05-04 08:10 (-3d) | 2015-05-08 12:00 → 2015-05-05 08:10 (-3d) | 1d → 0.89d | 22.39d → -47.64d |  | baseline start 2015-05-08 09:30 → none; baseline finish 2015-05-11 10:30 → none |
| 273 | Preguntar a Vendedor | 2015-05-08 13:00 → 2015-05-05 08:10 (-3d) | 2015-05-11 14:00 → 2015-05-06 08:10 (-5d) | 1d → 0.89d | 22.39d → -47.64d |  | baseline start 2015-05-11 10:30 → none; baseline finish 2015-05-12 11:30 → none |
| 274 | Panel de notificaciones | 2015-05-11 14:00 → 2015-05-06 08:10 (-5d) | 2015-05-12 15:00 → 2015-05-07 08:10 (-5d) | 1d → 0.89d | 22.39d → -47.64d |  | baseline start 2015-05-12 11:30 → none; baseline finish 2015-05-13 13:30 → none |
| 275 | Newsletter | 2015-05-12 15:00 → 2015-05-07 08:10 (-5d) | 2015-05-13 16:00 → 2015-05-08 08:10 (-5d) | 1d → 0.89d | 22.39d → -47.64d |  | baseline start 2015-05-13 13:30 → none; baseline finish 2015-05-14 14:30 → none |
| 276 | Mapa del sitio | 2015-05-13 16:00 → 2015-05-08 08:10 (-5d) | 2015-05-14 17:00 → 2015-05-11 08:10 (-3d) | 1d → 0.89d | 22.39d → -47.64d |  | baseline start 2015-05-14 14:30 → none; baseline finish 2015-05-15 15:30 → none |
| 277 | Condiciones de uso | 2015-05-15 08:00 → 2015-05-11 08:10 (-4d) | 2015-05-19 09:00 → 2015-05-12 08:10 (-7d) | 1d → 0.89d | 22.39d → -47.64d |  | baseline start 2015-05-15 15:30 → none; baseline finish 2015-05-19 16:30 → none |
| 278 | Contacto | 2015-05-19 09:00 → 2015-05-12 08:10 (-7d) | 2015-05-20 10:00 → 2015-05-13 08:10 (-7d) | 1d → 0.89d | 22.39d → -47.64d |  | baseline start 2015-05-19 16:30 → none; baseline finish 2015-05-21 08:30 → none |
| 279 | Acerca de nosotros | 2015-05-20 10:00 → 2015-05-13 08:10 (-7d) | 2015-05-21 11:00 → 2015-05-14 08:10 (-7d) | 1d → 0.89d | 22.39d → -47.64d |  | baseline start 2015-05-21 08:30 → none; baseline finish 2015-05-22 09:30 → none |
| 280 | **Pruebas** | 2015-06-12 11:30 → 2015-06-26 15:30 (+14d) | 2015-06-30 13:30 → 2015-07-06 15:30 (+6d) | 9d → 5.33d | 0d → -83.9d | none → 12 | baseline start 2015-06-11 16:30 → none; baseline finish 2015-06-30 08:30 → none |
| 281 | Pruebas Generales | 2015-06-12 11:30 → 2015-06-26 15:30 (+14d) | 2015-06-18 15:30 → 2015-07-01 15:30 (+13d) | 3d → 2.67d | 6d → -83.9d | 240 → none | baseline start 2015-06-11 16:30 → none; baseline finish 2015-06-18 10:30 → none |

| ID | Task | Start | Finish | Duration | Total float | Predecessors | Other |
| --- | --- | --- | --- | --- | --- | --- | --- |
| 282 | Correciones | 2015-06-18 15:30 → 2015-07-01 15:30 (+13d) | 2015-06-24 09:30 → 2015-07-06 15:30 (+12d) | 3d → 2.67d | 0d → -83.9d | 241 → 281 | baseline start 2015-06-18 10:30 → none; baseline finish 2015-06-23 14:30 → none |
| 283 | Primeras visitas cliente | 2015-06-24 09:30 → 2015-07-06 15:30 (+12d) | 2015-06-30 13:30 → 2015-07-09 15:30 (+9d) | 3d → 2.67d | 0d → -83.9d | 282 → 280 | baseline start 2015-06-23 14:30 → none; baseline finish 2015-06-30 08:30 → none |
| 284 | **Fase 2 (Tienda)** | 2015-06-30 13:30 → 2015-07-09 15:30 (+9d) | 2015-07-23 14:30 → 2015-07-17 16:51 (-6d) | 14.33d → 5.48d | 0d → -83.9d |  | baseline start 2015-06-30 08:30 → none; baseline finish 2015-07-23 09:30 → none |
| 285 | **Desarrollo** | 2015-06-30 13:30 → 2015-07-09 15:30 (+9d) | 2015-07-14 14:30 → 2015-07-15 10:30 (+1d) | 9d → 3.11d | 0d → -83.9d |  | baseline start 2015-06-30 08:30 → none; baseline finish 2015-07-14 09:30 → none |
| 286 | **Detalle del Vendedor (Usuario)** | 2015-05-20 14:30 → 2015-07-09 15:30 (+50d) | 2015-05-25 11:30 → 2015-07-14 13:30 (+50d) |  | 0d → -83.9d | 209 → none | baseline start 2015-05-20 09:30 → none; baseline finish 2015-05-22 16:30 → none |
| 287 | Acceso a datos | 2015-07-27 10:30 → 2015-07-09 15:30 (-18d) | 2015-07-27 15:30 → 2015-07-10 10:30 (-17d) |  | 0d → -83.9d |  | baseline start 2015-07-24 15:30 → none; baseline finish 2015-07-27 10:30 → none |
| 288 | Informacion Básica | 2015-05-21 09:30 → 2015-07-10 10:30 (+50d) | 2015-05-21 13:30 → 2015-07-10 14:30 (+50d) |  | 0d → -83.9d | 92 → 287 | baseline start 2015-05-20 14:30 → none; baseline finish 2015-05-21 08:30 → none |
| 289 | Comentarios Recibidos | 2015-05-21 13:30 → 2015-07-10 14:30 (+50d) | 2015-05-21 16:30 → 2015-07-13 08:30 (+53d) |  | 0d → -83.9d |  | baseline start 2015-05-21 08:30 → none; baseline finish 2015-05-21 11:30 → none |
| 290 | Enviar mensaje prviado | 2015-05-21 16:30 → 2015-07-13 08:30 (+53d) | 2015-05-22 13:30 → 2015-07-13 14:30 (+52d) |  | 0d → -83.9d |  | baseline start 2015-05-21 11:30 → none; baseline finish 2015-05-22 08:30 → none |
| 291 | Contar experiencia | 2015-07-10 08:30 → 2015-07-13 14:30 (+3d) | 2015-07-10 09:30 → 2015-07-14 10:30 (+4d) | 1h → 5h | 0d → -83.9d | 116 → 290 | baseline start 2015-07-09 13:30 → none; baseline finish 2015-07-09 14:30 → none |
| 292 | Enviar correos de notificación | 2015-05-25 09:30 → 2015-07-14 10:30 (+50d) | 2015-05-25 11:30 → 2015-07-14 13:30 (+50d) |  | 0d → -83.9d | 117 → 291 | baseline start 2015-05-22 14:30 → none; baseline finish 2015-05-22 16:30 → none |
| 293 | **Categorias** | 2015-06-30 13:30 → 2015-07-14 13:30 (+14d) | 2015-07-01 10:30 → 2015-07-15 10:30 (+14d) |  | 0d → -83.9d | none → 286 | baseline start 2015-06-30 08:30 → none; baseline finish 2015-06-30 15:30 → none |
| 294 | Revision de funcionalidad correcta | 2015-06-30 13:30 → 2015-07-14 13:30 (+14d) | 2015-06-30 16:30 → 2015-07-14 16:30 (+14d) |  | 0d → -83.9d |  | baseline start 2015-06-30 08:30 → none; baseline finish 2015-06-30 11:30 → none |
| 295 | Pruebas unitarias | 2015-07-31 08:30 → 2015-07-14 16:30 (-17d) | 2015-07-31 10:30 → 2015-07-15 10:30 (-16d) | 2h → 3h | 0d → -83.9d | 109 → 294 | baseline start 2015-07-30 13:30 → none; baseline finish 2015-07-30 15:30 → none |
| 296 | **Diseño Web** | 2015-06-30 13:30 → 2015-07-09 15:30 (+9d) | 2015-07-03 13:30 → 2015-07-14 11:51 (+11d) | 2.67d → 2.37d | 11.67d → -83.16d | 242 → 11 | baseline start 2015-06-30 08:30 → none; baseline finish 2015-07-03 08:30 → none |
| 297 | Categorias | 2015-06-30 13:30 → 2015-07-09 15:30 (+9d) | 2015-07-01 13:30 → 2015-07-10 14:37 (+9d) | 0.89d → 0.79d | 11.67d → -83.16d |  | baseline start 2015-06-30 08:30 → none; baseline finish 2015-07-01 08:30 → none |
| 298 | Detalle Tienda | 2015-07-01 13:30 → 2015-07-10 14:37 (+9d) | 2015-07-02 13:30 → 2015-07-13 13:44 (+11d) | 0.89d → 0.79d | 11.67d → -83.16d |  | baseline start 2015-07-01 08:30 → none; baseline finish 2015-07-02 08:30 → none |
| 299 | Actualizacion de Tienda | 2015-07-02 13:30 → 2015-07-13 13:44 (+11d) | 2015-07-03 13:30 → 2015-07-14 11:51 (+11d) | 0.89d → 0.79d | 11.67d → -83.16d |  | baseline start 2015-07-02 08:30 → none; baseline finish 2015-07-03 08:30 → none |
| 300 | Pruebas Generales | 2015-07-14 14:30 → 2015-07-14 11:51 | 2015-07-17 14:30 → 2015-07-17 09:13 | 2.67d → 2.37d | 0d → -83.16d | 285 → 296 | baseline start 2015-07-14 09:30 → none; baseline finish 2015-07-17 09:30 → none |
| 301 | Correciones | 2015-07-17 14:30 → 2015-07-15 10:30 (-2d) | 2015-07-23 14:30 → 2015-07-17 16:51 (-6d) | 2.67d → 2.37d | 0d → -83.9d | 300 → 285 | baseline start 2015-07-17 09:30 → none; baseline finish 2015-07-23 09:30 → none |
| 302 | **Fase 3 (Cotizaciones)** | 2015-07-23 14:30 → 2015-07-17 16:51 (-6d) | 2015-08-27 11:00 → 2015-08-11 11:04 (-16d) | 20.17d → 14.58d | 0d → -83.9d |  | baseline start 2015-07-23 09:30 → none; baseline finish 2015-08-26 16:00 → none |
| 303 | **Desarrollo** | 2015-07-23 14:30 → 2015-07-17 16:51 (-6d) | 2015-08-19 11:00 → 2015-08-04 08:21 (-15d) | 14.83d → 9.83d | 0d → -83.9d |  | baseline start 2015-07-23 09:30 → none; baseline finish 2015-08-18 16:00 → none |
| 304 | **Publicar Cotizacion** | 2015-07-31 10:30 → 2015-07-17 16:51 (-14d) | 2015-08-04 15:00 → 2015-07-22 11:21 (-13d) |  | 0d → -83.9d | Publicacion Producto → none | baseline start 2015-07-30 15:30 → none; baseline finish 2015-08-04 10:00 → none |
| 305 | BD | 2015-07-31 10:30 → 2015-07-17 16:51 (-14d) | 2015-07-31 14:30 → 2015-07-20 10:51 (-11d) |  | 0d → -83.9d |  | baseline start 2015-07-30 15:30 → none; baseline finish 2015-07-31 09:30 → none |
| 306 | Datos basicos | 2015-07-31 14:30 → 2015-07-20 10:51 (-11d) | 2015-08-03 08:30 → 2015-07-20 14:51 (-14d) |  | 0d → -83.9d |  | baseline start 2015-07-31 09:30 → none; baseline finish 2015-07-31 13:30 → none |
| 307 | Cambiar ubicacion | 2015-08-03 08:30 → 2015-07-20 14:51 (-14d) | 2015-08-03 10:30 → 2015-07-20 16:51 (-14d) |  | 0d → -83.9d |  | baseline start 2015-07-31 13:30 → none; baseline finish 2015-07-31 15:30 → none |
| 308 | Cambiar moto | 2015-08-03 10:30 → 2015-07-20 16:51 (-14d) | 2015-08-03 14:30 → 2015-07-21 10:51 (-13d) |  | 0d → -83.9d |  | baseline start 2015-07-31 15:30 → none; baseline finish 2015-08-03 09:30 → none |
| 309 | Cargar posibles problemas | 2015-08-03 14:30 → 2015-07-21 10:51 (-13d) | 2015-08-04 09:30 → 2015-07-21 15:51 (-14d) |  | 0d → -83.9d |  | baseline start 2015-08-03 09:30 → none; baseline finish 2015-08-03 14:30 → none |
| 310 | Cargar imagenes | 2015-08-04 09:30 → 2015-07-21 15:51 (-14d) | 2015-08-04 11:00 → 2015-07-22 08:21 (-13d) |  | 0d → -83.9d |  | baseline start 2015-08-03 14:30 → none; baseline finish 2015-08-03 16:00 → none |
| 311 | Pruebas unitarias | 2015-08-04 11:00 → 2015-07-22 08:21 (-13d) | 2015-08-04 15:00 → 2015-07-22 11:21 (-13d) |  | 0d → -83.9d |  | baseline start 2015-08-03 16:00 → none; baseline finish 2015-08-04 10:00 → none |
| 312 | **Mis Cotizaciones (Taller)** | 2015-08-04 15:00 → 2015-07-22 11:21 (-13d) | 2015-08-06 16:00 → 2015-07-24 13:21 (-13d) |  | 0d → -83.9d |  | baseline start 2015-08-04 10:00 → none; baseline finish 2015-08-06 11:00 → none |
| 313 | Mostrar indicadores | 2015-08-04 15:00 → 2015-07-22 11:21 (-13d) | 2015-08-05 09:00 → 2015-07-22 15:21 (-14d) |  | 0d → -83.9d |  | baseline start 2015-08-04 10:00 → none; baseline finish 2015-08-04 14:00 → none |
| 314 | Cargar filtros | 2015-08-05 09:00 → 2015-07-22 15:21 (-14d) | 2015-08-05 15:00 → 2015-07-23 11:21 (-13d) |  | 0d → -83.9d |  | baseline start 2015-08-04 14:00 → none; baseline finish 2015-08-05 10:00 → none |
| 315 | Listado de cotizaciones | 2015-08-05 15:00 → 2015-07-23 11:21 (-13d) | 2015-08-06 09:00 → 2015-07-23 15:21 (-14d) |  | 0d → -83.9d |  | baseline start 2015-08-05 10:00 → none; baseline finish 2015-08-05 14:00 → none |
| 316 | Paginacion | 2015-08-06 09:00 → 2015-07-23 15:21 (-14d) | 2015-08-06 11:00 → 2015-07-24 08:21 (-13d) |  | 0d → -83.9d |  | baseline start 2015-08-05 14:00 → none; baseline finish 2015-08-05 16:00 → none |
| 317 | BD | 2015-08-06 11:00 → 2015-07-24 08:21 (-13d) | 2015-08-06 14:00 → 2015-07-24 10:21 (-13d) |  | 0d → -83.9d |  | baseline start 2015-08-05 16:00 → none; baseline finish 2015-08-06 09:00 → none |
| 318 | Pruebas unitarias | 2015-08-06 14:00 → 2015-07-24 10:21 (-13d) | 2015-08-06 16:00 → 2015-07-24 13:21 (-13d) |  | 0d → -83.9d |  | baseline start 2015-08-06 09:00 → none; baseline finish 2015-08-06 11:00 → none |
| 319 | **Detalle Cotizacion(Taller)** | 2015-08-06 16:00 → 2015-07-24 13:21 (-13d) | 2015-08-12 09:00 → 2015-07-28 15:21 (-15d) |  | 0d → -83.9d |  | baseline start 2015-08-06 11:00 → none; baseline finish 2015-08-11 14:00 → none |
| 320 | BD | 2015-08-06 16:00 → 2015-07-24 13:21 (-13d) | 2015-08-10 10:00 → 2015-07-24 16:21 (-17d) |  | 0d → -83.9d |  | baseline start 2015-08-06 11:00 → none; baseline finish 2015-08-06 15:00 → none |
| 321 | Indicadores | 2015-08-10 10:00 → 2015-07-24 16:21 (-17d) | 2015-08-10 12:00 → 2015-07-27 09:21 (-14d) |  | 0d → -83.9d |  | baseline start 2015-08-06 15:00 → none; baseline finish 2015-08-06 17:00 → none |
| 322 | Informacion de la solciitud | 2015-08-10 13:00 → 2015-07-27 09:21 (-14d) | 2015-08-10 16:00 → 2015-07-27 13:21 (-14d) |  | 0d → -83.9d |  | baseline start 2015-08-10 08:00 → none; baseline finish 2015-08-10 11:00 → none |
| 323 | Imagenes | 2015-08-10 16:00 → 2015-07-27 13:21 (-14d) | 2015-08-11 09:00 → 2015-07-27 15:21 (-15d) |  | 0d → -83.9d |  | baseline start 2015-08-10 11:00 → none; baseline finish 2015-08-10 14:00 → none |
| 324 | **Propuesta** | 2015-08-11 09:00 → 2015-07-27 15:21 (-15d) | 2015-08-11 14:00 → 2015-07-28 10:21 (-14d) |  | 0d → -83.9d |  | baseline start 2015-08-10 14:00 → none; baseline finish 2015-08-11 09:00 → none |
| 325 | Datos basicos | 2015-08-11 09:00 → 2015-07-27 15:21 (-15d) | 2015-08-11 10:00 → 2015-07-27 16:21 (-15d) |  | 0d → -83.9d |  | baseline start 2015-08-10 14:00 → none; baseline finish 2015-08-10 15:00 → none |
| 326 | Responder | 2015-08-11 10:00 → 2015-07-27 16:21 (-15d) | 2015-08-11 14:00 → 2015-07-28 10:21 (-14d) |  | 0d → -83.9d |  | baseline start 2015-08-10 15:00 → none; baseline finish 2015-08-11 09:00 → none |
| 327 | Mensajes anteriores | 2015-08-11 14:00 → 2015-07-28 10:21 (-14d) | 2015-08-12 09:00 → 2015-07-28 15:21 (-15d) |  | 0d → -83.9d |  | baseline start 2015-08-11 09:00 → none; baseline finish 2015-08-11 14:00 → none |
| 328 | **Mis Cotizaciones(Persona)** | 2015-08-12 09:00 → 2015-07-28 15:21 (-15d) | 2015-08-13 16:00 → 2015-07-30 13:21 (-14d) |  | 0d → -83.9d |  | baseline start 2015-08-11 14:00 → none; baseline finish 2015-08-13 11:00 → none |
| 329 | BD | 2015-08-12 09:00 → 2015-07-28 15:21 (-15d) | 2015-08-12 11:00 → 2015-07-29 08:21 (-14d) |  | 0d → -83.9d |  | baseline start 2015-08-11 14:00 → none; baseline finish 2015-08-11 16:00 → none |
| 330 | Indicadores | 2015-08-12 11:00 → 2015-07-29 08:21 (-14d) | 2015-08-12 14:00 → 2015-07-29 10:21 (-14d) |  | 0d → -83.9d |  | baseline start 2015-08-11 16:00 → none; baseline finish 2015-08-12 09:00 → none |
| 331 | Filtro | 2015-08-12 14:00 → 2015-07-29 10:21 (-14d) | 2015-08-12 16:00 → 2015-07-29 13:21 (-14d) |  | 0d → -83.9d |  | baseline start 2015-08-12 09:00 → none; baseline finish 2015-08-12 11:00 → none |
| 332 | Listado de propuestas | 2015-08-12 16:00 → 2015-07-29 13:21 (-14d) | 2015-08-13 11:00 → 2015-07-30 08:21 (-14d) |  | 0d → -83.9d |  | baseline start 2015-08-12 11:00 → none; baseline finish 2015-08-12 16:00 → none |
| 333 | Paginacion | 2015-08-13 11:00 → 2015-07-30 08:21 (-14d) | 2015-08-13 14:00 → 2015-07-30 10:21 (-14d) |  | 0d → -83.9d |  | baseline start 2015-08-12 16:00 → none; baseline finish 2015-08-13 09:00 → none |
| 334 | Pruebas unitarias | 2015-08-13 14:00 → 2015-07-30 10:21 (-14d) | 2015-08-13 16:00 → 2015-07-30 13:21 (-14d) |  | 0d → -83.9d |  | baseline start 2015-08-13 09:00 → none; baseline finish 2015-08-13 11:00 → none |
| 335 | **Detalle Cotizacion(Persona)** | 2015-08-13 16:00 → 2015-07-30 13:21 (-14d) | 2015-08-19 11:00 → 2015-08-04 08:21 (-15d) |  | 0d → -83.9d |  | baseline start 2015-08-13 11:00 → none; baseline finish 2015-08-18 16:00 → none |
| 336 | BD | 2015-08-13 16:00 → 2015-07-30 13:21 (-14d) | 2015-08-14 10:00 → 2015-07-30 16:21 (-15d) |  | 0d → -83.9d |  | baseline start 2015-08-13 11:00 → none; baseline finish 2015-08-13 15:00 → none |
| 337 | Detalle de la solicitud | 2015-08-14 10:00 → 2015-07-30 16:21 (-15d) | 2015-08-14 12:00 → 2015-07-31 09:21 (-14d) |  | 0d → -83.9d |  | baseline start 2015-08-13 15:00 → none; baseline finish 2015-08-13 17:00 → none |
| 338 | Listado de propuestas | 2015-08-14 13:00 → 2015-07-31 09:21 (-14d) | 2015-08-14 17:00 → 2015-07-31 14:21 (-14d) |  | 0d → -83.9d |  | baseline start 2015-08-14 08:00 → none; baseline finish 2015-08-14 12:00 → none |
| 339 | Detalle de propuesta | 2015-08-18 08:00 → 2015-07-31 14:21 (-18d) | 2015-08-18 11:00 → 2015-08-03 08:21 (-15d) |  | 0d → -83.9d |  | baseline start 2015-08-14 13:00 → none; baseline finish 2015-08-14 16:00 → none |
| 340 | Aceptar/Rechazar propiesta | 2015-08-18 11:00 → 2015-08-03 08:21 (-15d) | 2015-08-18 14:00 → 2015-08-03 10:21 (-15d) |  | 0d → -83.9d |  | baseline start 2015-08-14 16:00 → none; baseline finish 2015-08-18 09:00 → none |
| 341 | Responder mensajes | 2015-08-18 14:00 → 2015-08-03 10:21 (-15d) | 2015-08-18 17:00 → 2015-08-03 14:21 (-15d) |  | 0d → -83.9d |  | baseline start 2015-08-18 09:00 → none; baseline finish 2015-08-18 12:00 → none |
| 342 | Pruebas unitarias | 2015-08-19 08:00 → 2015-08-03 14:21 (-16d) | 2015-08-19 11:00 → 2015-08-04 08:21 (-15d) |  | 0d → -83.9d |  | baseline start 2015-08-18 13:00 → none; baseline finish 2015-08-18 16:00 → none |
| 343 | **Diseño Web** | 2015-07-23 14:30 → 2015-07-17 16:51 (-6d) | 2015-08-04 14:30 → 2015-07-29 16:56 (-6d) | 7.11d → 7.12d | 13.06d → -76.44d | 300 → 284 | baseline start 2015-07-23 09:30 → none; baseline finish 2015-08-04 09:30 → none |
| 345 | Paso1 | 2015-07-23 14:30 → 2015-07-20 15:58 (-3d) | 2015-07-24 14:30 → 2015-07-21 15:06 (-3d) | 0.89d → 0.79d | 13.06d → -76.44d | none → 344 | baseline start 2015-07-23 09:30 → none; baseline finish 2015-07-24 09:30 → none |
| 346 | Paso2 | 2015-07-24 14:30 → 2015-07-21 15:06 (-3d) | 2015-07-27 14:30 → 2015-07-22 14:13 (-5d) | 0.89d → 0.79d | 13.06d → -76.44d |  | baseline start 2015-07-24 09:30 → none; baseline finish 2015-07-27 09:30 → none |
| 347 | Paso3 | 2015-07-27 14:30 → 2015-07-22 14:13 (-5d) | 2015-07-28 14:30 → 2015-07-23 13:20 (-5d) | 0.89d → 0.79d | 13.06d → -76.44d |  | baseline start 2015-07-27 09:30 → none; baseline finish 2015-07-28 09:30 → none |
| 348 | Publicar Cotizacion | 2015-07-28 14:30 → 2015-07-23 13:20 (-5d) | 2015-07-29 14:30 → 2015-07-24 11:27 (-5d) | 0.89d → 0.79d | 13.06d → -76.44d | Publicacion Servicio → 347 | baseline start 2015-07-28 09:30 → none; baseline finish 2015-07-29 09:30 → none |
| 349 | Mis Cotizaciones (Taller) | 2015-07-29 14:30 → 2015-07-24 11:27 (-5d) | 2015-07-30 14:30 → 2015-07-27 10:34 (-3d) | 0.89d → 0.79d | 13.06d → -76.44d |  | baseline start 2015-07-29 09:30 → none; baseline finish 2015-07-30 09:30 → none |
| 350 | Detalle Cotizacion(Taller) | 2015-07-30 14:30 → 2015-07-27 10:34 (-3d) | 2015-07-31 14:30 → 2015-07-28 09:42 (-3d) | 0.89d → 0.79d | 13.06d → -76.44d |  | baseline start 2015-07-30 09:30 → none; baseline finish 2015-07-31 09:30 → none |
| 351 | Mis Cotizaciones(Persona) | 2015-07-31 14:30 → 2015-07-28 09:42 (-3d) | 2015-08-03 14:30 → 2015-07-29 08:49 (-5d) | 0.89d → 0.79d | 13.06d → -76.44d |  | baseline start 2015-07-31 09:30 → none; baseline finish 2015-08-03 09:30 → none |
| 352 | Detalle Cotizacion(Persona) | 2015-08-03 14:30 → 2015-07-29 08:49 (-5d) | 2015-08-04 14:30 → 2015-07-29 16:56 (-6d) | 0.89d → 0.79d | 13.06d → -76.44d |  | baseline start 2015-08-03 09:30 → none; baseline finish 2015-08-04 09:30 → none |

| ID | Task | Start | Finish | Duration | Total float | Other |
| --- | --- | --- | --- | --- | --- | --- |
| 353 | Pruebas Generales | 2015-08-19 11:00 → 2015-08-04 08:21 (-15d) | 2015-08-24 11:00 → 2015-08-06 14:43 (-18d) | 2.67d → 2.37d | 0d → -83.9d | baseline start 2015-08-18 16:00 → none; baseline finish 2015-08-21 16:00 → none |
| 354 | Correciones | 2015-08-24 11:00 → 2015-08-06 14:43 (-18d) | 2015-08-27 11:00 → 2015-08-11 11:04 (-16d) | 2.67d → 2.37d | 0d → -83.9d | baseline start 2015-08-21 16:00 → none; baseline finish 2015-08-26 16:00 → none |

## Version 9 (data date 2015-03-26, saved 2015-05-08, file Cronograma.mpp)

Note of the change: Se guardan los servicios especiales de la tienda

Last finish 2015-08-11 → 2015-05-25 (-78d). Complete tasks 115 → 64.

Added:

| ID | Task | Duration | Start | Finish |
| --- | --- | --- | --- | --- |
| 344 | **Publicacion Servicio** | 0.89d | 2015-03-24 08:00 | 2015-03-24 17:00 |

Removed: 344 Publicacion Servicio

Changed:

| ID | Task | Start | Finish | Duration | Complete | Total float | Predecessors | Other |
| --- | --- | --- | --- | --- | --- | --- | --- | --- |
| 1 | **Tuils Proyecto** | 2015-03-26 08:00 A → 2015-03-24 08:00 A (-2d) | 2015-03-31 17:00 → 2015-05-25 09:30 (+55d) | 3.56d → 35.72d | 25% → 15% | none → 0d |  | baseline start none → 2015-03-25 08:00; baseline finish none → 2015-08-26 16:00 |
| 2 | **Inicio** |  |  |  |  |  |  | baseline start none → 2015-03-25 08:00; baseline finish none → 2015-03-27 15:30 |
| 3 | **Configurar ambiente Inicial** |  |  |  |  |  |  | baseline start none → 2015-03-25 08:00; baseline finish none → 2015-03-26 14:30 |
| 4 | Configurar estructura github |  |  |  |  |  |  | baseline start none → 2015-03-25 08:00; baseline finish none → 2015-03-25 09:30 |
| 5 | Configurar solución |  |  |  |  |  |  | baseline start none → 2015-03-25 09:30; baseline finish none → 2015-03-25 14:30 |
| 6 | Crear BD |  |  |  |  |  |  | baseline start none → 2015-03-25 14:30; baseline finish none → 2015-03-25 15:30 |
| 7 | Agregar proyecto a Github |  |  |  |  |  |  | baseline start none → 2015-03-25 15:30; baseline finish none → 2015-03-26 10:30 |
| 8 | Configurar idioma Español |  |  |  |  |  |  | baseline start none → 2015-03-26 10:30; baseline finish none → 2015-03-26 14:30 |
| 9 | **Diseño** |  |  |  |  |  | 3 → none | baseline start none → 2015-03-26 14:30; baseline finish none → 2015-03-27 15:30 |
| 10 | Diseño de BD |  |  |  |  |  |  | baseline start none → 2015-03-26 14:30; baseline finish none → 2015-03-27 15:30 |
| 11 | **Fase 1 (Ventas)** |  | 2015-07-09 15:30 → 2015-05-25 09:30 (-45d) | 64.89d → 31.44d | 31% → 17% | -22d → 0d |  | baseline start none → 2015-03-27 15:30; baseline finish none → 2015-06-30 08:30 |
| 12 | **Desarrollo** |  | 2015-06-26 15:30 → 2015-05-20 10:30 (-37d) | 56.89d → 28.89d | 51% → 30% | -14d → 2.56d |  | baseline start none → 2015-03-27 15:30; baseline finish none → 2015-06-18 10:30 |
| 13 | **Publicacion Producto** |  | 2015-04-13 15:30 A → 2015-04-15 15:30 (+2d) |  | 100% → 97% | none → 22.56d |  | baseline start none → 2015-03-27 15:30; baseline finish none → 2015-04-15 10:30 |
| 14 | **Paso1 (Seleccionar Categoria)** |  | 2015-04-02 13:30 A → 2015-04-06 13:30 A (+4d) |  |  |  |  | baseline start none → 2015-03-27 15:30; baseline finish none → 2015-04-01 13:30 |
| 15 | Ajustes de BD |  |  |  |  |  |  | baseline start none → 2015-03-27 15:30; baseline finish none → 2015-03-30 08:30 |
| 16 | Menú Superior Tipo Producto |  |  |  |  |  |  | baseline start none → 2015-03-30 08:30; baseline finish none → 2015-03-30 10:30 |
| 17 | Paso actual en el proceso |  |  |  |  |  |  | baseline start none → 2015-03-30 10:30; baseline finish none → 2015-03-30 13:30 |
| 18 | **Seleccion de Categorias** |  | 2015-04-02 09:30 A → 2015-04-06 09:30 A (+4d) |  |  |  |  | baseline start none → 2015-03-30 13:30; baseline finish none → 2015-04-01 09:30 |
| 19 | Acceso a Datos |  |  |  |  |  |  | baseline start none → 2015-03-30 13:30; baseline finish none → 2015-03-30 16:30 |
| 20 | Filtro por seleccion |  |  |  |  |  |  | baseline start none → 2015-03-30 16:30; baseline finish none → 2015-03-31 10:30 |
| 21 | Filtro por texto |  |  |  |  |  |  | baseline start none → 2015-03-31 10:30; baseline finish none → 2015-03-31 14:30 |
| 22 | Ultimo seleccionado |  |  |  |  |  |  | baseline start none → 2015-03-31 14:30; baseline finish none → 2015-03-31 16:30 |
| 23 | Guardar |  | 2015-04-02 09:30 A → 2015-04-06 09:30 A (+4d) |  |  |  |  | baseline start none → 2015-03-31 16:30; baseline finish none → 2015-04-01 09:30 |
| 24 | Pruebas Unitarias | 2015-04-02 09:30 A → 2015-04-06 09:30 A (+4d) | 2015-04-02 13:30 A → 2015-04-06 13:30 A (+4d) |  |  |  | 18 → 23 | baseline start none → 2015-04-01 09:30; baseline finish none → 2015-04-01 13:30 |
| 25 | **Paso2 (Detalle Producto)** | 2015-04-02 13:30 A → 2015-04-06 13:30 A (+4d) | 2015-04-07 11:30 A → 2015-04-09 11:30 (+2d) |  | 100% → 95% | none → 0d |  | baseline start none → 2015-04-01 13:30; baseline finish none → 2015-04-08 11:30 |
| 26 | Menu tipo producto | 2015-04-02 13:30 A → 2015-04-06 13:30 A (+4d) | 2015-04-02 14:30 A → 2015-04-06 14:30 A (+4d) |  |  |  |  | baseline start none → 2015-04-01 13:30; baseline finish none → 2015-04-01 14:30 |
| 27 | Menu numero de paso | 2015-04-02 14:30 A → 2015-04-06 14:30 A (+4d) | 2015-04-02 15:30 A → 2015-04-06 15:30 A (+4d) |  |  |  |  | baseline start none → 2015-04-01 14:30; baseline finish none → 2015-04-01 15:30 |
| 28 | Acceso a datos | 2015-04-02 15:30 A → 2015-04-06 15:30 A (+4d) | 2015-04-03 08:30 A → 2015-04-07 08:30 A (+4d) |  |  |  |  | baseline start none → 2015-04-01 15:30; baseline finish none → 2015-04-06 08:30 |
| 29 | Datos básicos producto | 2015-04-03 08:30 A → 2015-04-07 08:30 A (+4d) | 2015-04-03 09:30 A → 2015-04-07 09:30 A (+4d) |  |  |  |  | baseline start none → 2015-04-06 08:30; baseline finish none → 2015-04-06 09:30 |
| 30 | Seleccionar tipo de moto | 2015-04-03 09:30 A → 2015-04-07 09:30 A (+4d) | 2015-04-03 15:30 A → 2015-04-07 15:30 A (+4d) |  |  |  |  | baseline start none → 2015-04-06 09:30; baseline finish none → 2015-04-06 15:30 |
| 31 | Datos de envío | 2015-04-03 15:30 A → 2015-04-07 15:30 A (+4d) | 2015-04-06 09:30 A → 2015-04-08 09:30 A (+2d) |  |  |  |  | baseline start none → 2015-04-06 15:30; baseline finish none → 2015-04-07 09:30 |
| 32 | Editor HTML | 2015-04-06 09:30 A → 2015-04-08 09:30 A (+2d) | 2015-04-06 16:30 A → 2015-04-08 16:30 (+2d) |  | 100% → 80% | none → 0.44d |  | baseline start none → 2015-04-07 09:30; baseline finish none → 2015-04-07 16:30 |
| 33 | Guardar | 2015-04-06 16:30 A → 2015-04-08 16:30 A (+2d) | 2015-04-07 09:30 A → 2015-04-09 09:30 A (+2d) |  |  |  |  | baseline start none → 2015-04-07 16:30; baseline finish none → 2015-04-08 09:30 |
| 34 | Pruebas unitarias | 2015-04-07 09:30 A → 2015-04-09 09:30 A (+2d) | 2015-04-07 11:30 A → 2015-04-09 11:30 A (+2d) |  |  |  |  | baseline start none → 2015-04-08 09:30; baseline finish none → 2015-04-08 11:30 |
| 35 | **Paso3 (Seleccionador Fotos)** | 2015-04-07 11:30 A → 2015-04-09 11:30 A (+2d) | 2015-04-09 14:30 A → 2015-04-13 14:30 (+4d) |  | 100% → 92% | none → 24.44d |  | baseline start none → 2015-04-08 11:30; baseline finish none → 2015-04-10 14:30 |
| 36 | Mostrar fotos | 2015-04-07 11:30 A → 2015-04-09 11:30 A (+2d) | 2015-04-07 15:30 A → 2015-04-09 15:30 A (+2d) |  |  |  |  | baseline start none → 2015-04-08 11:30; baseline finish none → 2015-04-08 15:30 |
| 37 | Seleccionar foto | 2015-04-07 15:30 A → 2015-04-09 15:30 A (+2d) | 2015-04-08 09:30 A → 2015-04-10 09:30 A (+2d) |  |  |  |  | baseline start none → 2015-04-08 15:30; baseline finish none → 2015-04-09 09:30 |
| 38 | Cambiar foto | 2015-04-08 09:30 A → 2015-04-10 09:30 A (+2d) | 2015-04-08 13:30 A → 2015-04-10 13:30 A (+2d) |  |  |  |  | baseline start none → 2015-04-09 09:30; baseline finish none → 2015-04-09 13:30 |
| 39 | Eliminar foto | 2015-04-08 13:30 A → 2015-04-10 13:30 A (+2d) | 2015-04-08 16:30 A → 2015-04-10 16:30 (+2d) |  | 100% → 50% | none → 25.11d |  | baseline start none → 2015-04-09 13:30; baseline finish none → 2015-04-09 16:30 |
| 40 | Guardar fotos | 2015-04-08 16:30 A → 2015-04-10 16:30 A (+2d) | 2015-04-09 10:30 A → 2015-04-13 10:30 A (+4d) |  |  |  |  | baseline start none → 2015-04-09 16:30; baseline finish none → 2015-04-10 10:30 |
| 41 | Pruebas unitarias | 2015-04-09 10:30 A → 2015-04-13 10:30 A (+4d) | 2015-04-09 14:30 A → 2015-04-13 14:30 A (+4d) |  |  |  |  | baseline start none → 2015-04-10 10:30; baseline finish none → 2015-04-10 14:30 |
| 42 | **Paso 4 (Resumen)** | 2015-04-09 14:30 A → 2015-04-13 14:30 A (+4d) | 2015-04-13 08:30 A → 2015-04-15 08:30 A (+2d) |  |  |  |  | baseline start none → 2015-04-10 14:30; baseline finish none → 2015-04-14 08:30 |
| 43 | Datos basicos | 2015-04-09 14:30 A → 2015-04-13 14:30 A (+4d) | 2015-04-09 16:30 A → 2015-04-13 16:30 A (+4d) |  |  |  |  | baseline start none → 2015-04-10 14:30; baseline finish none → 2015-04-10 16:30 |
| 44 | Imagenes | 2015-04-09 16:30 A → 2015-04-13 16:30 A (+4d) | 2015-04-10 09:30 A → 2015-04-14 09:30 A (+4d) |  |  |  |  | baseline start none → 2015-04-10 16:30; baseline finish none → 2015-04-13 09:30 |
| 45 | Aceptar terminos y condiciones | 2015-04-10 09:30 A → 2015-04-14 09:30 A (+4d) | 2015-04-10 10:30 A → 2015-04-14 10:30 A (+4d) |  |  |  |  | baseline start none → 2015-04-13 09:30; baseline finish none → 2015-04-13 10:30 |
| 46 | Volver | 2015-04-10 10:30 A → 2015-04-14 10:30 A (+4d) | 2015-04-10 13:30 A → 2015-04-14 13:30 A (+4d) |  |  |  |  | baseline start none → 2015-04-13 10:30; baseline finish none → 2015-04-13 13:30 |
| 47 | Publicar | 2015-04-10 13:30 A → 2015-04-14 13:30 A (+4d) | 2015-04-10 15:30 A → 2015-04-14 15:30 A (+4d) |  |  |  |  | baseline start none → 2015-04-13 13:30; baseline finish none → 2015-04-13 15:30 |
| 48 | Pruebas unitarias | 2015-04-10 15:30 A → 2015-04-14 15:30 A (+4d) | 2015-04-13 08:30 A → 2015-04-15 08:30 A (+2d) |  |  |  |  | baseline start none → 2015-04-13 15:30; baseline finish none → 2015-04-14 08:30 |
| 49 | Ajustar Diseño | 2015-04-13 08:30 A → 2015-04-15 08:30 A (+2d) | 2015-04-13 15:30 A → 2015-04-15 15:30 A (+2d) |  |  |  |  | baseline start none → 2015-04-14 13:30; baseline finish none → 2015-04-15 10:30 |
| 50 | Seleccionar tipo de producto | 2015-04-13 15:30 A → 2015-04-15 15:30 A (+2d) | 2015-04-14 08:30 A → 2015-04-16 10:30 (+2d) | 2h → 4h | 100% → 66% | none → 22.11d | 13 → none | baseline start none → 2015-04-15 10:30; baseline finish none → 2015-04-15 15:30 |
| 51 | **Publicacion Producto Servicio** | 2015-04-14 08:30 A → 2015-03-30 15:30 (-15d) | 2015-04-21 14:30 → 2015-03-31 10:30 (-21d) | 5d → 0.44d | 89% → 0% | 0d → 31d | 50 → none | baseline start none → 2015-07-23 09:30; baseline finish none → 2015-07-30 15:30 |
| 52 | **Paso1 (Seleccionar Categoria)** | 2015-04-14 08:30 A → 2015-03-30 15:30 (-15d) | 2015-04-15 14:30 A → 2015-03-31 09:30 (-15d) | 1.44d → 0.33d | 100% → 0% | none → 31.11d |  | baseline start none → 2015-07-23 09:30; baseline finish none → 2015-07-24 15:30 |
| 53 | Ajustes de BD | 2015-04-14 08:30 A → 2015-03-30 15:30 (-15d) | 2015-04-14 11:30 A → 2015-03-31 09:30 (-14d) |  | 100% → 0% | none → 31.11d |  | baseline start none → 2015-07-23 09:30; baseline finish none → 2015-07-23 13:30 |
| 54 | Menú Superior Tipo Producto | 2015-04-14 11:30 A → 2015-03-30 15:30 (-15d) | 2015-04-14 13:30 A → 2015-03-30 16:30 (-15d) |  | 100% → 0% | none → 31.33d | 53 → none | baseline start none → 2015-07-23 13:30; baseline finish none → 2015-07-23 14:30 |
| 55 | Paso actual en el proceso | 2015-04-14 13:30 A → 2015-03-30 15:30 (-15d) | 2015-04-14 14:30 A → 2015-03-30 16:30 (-15d) |  | 100% → 0% | none → 31.33d | 54 → none | baseline start none → 2015-07-23 14:30; baseline finish none → 2015-07-23 15:30 |
| 56 | **Seleccion de Categorias** | 2015-04-14 14:30 A → 2015-03-30 15:30 (-15d) | 2015-04-15 11:30 A → 2015-03-31 08:30 (-15d) | 0.67d → 0.22d | 100% → 0% | none → 31.22d | 55 → none | baseline start none → 2015-07-23 15:30; baseline finish none → 2015-07-24 13:30 |
| 57 | Acceso a Datos | 2015-04-14 14:30 A → 2015-03-30 15:30 (-15d) | 2015-04-14 15:30 A → 2015-03-30 16:30 (-15d) |  | 100% → 0% | none → 31.33d |  | baseline start none → 2015-07-23 15:30; baseline finish none → 2015-07-23 16:30 |
| 58 | Filtro por seleccion | 2015-04-14 15:30 A → 2015-03-30 15:30 (-15d) | 2015-04-15 08:30 A → 2015-03-31 08:30 (-15d) |  | 100% → 0% | none → 31.22d | 57 → none | baseline start none → 2015-07-23 16:30; baseline finish none → 2015-07-24 09:30 |
| 59 | Filtro por texto | 2015-04-15 08:30 A → 2015-03-30 15:30 (-16d) | 2015-04-15 09:30 A → 2015-03-30 16:30 (-16d) |  | 100% → 0% | none → 31.33d | 58 → none | baseline start none → 2015-07-24 09:30; baseline finish none → 2015-07-24 10:30 |
| 60 | Ultimo seleccionado | 2015-04-15 09:30 A → 2015-03-30 15:30 (-16d) | 2015-04-15 10:30 A → 2015-03-30 16:30 (-16d) |  | 100% → 0% | none → 31.33d | 59 → none | baseline start none → 2015-07-24 10:30; baseline finish none → 2015-07-24 11:30 |
| 61 | Guardar | 2015-04-15 10:30 A → 2015-03-30 15:30 (-16d) | 2015-04-15 11:30 A → 2015-03-30 16:30 (-16d) |  | 100% → 0% | none → 31.33d | 60 → none | baseline start none → 2015-07-24 11:30; baseline finish none → 2015-07-24 13:30 |
| 62 | Pruebas Unitarias | 2015-04-15 11:30 A → 2015-03-30 15:30 (-16d) | 2015-04-15 14:30 A → 2015-03-31 08:30 (-15d) |  | 100% → 0% | none → 31.22d | 56 → none | baseline start none → 2015-07-24 13:30; baseline finish none → 2015-07-24 15:30 |
| 63 | **Paso2 (Detalle Producto)** | 2015-04-15 14:30 A → 2015-03-30 15:30 (-16d) | 2015-04-20 13:30 → 2015-03-31 10:30 (-20d) | 2.56d → 0.44d | 79% → 0% | 0d → 31d | 52 → none | baseline start none → 2015-07-24 15:30; baseline finish none → 2015-07-29 14:30 |
| 64 | Acceso a datos | 2015-04-15 14:30 A → 2015-03-30 15:30 (-16d) | 2015-04-16 09:30 A → 2015-03-31 10:30 (-16d) |  | 100% → 0% | none → 31d |  | baseline start none → 2015-07-24 15:30; baseline finish none → 2015-07-27 10:30 |
| 65 | Datos básicos producto | 2015-04-16 09:30 A → 2015-03-30 15:30 (-17d) | 2015-04-16 11:30 A → 2015-03-31 08:30 (-16d) |  | 100% → 0% | none → 31.22d | 64 → none | baseline start none → 2015-07-27 10:30; baseline finish none → 2015-07-27 13:30 |
| 66 | Seleccionar tipo de moto | 2015-04-16 11:30 A → 2015-03-30 15:30 (-17d) | 2015-04-16 15:30 A → 2015-03-31 09:30 (-16d) |  | 100% → 0% | none → 31.11d | 65 → none | baseline start none → 2015-07-27 13:30; baseline finish none → 2015-07-27 16:30 |
| 67 | Datos de domicilio | 2015-04-16 15:30 A → 2015-03-30 15:30 (-17d) | 2015-04-17 10:30 → 2015-03-31 10:30 (-17d) |  | 50% → 0% | -39.01d → 31d | 66 → none | baseline start none → 2015-07-27 16:30; baseline finish none → 2015-07-28 11:30 |
| 68 | Insumos | 2015-04-17 10:30 A → 2015-03-30 15:30 (-18d) | 2015-04-17 15:30 → 2015-03-31 10:30 (-17d) |  | 30% → 0% | -39.45d → 31d | 67 → none | baseline start none → 2015-07-28 11:30; baseline finish none → 2015-07-28 16:30 |
| 69 | Editor HTML | 2015-04-17 15:30 A → 2015-03-30 15:30 (-18d) | 2015-04-20 08:30 A → 2015-03-31 08:30 (-20d) |  | 100% → 0% | none → 31.22d | 68 → none | baseline start none → 2015-07-28 16:30; baseline finish none → 2015-07-29 09:30 |
| 70 | Guardar | 2015-04-20 08:30 A → 2015-03-30 15:30 (-21d) | 2015-04-20 09:30 A → 2015-03-30 16:30 (-21d) |  | 100% → 0% | none → 31.33d | 69 → none | baseline start none → 2015-07-29 09:30; baseline finish none → 2015-07-29 10:30 |

| ID | Task | Start | Finish | Duration | Complete | Total float | Predecessors | Other |
| --- | --- | --- | --- | --- | --- | --- | --- | --- |
| 71 | Pruebas unitarias | 2015-04-20 09:30 A → 2015-03-30 15:30 (-21d) | 2015-04-20 13:30 A → 2015-03-31 09:30 (-20d) |  | 100% → 0% | none → 31.11d | 70 → none | baseline start none → 2015-07-29 10:30; baseline finish none → 2015-07-29 14:30 |
| 72 | **Paso 3 (Resumen)** | 2015-04-20 13:30 A → 2015-03-30 15:30 (-21d) | 2015-04-21 14:30 A → 2015-03-31 08:30 (-21d) | 1d → 0.22d | 100% → 0% | none → 31.22d | 63 → none | baseline start none → 2015-07-29 14:30; baseline finish none → 2015-07-30 15:30 |
| 73 | Datos basicos | 2015-04-20 13:30 A → 2015-03-30 15:30 (-21d) | 2015-04-20 15:30 A → 2015-03-31 08:30 (-20d) |  | 100% → 0% | none → 31.22d |  | baseline start none → 2015-07-29 14:30; baseline finish none → 2015-07-29 16:30 |
| 74 | Imagenes | 2015-04-20 15:30 A → 2015-03-30 15:30 (-21d) | 2015-04-21 08:30 A → 2015-03-31 08:30 (-21d) |  | 100% → 0% | none → 31.22d | 73 → none | baseline start none → 2015-07-29 16:30; baseline finish none → 2015-07-30 09:30 |
| 75 | Aceptar terminos y condiciones | 2015-04-21 08:30 A → 2015-03-30 15:30 (-22d) | 2015-04-21 09:30 A → 2015-03-30 16:30 (-22d) |  | 100% → 0% | none → 31.33d | 74 → none | baseline start none → 2015-07-30 09:30; baseline finish none → 2015-07-30 10:30 |
| 76 | Volver | 2015-04-21 09:30 A → 2015-03-30 15:30 (-22d) | 2015-04-21 10:30 A → 2015-03-30 16:30 (-22d) |  | 100% → 0% | none → 31.33d | 75 → none | baseline start none → 2015-07-30 10:30; baseline finish none → 2015-07-30 11:30 |
| 77 | Publicar | 2015-04-21 10:30 A → 2015-03-30 15:30 (-22d) | 2015-04-21 11:30 A → 2015-03-30 16:30 (-22d) |  | 100% → 0% | none → 31.33d | 76 → none | baseline start none → 2015-07-30 11:30; baseline finish none → 2015-07-30 13:30 |
| 78 | Pruebas unitarias | 2015-04-21 11:30 A → 2015-03-30 15:30 (-22d) | 2015-04-21 14:30 A → 2015-03-31 08:30 (-21d) |  | 100% → 0% | none → 31.22d | 77 → none | baseline start none → 2015-07-30 13:30; baseline finish none → 2015-07-30 15:30 |
| 79 | **Publicación Moto** | 2015-04-21 14:30 A → 2015-03-30 15:30 A (-22d) | 2015-04-30 14:30 A → 2015-04-27 10:30 (-3d) | 6.22d → 15.56d | 100% → 93% | none → 15.89d | 51 → none | baseline start none → 2015-04-15 15:30; baseline finish none → 2015-04-24 15:30 |
| 80 | **Paso1 (Seleccionar Categoria)** | 2015-04-21 14:30 A → 2015-03-30 15:30 A (-22d) | 2015-04-24 09:30 A → 2015-04-20 11:30 (-4d) | 2.22d → 11.22d | 100% → 85% | none → 20.22d |  | baseline start none → 2015-04-15 15:30; baseline finish none → 2015-04-20 10:30 |
| 81 | Ajustes de BD | 2015-04-21 14:30 A → 2015-04-16 10:30 A (-5d) | 2015-04-22 09:30 A → 2015-04-16 15:30 A (-6d) |  |  |  |  | baseline start none → 2015-04-15 15:30; baseline finish none → 2015-04-16 10:30 |
| 82 | Menú Superior Tipo Producto | 2015-04-22 09:30 A → 2015-04-16 15:30 A (-6d) | 2015-04-22 10:30 A → 2015-04-16 16:30 A (-6d) |  |  |  | 81 → none | baseline start none → 2015-04-16 10:30; baseline finish none → 2015-04-16 11:30 |
| 83 | Paso actual en el proceso | 2015-04-22 10:30 A → 2015-04-16 16:30 A (-6d) | 2015-04-22 11:30 A → 2015-04-17 08:30 A (-5d) |  |  |  | 82 → none | baseline start none → 2015-04-16 11:30; baseline finish none → 2015-04-16 13:30 |
| 84 | **Seleccion de Categorias** | 2015-04-22 11:30 A → 2015-04-17 08:30 A (-5d) | 2015-04-23 15:30 A → 2015-04-20 11:30 A (-3d) |  |  |  | 83 → none | baseline start none → 2015-04-16 13:30; baseline finish none → 2015-04-17 16:30 |
| 85 | Acceso a Datos | 2015-04-22 11:30 A → 2015-04-17 08:30 A (-5d) | 2015-04-22 16:30 A → 2015-04-17 13:30 A (-5d) |  |  |  |  | baseline start none → 2015-04-16 13:30; baseline finish none → 2015-04-17 08:30 |
| 86 | Filtro por seleccion | 2015-04-22 16:30 A → 2015-04-17 13:30 A (-5d) | 2015-04-23 09:30 A → 2015-04-17 15:30 A (-6d) |  |  |  | 85 → none | baseline start none → 2015-04-17 08:30; baseline finish none → 2015-04-17 10:30 |
| 87 | Filtro por texto | 2015-04-23 09:30 A → 2015-04-17 15:30 A (-6d) | 2015-04-23 11:30 A → 2015-04-20 08:30 A (-3d) |  |  |  | 86 → none | baseline start none → 2015-04-17 10:30; baseline finish none → 2015-04-17 13:30 |
| 88 | Ultimo seleccionado | 2015-04-23 11:30 A → 2015-04-20 08:30 A (-3d) | 2015-04-23 13:30 A → 2015-04-20 09:30 A (-3d) |  |  |  | 87 → none | baseline start none → 2015-04-17 13:30; baseline finish none → 2015-04-17 14:30 |
| 89 | Guardar | 2015-04-23 13:30 A → 2015-04-20 09:30 A (-3d) | 2015-04-23 15:30 A → 2015-04-20 11:30 A (-3d) |  |  |  | 88 → none | baseline start none → 2015-04-17 14:30; baseline finish none → 2015-04-17 16:30 |
| 90 | Pruebas Unitarias | 2015-04-23 15:30 A → 2015-03-30 15:30 (-24d) | 2015-04-24 09:30 A → 2015-03-31 09:30 (-24d) |  | 100% → 0% | none → 31.11d | 84 → none | baseline start none → 2015-04-17 16:30; baseline finish none → 2015-04-20 10:30 |
| 91 | **Paso2 (Detalle Producto)** | 2015-04-24 09:30 A → 2015-04-20 15:30 A (-4d) | 2015-04-27 16:30 A → 2015-04-22 13:30 A (-5d) |  |  |  | 80 → none | baseline start none → 2015-04-20 10:30; baseline finish none → 2015-04-22 08:30 |
| 92 | Acceso a datos | 2015-04-24 09:30 A → 2015-04-20 15:30 A (-4d) | 2015-04-24 14:30 A → 2015-04-21 10:30 A (-3d) |  |  |  |  | baseline start none → 2015-04-20 10:30; baseline finish none → 2015-04-20 15:30 |
| 93 | Datos básicos producto | 2015-04-24 14:30 A → 2015-04-21 10:30 A (-3d) | 2015-04-24 15:30 A → 2015-04-21 11:30 A (-3d) |  |  |  | 92 → none | baseline start none → 2015-04-20 15:30; baseline finish none → 2015-04-20 16:30 |
| 94 | Seleccionar tipo de moto | 2015-04-24 15:30 A → 2015-04-21 11:30 A (-3d) | 2015-04-27 11:30 A → 2015-04-22 08:30 A (-5d) |  |  |  | 93 → none | baseline start none → 2015-04-20 16:30; baseline finish none → 2015-04-21 13:30 |
| 95 | Guardar | 2015-04-27 11:30 A → 2015-04-22 08:30 A (-5d) | 2015-04-27 14:30 A → 2015-04-22 10:30 A (-5d) |  |  |  | 94 → none | baseline start none → 2015-04-21 13:30; baseline finish none → 2015-04-21 15:30 |
| 96 | Pruebas unitarias | 2015-04-27 14:30 A → 2015-04-22 10:30 A (-5d) | 2015-04-27 16:30 A → 2015-04-22 13:30 A (-5d) |  |  |  | 95 → none | baseline start none → 2015-04-21 15:30; baseline finish none → 2015-04-22 08:30 |
| 97 | **Paso3 (Seleccionador Fotos)** | 2015-04-27 16:30 A → 2015-04-22 13:30 A (-5d) | 2015-04-28 16:30 A → 2015-04-23 13:30 A (-5d) |  |  |  | 91 → none | baseline start none → 2015-04-22 08:30; baseline finish none → 2015-04-23 08:30 |
| 98 | Mostrar fotos | 2015-04-27 16:30 A → 2015-04-22 13:30 A (-5d) | 2015-04-28 09:30 A → 2015-04-22 15:30 A (-6d) |  |  |  |  | baseline start none → 2015-04-22 08:30; baseline finish none → 2015-04-22 10:30 |
| 99 | Seleccionar foto | 2015-04-28 09:30 A → 2015-04-22 15:30 A (-6d) | 2015-04-28 10:30 A → 2015-04-22 16:30 A (-6d) |  |  |  | 98 → none | baseline start none → 2015-04-22 10:30; baseline finish none → 2015-04-22 11:30 |
| 100 | Cambiar foto | 2015-04-28 10:30 A → 2015-04-22 16:30 A (-6d) | 2015-04-28 11:30 A → 2015-04-23 08:30 A (-5d) |  |  |  | 99 → none | baseline start none → 2015-04-22 11:30; baseline finish none → 2015-04-22 13:30 |
| 101 | Eliminar foto | 2015-04-28 11:30 A → 2015-04-23 08:30 A (-5d) | 2015-04-28 13:30 A → 2015-04-23 09:30 A (-5d) |  |  |  | 100 → none | baseline start none → 2015-04-22 13:30; baseline finish none → 2015-04-22 14:30 |
| 102 | Guardar fotos | 2015-04-28 13:30 A → 2015-04-23 09:30 A (-5d) | 2015-04-28 14:30 A → 2015-04-23 10:30 A (-5d) |  |  |  | 101 → none | baseline start none → 2015-04-22 14:30; baseline finish none → 2015-04-22 15:30 |
| 103 | Pruebas unitarias | 2015-04-28 14:30 A → 2015-04-23 10:30 A (-5d) | 2015-04-28 16:30 A → 2015-04-23 13:30 A (-5d) |  |  |  | 102 → none | baseline start none → 2015-04-22 15:30; baseline finish none → 2015-04-23 08:30 |
| 104 | **Paso 4 (Resumen)** | 2015-04-28 16:30 A → 2015-04-23 13:30 A (-5d) | 2015-04-29 16:30 A → 2015-04-24 13:30 A (-5d) |  |  |  | 97 → none | baseline start none → 2015-04-23 08:30; baseline finish none → 2015-04-24 08:30 |
| 105 | Datos basicos | 2015-04-28 16:30 A → 2015-04-23 13:30 A (-5d) | 2015-04-29 09:30 A → 2015-04-23 15:30 A (-6d) |  |  |  |  | baseline start none → 2015-04-23 08:30; baseline finish none → 2015-04-23 10:30 |
| 106 | Imagenes | 2015-04-29 09:30 A → 2015-04-23 15:30 A (-6d) | 2015-04-29 10:30 A → 2015-04-23 16:30 A (-6d) |  |  |  | 105 → none | baseline start none → 2015-04-23 10:30; baseline finish none → 2015-04-23 11:30 |
| 107 | Aceptar terminos y condiciones | 2015-04-29 10:30 A → 2015-04-23 16:30 A (-6d) | 2015-04-29 11:30 A → 2015-04-24 08:30 A (-5d) |  |  |  | 106 → none | baseline start none → 2015-04-23 11:30; baseline finish none → 2015-04-23 13:30 |
| 108 | Volver | 2015-04-29 11:30 A → 2015-04-24 08:30 A (-5d) | 2015-04-29 13:30 A → 2015-04-24 09:30 A (-5d) |  |  |  | 107 → none | baseline start none → 2015-04-23 13:30; baseline finish none → 2015-04-23 14:30 |
| 109 | Publicar | 2015-04-29 13:30 A → 2015-04-24 09:30 A (-5d) | 2015-04-29 14:30 A → 2015-04-24 10:30 A (-5d) |  |  |  | 108 → none | baseline start none → 2015-04-23 14:30; baseline finish none → 2015-04-23 15:30 |
| 110 | Pruebas unitarias | 2015-04-29 14:30 A → 2015-04-24 10:30 A (-5d) | 2015-04-29 16:30 A → 2015-04-24 13:30 A (-5d) |  |  |  | 109 → none | baseline start none → 2015-04-23 15:30; baseline finish none → 2015-04-24 08:30 |
| 111 | Ajustar Diseño | 2015-04-29 16:30 A → 2015-04-24 13:30 A (-5d) | 2015-04-30 14:30 A → 2015-04-27 10:30 (-3d) |  | 100% → 80% | none → 15.89d | 104 → none | baseline start none → 2015-04-24 08:30; baseline finish none → 2015-04-24 15:30 |
| 112 | **Detalle Tienda** | 2015-04-30 14:30 A → 2015-03-30 15:30 (-31d) | 2015-05-06 13:30 → 2015-03-31 11:30 (-36d) | 3.44d → 0.56d | 94% → 0% | 0d → 30.89d | 79 → none | baseline start none → 2015-07-08 10:30; baseline finish none → 2015-07-14 09:30 |
| 113 | Fondo de tienda | 2015-04-30 14:30 A → 2015-03-30 15:30 (-31d) | 2015-04-30 16:30 A → 2015-03-31 08:30 (-30d) |  | 100% → 0% | none → 31.22d |  | baseline start none → 2015-07-08 10:30; baseline finish none → 2015-07-08 13:30 |
| 114 | Imagenes adicionales | 2015-04-30 16:30 A → 2015-03-30 15:30 (-31d) | 2015-05-01 13:30 A → 2015-03-31 11:30 (-31d) |  | 100% → 0% | none → 30.89d | 113 → none | baseline start none → 2015-07-08 13:30; baseline finish none → 2015-07-09 09:30 |
| 115 | Informacion básica | 2015-05-01 13:30 A → 2015-03-30 15:30 (-32d) | 2015-05-01 15:30 A → 2015-03-31 08:30 (-31d) |  | 100% → 0% | none → 31.22d | 114 → none | baseline start none → 2015-07-09 09:30; baseline finish none → 2015-07-09 11:30 |
| 116 | Enviar mensaje privado | 2015-05-01 15:30 → 2015-03-30 15:30 (-32d) | 2015-05-01 16:30 → 2015-03-30 16:30 (-32d) |  |  | -74.45d → 31.33d | 115 → none | baseline start none → 2015-07-09 11:30; baseline finish none → 2015-07-09 13:30 |
| 117 | Contar experiencia | 2015-05-01 16:30 → 2015-03-30 15:30 (-32d) | 2015-05-04 08:30 → 2015-03-30 16:30 (-35d) |  |  | -74.45d → 31.33d | 116 → none | baseline start none → 2015-07-09 13:30; baseline finish none → 2015-07-09 14:30 |
| 118 | **Listado de productos** | 2015-05-04 08:30 A → 2015-03-30 15:30 (-35d) | 2015-05-05 08:30 A → 2015-03-31 10:30 (-35d) | 0.89d → 0.44d | 100% → 0% | none → 31d | 117 → none | baseline start none → 2015-07-09 14:30; baseline finish none → 2015-07-10 14:30 |
| 119 | Listar productos | 2015-05-04 08:30 A → 2015-03-30 15:30 (-35d) | 2015-05-04 13:30 A → 2015-03-31 10:30 (-34d) |  | 100% → 0% | none → 31d |  | baseline start none → 2015-07-09 14:30; baseline finish none → 2015-07-10 09:30 |
| 120 | Filtrar Productos | 2015-05-04 13:30 A → 2015-03-30 15:30 (-35d) | 2015-05-04 16:30 A → 2015-03-31 09:30 (-34d) |  | 100% → 0% | none → 31.11d | 119 → none | baseline start none → 2015-07-10 09:30; baseline finish none → 2015-07-10 13:30 |
| 121 | Paginar productos | 2015-05-04 16:30 A → 2015-03-30 15:30 (-35d) | 2015-05-05 08:30 A → 2015-03-30 16:30 (-36d) |  | 100% → 0% | none → 31.33d | 120 → none | baseline start none → 2015-07-10 13:30; baseline finish none → 2015-07-10 14:30 |
| 122 | Listar comentarios | 2015-05-05 08:30 A → 2015-03-30 15:30 (-36d) | 2015-05-05 11:30 A → 2015-03-31 09:30 (-35d) |  | 100% → 0% | none → 31.11d | 118 → none | baseline start none → 2015-07-10 14:30; baseline finish none → 2015-07-13 08:30 |
| 123 | **Mapas** | 2015-05-05 11:30 A → 2015-03-30 15:30 (-36d) | 2015-05-06 13:30 A → 2015-03-31 10:30 (-36d) | 1d → 0.44d | 100% → 0% | none → 31d | 122 → none | baseline start none → 2015-07-13 08:30; baseline finish none → 2015-07-14 09:30 |
| 124 | Mostrar sedes | 2015-05-05 11:30 A → 2015-03-30 15:30 (-36d) | 2015-05-05 16:30 A → 2015-03-31 10:30 (-35d) |  | 100% → 0% | none → 31d |  | baseline start none → 2015-07-13 08:30; baseline finish none → 2015-07-13 13:30 |
| 125 | Informacion básica | 2015-05-05 16:30 A → 2015-03-30 15:30 (-36d) | 2015-05-06 08:30 A → 2015-03-30 16:30 (-37d) |  | 100% → 0% | none → 31.33d | 124 → none | baseline start none → 2015-07-13 13:30; baseline finish none → 2015-07-13 14:30 |
| 126 | Ubicar punto | 2015-05-06 08:30 A → 2015-03-30 15:30 (-37d) | 2015-05-06 13:30 A → 2015-03-31 10:30 (-36d) |  | 100% → 0% | none → 31d | 125 → none | baseline start none → 2015-07-13 14:30; baseline finish none → 2015-07-14 09:30 |
| 127 | **Panel de Control** | 2015-05-06 13:30 A → 2015-03-30 15:30 (-37d) | 2015-05-29 16:30 → 2015-03-31 16:30 (-59d) | 15.44d → 1d | 28% → 0% | -8d → 30.44d | 112 → none | baseline start none → 2015-05-22 16:30; baseline finish none → 2015-06-10 15:30 |
| 128 | Home Panel De Control | 2015-05-06 13:30 → 2015-03-30 15:30 (-37d) | 2015-05-07 10:30 → 2015-03-31 13:30 (-37d) |  |  | -76.68d → 30.78d |  | baseline start none → 2015-05-22 16:30; baseline finish none → 2015-05-25 14:30 |
| 129 | **Mis datos** | 2015-05-07 10:30 A → 2015-03-30 15:30 (-38d) | 2015-05-11 11:30 → 2015-03-31 09:30 (-41d) | 1.89d → 0.33d | 88% → 0% | 0d → 31.11d | 128 → none | baseline start none → 2015-05-25 14:30; baseline finish none → 2015-05-27 15:30 |
| 130 | BD | 2015-05-07 10:30 A → 2015-03-30 15:30 (-38d) | 2015-05-07 13:30 A → 2015-03-31 08:30 (-37d) |  | 100% → 0% | none → 31.22d |  | baseline start none → 2015-05-25 14:30; baseline finish none → 2015-05-25 16:30 |
| 131 | Datos basicos | 2015-05-07 13:30 A → 2015-03-30 15:30 (-38d) | 2015-05-07 16:30 A → 2015-03-31 09:30 (-37d) |  | 100% → 0% | none → 31.11d | 130 → none | baseline start none → 2015-05-25 16:30; baseline finish none → 2015-05-26 10:30 |
| 132 | **Mi moto** | 2015-05-07 16:30 A → 2015-03-30 15:30 (-38d) | 2015-05-08 13:30 → 2015-03-31 09:30 (-38d) | 0.56d → 0.33d | 80% → 0% | -0.11d → 31.11d | 131 → none | baseline start none → 2015-05-26 10:30; baseline finish none → 2015-05-26 16:30 |
| 133 | Seleccion de marca | 2015-05-07 16:30 A → 2015-03-30 15:30 (-38d) | 2015-05-08 10:30 A → 2015-03-31 09:30 (-38d) |  | 100% → 0% | none → 31.11d |  | baseline start none → 2015-05-26 10:30; baseline finish none → 2015-05-26 14:30 |
| 134 | Datos adicionales | 2015-05-08 10:30 A → 2015-03-30 15:30 (-39d) | 2015-05-08 11:30 A → 2015-03-30 16:30 (-39d) |  | 100% → 0% | none → 31.33d | 133 → none | baseline start none → 2015-05-26 14:30; baseline finish none → 2015-05-26 15:30 |
| 135 | Carga de logo | 2015-05-08 11:30 → 2015-03-30 15:30 (-39d) | 2015-05-08 13:30 → 2015-03-30 16:30 (-39d) |  |  | -77.68d → 31.33d | 134 → none | baseline start none → 2015-05-26 15:30; baseline finish none → 2015-05-26 16:30 |
| 136 | **Cambiar Clave** | 2015-05-08 13:30 A → 2015-03-30 15:30 (-39d) | 2015-05-08 15:30 → 2015-03-30 16:30 (-39d) | 0.22d → 0.11d | 50% → 0% | 0d → 31.33d | 132 → none | baseline start none → 2015-05-26 16:30; baseline finish none → 2015-05-27 09:30 |
| 137 | Ajustar diseño | 2015-05-08 13:30 → 2015-03-30 15:30 (-39d) | 2015-05-08 14:30 → 2015-03-30 16:30 (-39d) |  |  | -77.68d → 31.33d |  | baseline start none → 2015-05-26 16:30; baseline finish none → 2015-05-27 08:30 |
| 138 | Retornar a edicion de datos | 2015-05-08 14:30 A → 2015-03-30 15:30 (-39d) | 2015-05-08 15:30 A → 2015-03-30 16:30 (-39d) |  | 100% → 0% | none → 31.33d | 137 → none | baseline start none → 2015-05-27 08:30; baseline finish none → 2015-05-27 09:30 |
| 139 | Guardar | 2015-05-08 15:30 A → 2015-03-30 15:30 (-39d) | 2015-05-11 08:30 A → 2015-03-31 08:30 (-41d) |  | 100% → 0% | none → 31.22d | 136 → none | baseline start none → 2015-05-27 09:30; baseline finish none → 2015-05-27 11:30 |
| 140 | Pruebas unitarias | 2015-05-11 08:30 A → 2015-03-30 15:30 (-42d) | 2015-05-11 11:30 A → 2015-03-31 09:30 (-41d) |  | 100% → 0% | none → 31.11d | 139 → none | baseline start none → 2015-05-27 11:30; baseline finish none → 2015-05-27 15:30 |

| ID | Task | Start | Finish | Duration | Complete | Total float | Predecessors | Other |
| --- | --- | --- | --- | --- | --- | --- | --- | --- |
| 141 | **Actualizacion de Tienda** | 2015-05-11 11:30 A → 2015-03-30 15:30 (-42d) | 2015-05-18 16:30 → 2015-03-31 13:30 (-48d) | 4.89d → 0.67d | 55% → 0% | 0d → 30.78d | 129 → none | baseline start none → 2015-06-30 15:30; baseline finish none → 2015-07-08 10:30 |
| 142 | BD | 2015-05-11 11:30 A → 2015-03-30 15:30 (-42d) | 2015-05-11 14:30 → 2015-03-31 08:30 (-41d) |  | 50% → 0% | -77.01d → 31.22d |  | baseline start none → 2015-06-30 15:30; baseline finish none → 2015-07-01 08:30 |
| 143 | Datos basicos | 2015-05-11 14:30 A → 2015-03-30 15:30 (-42d) | 2015-05-11 16:30 A → 2015-03-31 08:30 (-41d) |  | 100% → 0% | none → 31.22d | 142 → none | baseline start none → 2015-07-01 08:30; baseline finish none → 2015-07-01 10:30 |
| 144 | Cargar logo | 2015-05-11 16:30 A → 2015-03-30 15:30 (-42d) | 2015-05-12 10:30 A → 2015-03-31 09:30 (-42d) |  | 100% → 0% | none → 31.11d | 143 → none | baseline start none → 2015-07-01 10:30; baseline finish none → 2015-07-01 14:30 |
| 145 | Cargar fondo | 2015-05-12 10:30 A → 2015-03-30 15:30 (-43d) | 2015-05-12 13:30 A → 2015-03-31 08:30 (-42d) |  | 100% → 0% | none → 31.22d | 144 → none | baseline start none → 2015-07-01 14:30; baseline finish none → 2015-07-01 16:30 |
| 146 | Servicios especializados | 2015-05-12 13:30 → 2015-03-30 15:30 (-43d) | 2015-05-13 10:30 → 2015-03-31 13:30 (-43d) |  |  | -79.9d → 30.78d | 145 → none | baseline start none → 2015-07-01 16:30; baseline finish none → 2015-07-02 14:30 |
| 147 | Recibir cotizaciones de | 2015-05-13 10:30 → 2015-03-30 15:30 (-44d) | 2015-05-13 13:30 → 2015-03-31 08:30 (-43d) |  |  | -79.9d → 31.22d | 146 → none | baseline start none → 2015-07-02 14:30; baseline finish none → 2015-07-02 16:30 |
| 148 | Referencias especializadas | 2015-05-13 13:30 → 2015-03-30 15:30 (-44d) | 2015-05-14 08:30 → 2015-03-31 10:30 (-44d) |  |  | -79.9d → 31d | 147 → none | baseline start none → 2015-07-02 16:30; baseline finish none → 2015-07-03 11:30 |
| 149 | **Imagenes Adicionales** | 2015-05-14 08:30 → 2015-03-30 15:30 (-45d) | 2015-05-14 16:30 → 2015-03-31 10:30 (-44d) | 0.78d → 0.44d |  | -79.34d → 31d | 148 → none | baseline start none → 2015-07-03 11:30; baseline finish none → 2015-07-06 10:30 |
| 150 | Agregar | 2015-05-14 08:30 → 2015-03-30 15:30 (-45d) | 2015-05-14 13:30 → 2015-03-31 10:30 (-44d) |  |  | -82.12d → 31d |  | baseline start none → 2015-07-03 11:30; baseline finish none → 2015-07-03 16:30 |
| 151 | Eliminar | 2015-05-14 13:30 → 2015-03-30 15:30 (-45d) | 2015-05-14 14:30 → 2015-03-30 16:30 (-45d) |  |  | -82.12d → 31.33d | 150 → none | baseline start none → 2015-07-03 16:30; baseline finish none → 2015-07-06 08:30 |
| 152 | Cambiar | 2015-05-14 14:30 → 2015-03-30 15:30 (-45d) | 2015-05-14 16:30 → 2015-03-31 08:30 (-44d) |  |  | -82.12d → 31.22d | 151 → none | baseline start none → 2015-07-06 08:30; baseline finish none → 2015-07-06 10:30 |
| 153 | **Sedes** | 2015-05-14 16:30 A → 2015-03-30 15:30 (-45d) | 2015-05-18 16:30 A → 2015-03-31 10:30 (-48d) | 1.78d → 0.44d | 100% → 0% | none → 31d | 149 → none | baseline start none → 2015-07-06 10:30; baseline finish none → 2015-07-08 10:30 |
| 154 | BD | 2015-05-14 16:30 A → 2015-03-30 15:30 (-45d) | 2015-05-15 10:30 A → 2015-03-31 09:30 (-45d) |  | 100% → 0% | none → 31.11d |  | baseline start none → 2015-07-06 10:30; baseline finish none → 2015-07-06 14:30 |
| 155 | Listar | 2015-05-15 10:30 A → 2015-03-30 15:30 (-46d) | 2015-05-15 13:30 A → 2015-03-31 08:30 (-45d) |  | 100% → 0% | none → 31.22d | 154 → none | baseline start none → 2015-07-06 14:30; baseline finish none → 2015-07-06 16:30 |
| 156 | Crear | 2015-05-15 13:30 A → 2015-03-30 15:30 (-46d) | 2015-05-18 08:30 A → 2015-03-31 10:30 (-48d) |  | 100% → 0% | none → 31d | 155 → none | baseline start none → 2015-07-06 16:30; baseline finish none → 2015-07-07 11:30 |
| 157 | Editar | 2015-05-18 08:30 A → 2015-03-30 15:30 (-49d) | 2015-05-18 10:30 A → 2015-03-31 08:30 (-48d) |  | 100% → 0% | none → 31.22d | 156 → none | baseline start none → 2015-07-07 11:30; baseline finish none → 2015-07-07 14:30 |
| 158 | Eliminar | 2015-05-18 10:30 A → 2015-03-30 15:30 (-49d) | 2015-05-18 11:30 A → 2015-03-30 16:30 (-49d) |  | 100% → 0% | none → 31.33d | 157 → none | baseline start none → 2015-07-07 14:30; baseline finish none → 2015-07-07 15:30 |
| 159 | Ubicar en mapa | 2015-05-18 11:30 A → 2015-03-30 15:30 (-49d) | 2015-05-18 16:30 A → 2015-03-31 10:30 (-48d) |  | 100% → 0% | none → 31d | 158 → none | baseline start none → 2015-07-07 15:30; baseline finish none → 2015-07-08 10:30 |
| 160 | **Mis productos** | 2015-05-18 16:30 → 2015-03-30 15:30 (-49d) | 2015-05-21 09:30 → 2015-03-31 09:30 (-51d) | 2d → 0.33d |  | -81.12d → 31.11d | 141 → none | baseline start none → 2015-05-27 15:30; baseline finish none → 2015-06-01 08:30 |
| 161 | Filtro de tipo de producto | 2015-05-18 16:30 → 2015-03-30 15:30 (-49d) | 2015-05-19 09:30 → 2015-03-31 08:30 (-49d) |  |  | -81.68d → 31.22d |  | baseline start none → 2015-05-27 15:30; baseline finish none → 2015-05-28 08:30 |
| 162 | Filtro estado | 2015-05-19 09:30 → 2015-03-30 15:30 (-50d) | 2015-05-19 11:30 → 2015-03-31 08:30 (-49d) |  |  | -81.68d → 31.22d | 161 → none | baseline start none → 2015-05-28 08:30; baseline finish none → 2015-05-28 10:30 |
| 163 | Listado de productos | 2015-05-19 11:30 → 2015-03-30 15:30 (-50d) | 2015-05-19 15:30 → 2015-03-31 09:30 (-49d) |  |  | -81.68d → 31.11d | 162 → none | baseline start none → 2015-05-28 10:30; baseline finish none → 2015-05-28 14:30 |
| 164 | Acceso a datos | 2015-05-19 15:30 → 2015-03-30 15:30 (-50d) | 2015-05-20 08:30 → 2015-03-31 08:30 (-50d) |  |  | -81.68d → 31.22d | 163 → none | baseline start none → 2015-05-28 14:30; baseline finish none → 2015-05-28 16:30 |
| 165 | **Responder preguntas** | 2015-05-20 08:30 → 2015-03-30 15:30 (-51d) | 2015-05-20 15:30 → 2015-03-31 09:30 (-50d) | 0.67d → 0.33d |  | -81.12d → 31.11d | 164 → none | baseline start none → 2015-05-28 16:30; baseline finish none → 2015-05-29 14:30 |
| 166 | Listado de preguntas | 2015-05-20 08:30 → 2015-03-30 15:30 (-51d) | 2015-05-20 11:30 → 2015-03-31 09:30 (-50d) |  |  | -81.68d → 31.11d |  | baseline start none → 2015-05-28 16:30; baseline finish none → 2015-05-29 10:30 |
| 167 | Guardado de datos | 2015-05-20 11:30 → 2015-03-30 15:30 (-51d) | 2015-05-20 14:30 → 2015-03-31 08:30 (-50d) |  |  | -81.68d → 31.22d | 166 → none | baseline start none → 2015-05-29 10:30; baseline finish none → 2015-05-29 13:30 |
| 168 | Enviar notificacion | 2015-05-20 14:30 → 2015-03-30 15:30 (-51d) | 2015-05-20 15:30 → 2015-03-30 16:30 (-51d) |  |  | -81.68d → 31.33d | 167 → none | baseline start none → 2015-05-29 13:30; baseline finish none → 2015-05-29 14:30 |
| 169 | Pruebas unitarias | 2015-05-20 15:30 → 2015-03-30 15:30 (-51d) | 2015-05-21 09:30 → 2015-03-31 09:30 (-51d) |  |  | -81.68d → 31.11d | 165 → none | baseline start none → 2015-05-29 14:30; baseline finish none → 2015-06-01 08:30 |
| 170 | **Mis ventas** | 2015-05-21 09:30 → 2015-03-30 15:30 (-52d) | 2015-05-22 10:30 → 2015-03-31 09:30 (-52d) | 1d → 0.33d |  | -81.12d → 31.11d | 160 → none | baseline start none → 2015-06-01 08:30; baseline finish none → 2015-06-02 09:30 |
| 171 | Listado de productos | 2015-05-21 09:30 → 2015-03-30 15:30 (-52d) | 2015-05-21 13:30 → 2015-03-31 09:30 (-51d) |  |  | -81.68d → 31.11d |  | baseline start none → 2015-06-01 08:30; baseline finish none → 2015-06-01 11:30 |
| 172 | Filtro | 2015-05-21 13:30 → 2015-03-30 15:30 (-52d) | 2015-05-21 15:30 → 2015-03-31 08:30 (-51d) |  |  | -81.68d → 31.22d | 171 → none | baseline start none → 2015-06-01 11:30; baseline finish none → 2015-06-01 14:30 |
| 173 | Acceso a datos | 2015-05-21 15:30 → 2015-03-30 15:30 (-52d) | 2015-05-22 08:30 → 2015-03-31 08:30 (-52d) |  |  | -81.68d → 31.22d | 172 → none | baseline start none → 2015-06-01 14:30; baseline finish none → 2015-06-01 16:30 |
| 174 | Pruebas unitarias | 2015-05-22 08:30 → 2015-03-30 15:30 (-53d) | 2015-05-22 10:30 → 2015-03-31 08:30 (-52d) |  |  | -81.68d → 31.22d | 173 → none | baseline start none → 2015-06-01 16:30; baseline finish none → 2015-06-02 09:30 |
| 175 | **Mis Compras** | 2015-05-22 10:30 → 2015-03-30 15:30 (-53d) | 2015-05-26 16:30 → 2015-03-31 10:30 (-56d) | 2.33d → 0.44d |  | -81.12d → 31d | 170 → none | baseline start none → 2015-06-02 09:30; baseline finish none → 2015-06-04 15:30 |
| 176 | Listado de productos | 2015-05-22 10:30 → 2015-03-30 15:30 (-53d) | 2015-05-22 15:30 → 2015-03-31 10:30 (-52d) |  |  | -81.68d → 31d |  | baseline start none → 2015-06-02 09:30; baseline finish none → 2015-06-02 14:30 |
| 177 | Filtros | 2015-05-22 15:30 → 2015-03-30 15:30 (-53d) | 2015-05-25 09:30 → 2015-03-31 09:30 (-55d) |  |  | -81.68d → 31.11d | 176 → none | baseline start none → 2015-06-02 14:30; baseline finish none → 2015-06-03 08:30 |
| 178 | Paginacion | 2015-05-25 09:30 → 2015-03-30 15:30 (-56d) | 2015-05-25 11:30 → 2015-03-31 08:30 (-55d) |  |  | -81.68d → 31.22d | 177 → none | baseline start none → 2015-06-03 08:30; baseline finish none → 2015-06-03 10:30 |
| 179 | BD | 2015-05-25 11:30 → 2015-03-30 15:30 (-56d) | 2015-05-25 14:30 → 2015-03-31 08:30 (-55d) |  |  | -81.68d → 31.22d | 178 → none | baseline start none → 2015-06-03 10:30; baseline finish none → 2015-06-03 13:30 |
| 180 | **Calificar** | 2015-05-25 14:30 → 2015-03-30 15:30 (-56d) | 2015-05-26 13:30 → 2015-03-31 08:30 (-56d) | 0.78d → 0.22d |  | -81.12d → 31.22d | 179 → none | baseline start none → 2015-06-03 13:30; baseline finish none → 2015-06-04 11:30 |
| 181 | Datos basicos | 2015-05-25 14:30 → 2015-03-30 15:30 (-56d) | 2015-05-25 16:30 → 2015-03-31 08:30 (-55d) |  |  | -81.68d → 31.22d |  | baseline start none → 2015-06-03 13:30; baseline finish none → 2015-06-03 15:30 |
| 182 | BD | 2015-05-25 16:30 → 2015-03-30 15:30 (-56d) | 2015-05-26 09:30 → 2015-03-31 08:30 (-56d) |  |  | -81.68d → 31.22d | 181 → none | baseline start none → 2015-06-03 15:30; baseline finish none → 2015-06-04 08:30 |
| 183 | Guardar | 2015-05-26 09:30 → 2015-03-30 15:30 (-57d) | 2015-05-26 11:30 → 2015-03-31 08:30 (-56d) |  |  | -81.68d → 31.22d | 182 → none | baseline start none → 2015-06-04 08:30; baseline finish none → 2015-06-04 10:30 |
| 184 | Volver a listado | 2015-05-26 11:30 → 2015-03-30 15:30 (-57d) | 2015-05-26 13:30 → 2015-03-30 16:30 (-57d) |  |  | -81.68d → 31.33d | 183 → none | baseline start none → 2015-06-04 10:30; baseline finish none → 2015-06-04 11:30 |
| 185 | Pruebas unitarias | 2015-05-26 13:30 → 2015-03-30 15:30 (-57d) | 2015-05-26 16:30 → 2015-03-31 09:30 (-56d) |  |  | -81.68d → 31.11d | 180 → none | baseline start none → 2015-06-04 11:30; baseline finish none → 2015-06-04 15:30 |
| 186 | **Mensajes Recibidos** | 2015-05-26 16:30 → 2015-03-30 15:30 (-57d) | 2015-05-28 15:30 → 2015-03-31 10:30 (-58d) | 1.67d → 0.44d |  | -81.12d → 31d | 175 → none | baseline start none → 2015-06-04 15:30; baseline finish none → 2015-06-09 14:30 |
| 187 | Listado de mensajes | 2015-05-26 16:30 → 2015-03-30 15:30 (-57d) | 2015-05-27 11:30 → 2015-03-31 10:30 (-57d) |  |  | -81.68d → 31d |  | baseline start none → 2015-06-04 15:30; baseline finish none → 2015-06-05 10:30 |
| 188 | Filtro | 2015-05-27 11:30 → 2015-03-30 15:30 (-58d) | 2015-05-27 14:30 → 2015-03-31 08:30 (-57d) |  |  | -81.68d → 31.22d | 187 → none | baseline start none → 2015-06-05 10:30; baseline finish none → 2015-06-05 13:30 |
| 189 | Cargar hilo de mensajes | 2015-05-27 14:30 → 2015-03-30 15:30 (-58d) | 2015-05-28 09:30 → 2015-03-31 10:30 (-58d) |  |  | -81.68d → 31d | 188 → none | baseline start none → 2015-06-05 13:30; baseline finish none → 2015-06-09 08:30 |
| 190 | Responder mensaje | 2015-05-28 09:30 → 2015-03-30 15:30 (-59d) | 2015-05-28 11:30 → 2015-03-31 08:30 (-58d) |  |  | -81.68d → 31.22d | 189 → none | baseline start none → 2015-06-09 08:30; baseline finish none → 2015-06-09 10:30 |
| 191 | Pruebas unitarias | 2015-05-28 11:30 → 2015-03-30 15:30 (-59d) | 2015-05-28 15:30 → 2015-03-31 09:30 (-58d) |  |  | -81.68d → 31.11d | 190 → none | baseline start none → 2015-06-09 10:30; baseline finish none → 2015-06-09 14:30 |
| 192 | Panel de notificaciones | 2015-05-28 15:30 → 2015-03-30 15:30 (-59d) | 2015-05-29 16:30 → 2015-03-31 16:30 (-59d) |  |  | -81.12d → 30.44d | 186 → none | baseline start none → 2015-06-09 14:30; baseline finish none → 2015-06-10 15:30 |
| 193 | **Registro** | 2015-05-29 16:30 A → 2015-03-30 15:30 A (-60d) | 2015-06-03 13:30 → 2015-05-15 15:30 (-19d) | 2.33d → 27.56d | 65% → 71% | 0d → 3.89d | 127 → none | baseline start none → 2015-05-12 14:30; baseline finish none → 2015-05-15 10:30 |
| 194 | Tipo persona | 2015-05-29 16:30 A → 2015-05-13 09:30 A (-16d) | 2015-06-01 10:30 → 2015-05-13 13:30 (-19d) |  | 20% → 85% | -81.34d → 5.89d |  | baseline start none → 2015-05-12 14:30; baseline finish none → 2015-05-13 08:30 |
| 195 | Datos basicos | 2015-06-01 10:30 A → 2015-05-13 13:30 A (-19d) | 2015-06-01 14:30 A → 2015-05-13 16:30 A (-19d) |  |  |  | 194 → none | baseline start none → 2015-05-13 08:30; baseline finish none → 2015-05-13 11:30 |
| 196 | Guardar datos | 2015-06-01 14:30 A → 2015-05-13 16:30 A (-19d) | 2015-06-02 08:30 A → 2015-05-14 10:30 A (-19d) |  |  |  | 195 → none | baseline start none → 2015-05-13 11:30; baseline finish none → 2015-05-13 15:30 |
| 197 | Enviar correo de confirmacion | 2015-06-02 08:30 → 2015-03-30 15:30 (-64d) | 2015-06-02 09:30 → 2015-03-30 16:30 (-64d) |  |  | -82.12d → 31.33d | 196 → none | baseline start none → 2015-05-13 15:30; baseline finish none → 2015-05-13 16:30 |
| 198 | Pruebas unitarias | 2015-06-02 09:30 A → 2015-05-14 11:30 A (-19d) | 2015-06-02 13:30 A → 2015-05-14 15:30 (-19d) |  | 100% → 80% | none → 4.78d | 197 → none | baseline start none → 2015-05-13 16:30; baseline finish none → 2015-05-14 10:30 |
| 199 | **Registro rapido** | 2015-06-02 13:30 A → 2015-05-14 15:30 A (-19d) | 2015-06-03 13:30 → 2015-05-15 15:30 (-19d) |  |  | 0d → 3.89d | 198 → none | baseline start none → 2015-05-14 10:30; baseline finish none → 2015-05-15 10:30 |
| 200 | Creacion funcionalidad | 2015-06-02 13:30 A → 2015-05-14 15:30 A (-19d) | 2015-06-03 10:30 → 2015-05-15 13:30 (-19d) |  |  | -83.12d → 4.11d |  | baseline start none → 2015-05-14 10:30; baseline finish none → 2015-05-15 08:30 |
| 201 | Llamado en los sitios pendientes | 2015-06-03 10:30 A → 2015-05-15 13:30 A (-19d) | 2015-06-03 13:30 → 2015-05-15 15:30 (-19d) |  |  | -83.34d → 3.89d | 200 → none | baseline start none → 2015-05-15 08:30; baseline finish none → 2015-05-15 10:30 |
| 202 | **Autenticacion** | 2015-06-03 13:30 A → 2015-03-30 15:30 A (-65d) | 2015-06-05 08:30 → 2015-05-20 10:30 (-16d) | 1.33d → 28.89d | 21% → 42% | 0d → 2.56d | 193 → none | baseline start none → 2015-05-15 10:30; baseline finish none → 2015-05-19 15:30 |
| 203 | Datos basicos | 2015-06-03 13:30 → 2015-03-30 15:30 (-65d) | 2015-06-03 16:30 → 2015-03-31 09:30 (-64d) |  |  | -83.34d → 31.11d |  | baseline start none → 2015-05-15 10:30; baseline finish none → 2015-05-15 14:30 |
| 204 | Autenticacion | 2015-06-03 16:30 → 2015-03-30 15:30 (-65d) | 2015-06-04 09:30 → 2015-03-31 08:30 (-65d) |  |  | -83.34d → 31.22d | 203 → none | baseline start none → 2015-05-15 14:30; baseline finish none → 2015-05-15 16:30 |
| 205 | Pruebas unitarias | 2015-06-04 09:30 → 2015-03-30 15:30 (-66d) | 2015-06-04 11:30 → 2015-03-31 08:30 (-65d) |  |  | -83.34d → 31.22d | 204 → none | baseline start none → 2015-05-15 16:30; baseline finish none → 2015-05-19 09:30 |
| 206 | **Autenticacion Rapida** | 2015-06-04 11:30 A → 2015-05-19 14:30 A (-16d) | 2015-06-05 08:30 → 2015-05-20 10:30 A (-16d) |  | 50% → 100% | 0d → none | 205 → none | baseline start none → 2015-05-19 09:30; baseline finish none → 2015-05-19 15:30 |
| 207 | Crear funcionalidad | 2015-06-04 11:30 A → 2015-05-19 14:30 A (-16d) | 2015-06-04 15:30 → 2015-05-20 08:30 A (-15d) |  | 50% → 100% | -83.68d → none |  | baseline start none → 2015-05-19 09:30; baseline finish none → 2015-05-19 13:30 |
| 208 | Llamado en los sitios pendientes | 2015-06-04 15:30 A → 2015-05-20 08:30 A (-15d) | 2015-06-05 08:30 → 2015-05-20 10:30 A (-16d) |  | 50% → 100% | 0d → none | 207 → none | baseline start none → 2015-05-19 13:30; baseline finish none → 2015-05-19 15:30 |
| 209 | **Recordar Clave** | 2015-06-05 08:30 → 2015-03-30 15:30 (-67d) | 2015-06-05 11:30 → 2015-03-31 08:30 (-66d) | 0.33d → 0.22d |  | -83.9d → 31.22d | 202 → none | baseline start none → 2015-05-19 15:30; baseline finish none → 2015-05-20 09:30 |
| 210 | Revisar funcionalidad | 2015-06-05 08:30 → 2015-03-30 15:30 (-67d) | 2015-06-05 10:30 → 2015-03-31 08:30 (-66d) |  |  | -83.9d → 31.22d |  | baseline start none → 2015-05-19 15:30; baseline finish none → 2015-05-20 08:30 |

| ID | Task | Start | Finish | Duration | Total float | Predecessors | Other |
| --- | --- | --- | --- | --- | --- | --- | --- |
| 211 | Enviar correo | 2015-06-05 10:30 → 2015-03-30 15:30 (-67d) | 2015-06-05 11:30 → 2015-03-30 16:30 (-67d) |  | -83.9d → 31.33d | 210 → none | baseline start none → 2015-05-20 08:30; baseline finish none → 2015-05-20 09:30 |
| 212 | **Listado de productos** | 2015-06-05 11:30 → 2015-03-30 15:30 (-67d) | 2015-06-09 16:30 → 2015-04-01 15:30 (-69d) | 2.22d → 1.78d | -83.9d → 29.67d | 209 → none | baseline start none → 2015-04-24 15:30; baseline finish none → 2015-04-29 10:30 |
| 213 | Listado de productos | 2015-06-05 11:30 → 2015-03-30 15:30 (-67d) | 2015-06-05 16:30 → 2015-03-31 10:30 (-66d) |  | -83.9d → 31d |  | baseline start none → 2015-04-24 15:30; baseline finish none → 2015-04-27 10:30 |
| 214 | Mejorar filtrado | 2015-06-05 16:30 → 2015-03-30 15:30 (-67d) | 2015-06-09 16:30 → 2015-04-01 15:30 (-69d) |  | -83.9d → 29.67d | 213 → none | baseline start none → 2015-04-27 10:30; baseline finish none → 2015-04-29 10:30 |
| 215 | **Detalle del Producto** | 2015-06-09 16:30 → 2015-03-30 15:30 (-71d) | 2015-06-15 08:30 → 2015-03-31 10:30 (-76d) | 2.78d → 0.44d | -83.9d → 31d | 212 → none | baseline start none → 2015-04-29 10:30; baseline finish none → 2015-05-05 11:30 |
| 216 | Revision de links y carga de info | 2015-06-09 16:30 → 2015-03-30 15:30 (-71d) | 2015-06-10 11:30 → 2015-03-31 10:30 (-71d) |  | -83.9d → 31d |  | baseline start none → 2015-04-29 10:30; baseline finish none → 2015-04-29 15:30 |
| 217 | Comprar y notificar | 2015-06-10 11:30 → 2015-03-30 15:30 (-72d) | 2015-06-10 15:30 → 2015-03-31 09:30 (-71d) |  | -83.9d → 31.11d | 216 → none | baseline start none → 2015-04-29 15:30; baseline finish none → 2015-04-30 09:30 |
| 218 | **Pestaña detalle de producto** | 2015-06-10 15:30 → 2015-03-30 15:30 (-72d) | 2015-06-11 13:30 → 2015-03-31 10:30 (-72d) | 0.67d → 0.44d | -83.9d → 31d | 217 → none | baseline start none → 2015-04-30 09:30; baseline finish none → 2015-04-30 16:30 |
| 219 | Cargar caracteristcas | 2015-06-10 15:30 → 2015-03-30 15:30 (-72d) | 2015-06-11 08:30 → 2015-03-31 08:30 (-72d) |  | -83.9d → 31.22d |  | baseline start none → 2015-04-30 09:30; baseline finish none → 2015-04-30 11:30 |
| 220 | Cargar HTML | 2015-06-11 08:30 → 2015-03-30 15:30 (-73d) | 2015-06-11 13:30 → 2015-03-31 10:30 (-72d) |  | -83.9d → 31d | 219 → none | baseline start none → 2015-04-30 11:30; baseline finish none → 2015-04-30 16:30 |
| 221 | **Pestaña reviews** | 2015-06-11 13:30 → 2015-03-30 15:30 (-73d) | 2015-06-11 15:30 → 2015-03-30 16:30 (-73d) | 0.22d → 0.11d | -83.9d → 31.33d | 218 → none | baseline start none → 2015-04-30 16:30; baseline finish none → 2015-05-04 09:30 |
| 222 | Cargar Reviews | 2015-06-11 13:30 → 2015-03-30 15:30 (-73d) | 2015-06-11 14:30 → 2015-03-30 16:30 (-73d) |  | -83.9d → 31.33d |  | baseline start none → 2015-04-30 16:30; baseline finish none → 2015-05-04 08:30 |
| 223 | Quitar parcialmente opcion de nuevo review | 2015-06-11 14:30 → 2015-03-30 15:30 (-73d) | 2015-06-11 15:30 → 2015-03-30 16:30 (-73d) |  | -83.9d → 31.33d | 222 → none | baseline start none → 2015-05-04 08:30; baseline finish none → 2015-05-04 09:30 |
| 224 | Quitar pestaña envios | 2015-06-11 15:30 → 2015-03-30 15:30 (-73d) | 2015-06-11 16:00 → 2015-03-30 16:00 (-73d) |  | -83.9d → 31.39d | 221 → none | baseline start none → 2015-05-04 09:30; baseline finish none → 2015-05-04 10:00 |
| 225 | Quitar pestaña price match | 2015-06-11 16:00 → 2015-03-30 15:30 (-73d) | 2015-06-11 16:30 → 2015-03-30 16:00 (-73d) |  | -83.9d → 31.39d | 224 → none | baseline start none → 2015-05-04 10:00; baseline finish none → 2015-05-04 10:30 |
| 226 | **Preguntas** | 2015-06-11 16:30 → 2015-03-30 15:30 (-73d) | 2015-06-15 08:30 → 2015-03-31 10:30 (-76d) | 1d → 0.44d | -83.9d → 31d | 225 → none | baseline start none → 2015-05-04 10:30; baseline finish none → 2015-05-05 11:30 |
| 227 | BD | 2015-06-11 16:30 → 2015-03-30 15:30 (-73d) | 2015-06-12 09:30 → 2015-03-31 08:30 (-73d) |  | -83.9d → 31.22d |  | baseline start none → 2015-05-04 10:30; baseline finish none → 2015-05-04 13:30 |
| 228 | Listar preguntas | 2015-06-12 09:30 → 2015-03-30 15:30 (-74d) | 2015-06-12 14:30 → 2015-03-31 10:30 (-73d) |  | -83.9d → 31d | 227 → none | baseline start none → 2015-05-04 13:30; baseline finish none → 2015-05-05 08:30 |
| 229 | Agregar preguntas | 2015-06-12 14:30 → 2015-03-30 15:30 (-74d) | 2015-06-15 08:30 → 2015-03-31 09:30 (-76d) |  | -83.9d → 31.11d | 228 → none | baseline start none → 2015-05-05 08:30; baseline finish none → 2015-05-05 11:30 |
| 230 | **Home** | 2015-06-15 08:30 → 2015-03-30 15:30 (-77d) | 2015-06-22 10:30 → 2015-04-01 08:30 (-82d) | 4.67d → 1.11d | -83.9d → 30.33d | 215 → none | baseline start none → 2015-05-05 11:30; baseline finish none → 2015-05-12 14:30 |
| 231 | Menu de categorias | 2015-06-15 08:30 → 2015-03-30 15:30 (-77d) | 2015-06-16 10:30 → 2015-04-01 08:30 (-76d) |  | -83.9d → 30.33d |  | baseline start none → 2015-05-05 11:30; baseline finish none → 2015-05-06 14:30 |
| 232 | Menu principal | 2015-06-16 10:30 → 2015-03-30 15:30 (-78d) | 2015-06-17 13:30 → 2015-04-01 08:30 (-77d) |  | -83.9d → 30.33d | 231 → none | baseline start none → 2015-05-06 14:30; baseline finish none → 2015-05-07 16:30 |
| 233 | Ajustes generales | 2015-06-17 13:30 → 2015-03-30 15:30 (-79d) | 2015-06-18 08:30 → 2015-03-31 10:30 (-79d) |  | -83.9d → 31d | 232 → none | baseline start none → 2015-05-07 16:30; baseline finish none → 2015-05-08 11:30 |
| 234 | Revision de Buscador | 2015-06-18 08:30 → 2015-03-30 15:30 (-80d) | 2015-06-19 10:30 → 2015-04-01 08:30 (-79d) |  | -83.9d → 30.33d | 233 → none | baseline start none → 2015-05-08 11:30; baseline finish none → 2015-05-11 14:30 |
| 235 | Eliminación funcionalidades innecesarias | 2015-06-19 10:30 → 2015-03-30 15:30 (-81d) | 2015-06-19 15:30 → 2015-03-31 10:30 (-80d) |  | -83.9d → 31d | 234 → none | baseline start none → 2015-05-11 14:30; baseline finish none → 2015-05-12 09:30 |
| 236 | Pruebas unitarias | 2015-06-19 15:30 → 2015-03-30 15:30 (-81d) | 2015-06-22 10:30 → 2015-03-31 10:30 (-83d) |  | -83.9d → 31d | 235 → none | baseline start none → 2015-05-12 09:30; baseline finish none → 2015-05-12 14:30 |
| 237 | Mapa del sitio | 2015-06-22 10:30 → 2015-03-30 15:30 (-84d) | 2015-06-22 13:30 → 2015-03-31 08:30 (-83d) |  | -83.9d → 31.22d | 230 → none | baseline start none → 2015-06-10 15:30; baseline finish none → 2015-06-11 08:30 |
| 238 | Condiciones de uso | 2015-06-22 13:30 → 2015-03-30 15:30 (-84d) | 2015-06-22 14:30 → 2015-03-30 16:30 (-84d) |  | -83.9d → 31.33d | 237 → none | baseline start none → 2015-06-11 08:30; baseline finish none → 2015-06-11 09:30 |
| 239 | Contacto | 2015-06-22 14:30 → 2015-03-30 15:30 (-84d) | 2015-06-23 09:30 → 2015-03-31 10:30 (-84d) |  | -83.9d → 31d | 238 → none | baseline start none → 2015-06-11 09:30; baseline finish none → 2015-06-11 14:30 |
| 240 | Acerca de nosotros | 2015-06-23 09:30 → 2015-03-30 15:30 (-85d) | 2015-06-23 11:30 → 2015-03-31 08:30 (-84d) |  | -83.9d → 31.22d | 239 → none | baseline start none → 2015-06-11 14:30; baseline finish none → 2015-06-11 16:30 |
| 241 | Ajustes adicionales | 2015-06-23 11:30 → 2015-03-30 15:30 (-85d) | 2015-06-26 15:30 → 2015-04-07 09:30 (-80d) |  | -83.9d → 28.44d | 240 → none | baseline start none → 2015-06-11 16:30; baseline finish none → 2015-06-18 10:30 |
| 242 | **Diseño Web** |  | 2015-05-14 08:10 → 2015-05-25 09:30 (+11d) | 28.63d → 31.44d | -47.64d → 0d | 2 → none | baseline start none → 2015-03-27 15:30; baseline finish none → 2015-05-22 09:30 |
| 243 | Visuales |  |  |  | -47.64d → 0d |  | baseline start none → 2015-03-27 15:30; baseline finish none → 2015-03-30 16:30 |
| 244 | Home |  | 2015-04-02 08:30 → 2015-04-06 08:30 (+4d) |  | -47.64d → 0d |  | baseline start none → 2015-03-30 16:30; baseline finish none → 2015-04-01 08:30 |
| 245 | **Panel de Control** | 2015-04-02 08:30 → 2015-04-06 08:30 (+4d) | 2015-04-24 13:10 → 2015-04-30 13:30 (+6d) | 14.63d → 16.44d | -47.64d → 0d |  | baseline start none → 2015-04-01 08:30; baseline finish none → 2015-04-29 13:30 |
| 246 | **Publicacion Producto** | 2015-04-02 08:30 → 2015-04-06 08:30 (+4d) | 2015-04-07 09:22 → 2015-04-09 13:30 (+2d) | 2.76d → 3.11d | -47.64d → 0d |  | baseline start none → 2015-04-09 08:30; baseline finish none → 2015-04-14 13:30 |
| 247 | Paso1 | 2015-04-02 08:30 → 2015-04-06 08:30 (+4d) | 2015-04-02 13:01 → 2015-04-06 13:30 (+4d) | 0.39d → 0.44d | -47.64d → 0d |  | baseline start none → 2015-04-09 08:30; baseline finish none → 2015-04-09 13:30 |
| 248 | Paso2 | 2015-04-02 13:01 → 2015-04-06 13:30 (+4d) | 2015-04-03 11:08 → 2015-04-07 13:30 (+4d) | 0.79d → 0.89d | -47.64d → 0d |  | baseline start none → 2015-04-09 13:30; baseline finish none → 2015-04-10 13:30 |
| 249 | Paso3 | 2015-04-03 11:08 → 2015-04-07 13:30 (+4d) | 2015-04-06 10:15 → 2015-04-08 13:30 (+2d) | 0.79d → 0.89d | -47.64d → 0d |  | baseline start none → 2015-04-10 13:30; baseline finish none → 2015-04-13 13:30 |
| 250 | Paso4 | 2015-04-06 10:15 → 2015-04-08 13:30 (+2d) | 2015-04-07 09:22 → 2015-04-09 13:30 (+2d) | 0.79d → 0.89d | -47.64d → 0d |  | baseline start none → 2015-04-13 13:30; baseline finish none → 2015-04-14 13:30 |
| 251 | Home Panel De Control | 2015-04-07 09:22 → 2015-04-09 13:30 (+2d) | 2015-04-08 08:30 → 2015-04-10 13:30 (+2d) | 0.79d → 0.89d | -47.64d → 0d |  | baseline start none → 2015-04-01 08:30; baseline finish none → 2015-04-06 08:30 |
| 252 | **Publicacion Moto** | 2015-04-08 08:30 → 2015-04-10 13:30 (+2d) | 2015-04-13 13:58 → 2015-04-16 13:30 (+3d) | 3.16d → 3.56d | -47.64d → 0d |  | baseline start none → 2015-04-14 13:30; baseline finish none → 2015-04-20 13:30 |
| 253 | Paso1 | 2015-04-08 08:30 → 2015-04-10 13:30 (+2d) | 2015-04-08 16:37 → 2015-04-13 13:30 (+5d) | 0.79d → 0.89d | -47.64d → 0d |  | baseline start none → 2015-04-14 13:30; baseline finish none → 2015-04-15 13:30 |
| 254 | Paso2 | 2015-04-08 16:37 → 2015-04-13 13:30 (+5d) | 2015-04-09 15:44 → 2015-04-14 13:30 (+5d) | 0.79d → 0.89d | -47.64d → 0d |  | baseline start none → 2015-04-15 13:30; baseline finish none → 2015-04-16 13:30 |
| 255 | Paso3 | 2015-04-09 15:44 → 2015-04-14 13:30 (+5d) | 2015-04-10 14:51 → 2015-04-15 13:30 (+5d) | 0.79d → 0.89d | -47.64d → 0d |  | baseline start none → 2015-04-16 13:30; baseline finish none → 2015-04-17 13:30 |
| 256 | Paso4 | 2015-04-10 14:51 → 2015-04-15 13:30 (+5d) | 2015-04-13 13:58 → 2015-04-16 13:30 (+3d) | 0.79d → 0.89d | -47.64d → 0d |  | baseline start none → 2015-04-17 13:30; baseline finish none → 2015-04-20 13:30 |
| 257 | Actualizacion de datos | 2015-04-13 13:58 → 2015-04-16 13:30 (+3d) | 2015-04-14 13:06 → 2015-04-17 13:30 (+3d) | 0.79d → 0.89d | -47.64d → 0d |  | baseline start none → 2015-04-06 08:30; baseline finish none → 2015-04-07 08:30 |
| 258 | Cambiar Clave | 2015-04-14 13:06 → 2015-04-17 13:30 (+3d) | 2015-04-15 11:13 → 2015-04-20 13:30 (+5d) | 0.79d → 0.89d | -47.64d → 0d |  | baseline start none → 2015-04-07 08:30; baseline finish none → 2015-04-08 08:30 |
| 259 | Seleccionar tipo de producto | 2015-04-15 11:13 → 2015-04-20 13:30 (+5d) | 2015-04-16 10:20 → 2015-04-21 13:30 (+5d) | 0.79d → 0.89d | -47.64d → 0d |  | baseline start none → 2015-04-08 08:30; baseline finish none → 2015-04-09 08:30 |
| 260 | Mensajes Recibidos | 2015-04-16 10:20 → 2015-04-21 13:30 (+5d) | 2015-04-17 09:27 → 2015-04-22 13:30 (+5d) | 0.79d → 0.89d | -47.64d → 0d |  | baseline start none → 2015-04-20 13:30; baseline finish none → 2015-04-21 13:30 |
| 261 | Mis Compras | 2015-04-17 09:27 → 2015-04-22 13:30 (+5d) | 2015-04-20 08:34 → 2015-04-23 13:30 (+3d) | 0.79d → 0.89d | -47.64d → 0d |  | baseline start none → 2015-04-21 13:30; baseline finish none → 2015-04-22 13:30 |
| 262 | Calificar | 2015-04-20 08:34 → 2015-04-23 13:30 (+3d) | 2015-04-20 16:42 → 2015-04-24 13:30 (+4d) | 0.79d → 0.89d | -47.64d → 0d |  | baseline start none → 2015-04-22 13:30; baseline finish none → 2015-04-23 13:30 |
| 263 | Mis Ventas | 2015-04-20 16:42 → 2015-04-24 13:30 (+4d) | 2015-04-21 15:49 → 2015-04-27 13:30 (+6d) | 0.79d → 0.89d | -47.64d → 0d |  | baseline start none → 2015-04-23 13:30; baseline finish none → 2015-04-24 13:30 |
| 264 | Mis Productos | 2015-04-21 15:49 → 2015-04-27 13:30 (+6d) | 2015-04-22 14:56 → 2015-04-28 13:30 (+6d) | 0.79d → 0.89d | -47.64d → 0d |  | baseline start none → 2015-04-24 13:30; baseline finish none → 2015-04-27 13:30 |
| 265 | Responder Preguntas | 2015-04-22 14:56 → 2015-04-28 13:30 (+6d) | 2015-04-23 14:03 → 2015-04-29 13:30 (+6d) | 0.79d → 0.89d | -47.64d → 0d |  | baseline start none → 2015-04-27 13:30; baseline finish none → 2015-04-28 13:30 |
| 266 | Mis Datos | 2015-04-23 14:03 → 2015-04-29 13:30 (+6d) | 2015-04-24 13:10 → 2015-04-30 13:30 (+6d) | 0.79d → 0.89d | -47.64d → 0d |  | baseline start none → 2015-04-28 13:30; baseline finish none → 2015-04-29 13:30 |
| 267 | Registro | 2015-04-24 13:10 → 2015-04-30 13:30 (+6d) | 2015-04-27 14:10 → 2015-05-04 14:30 (+7d) |  | -47.64d → 0d |  | baseline start none → 2015-04-29 13:30; baseline finish none → 2015-04-30 14:30 |
| 268 | Autenticacion | 2015-04-27 14:10 → 2015-05-04 14:30 (+7d) | 2015-04-28 15:10 → 2015-05-05 15:30 (+7d) |  | -47.64d → 0d |  | baseline start none → 2015-04-30 14:30; baseline finish none → 2015-05-04 15:30 |
| 269 | Recordar Clave | 2015-04-28 15:10 → 2015-05-05 15:30 (+7d) | 2015-04-29 16:10 → 2015-05-06 16:30 (+7d) |  | -47.64d → 0d |  | baseline start none → 2015-05-04 15:30; baseline finish none → 2015-05-05 16:30 |
| 270 | Listado de productos | 2015-04-29 16:10 → 2015-05-06 16:30 (+7d) | 2015-05-01 08:10 → 2015-05-08 08:30 (+7d) |  | -47.64d → 0d |  | baseline start none → 2015-05-05 16:30; baseline finish none → 2015-05-07 08:30 |
| 271 | Detalle del producto | 2015-05-01 08:10 → 2015-05-08 08:30 (+7d) | 2015-05-04 08:10 → 2015-05-11 09:30 (+7d) | 0.89d → 1d | -47.64d → 0d |  | baseline start none → 2015-05-07 08:30; baseline finish none → 2015-05-08 09:30 |
| 272 | Detalle vendedor usuario | 2015-05-04 08:10 → 2015-05-11 09:30 (+7d) | 2015-05-05 08:10 → 2015-05-12 10:30 (+7d) | 0.89d → 1d | -47.64d → 0d |  | baseline start none → 2015-05-08 09:30; baseline finish none → 2015-05-11 10:30 |
| 273 | Preguntar a Vendedor | 2015-05-05 08:10 → 2015-05-12 10:30 (+7d) | 2015-05-06 08:10 → 2015-05-13 11:30 (+7d) | 0.89d → 1d | -47.64d → 0d |  | baseline start none → 2015-05-11 10:30; baseline finish none → 2015-05-12 11:30 |
| 274 | Panel de notificaciones | 2015-05-06 08:10 → 2015-05-13 11:30 (+7d) | 2015-05-07 08:10 → 2015-05-14 13:30 (+7d) | 0.89d → 1d | -47.64d → 0d |  | baseline start none → 2015-05-12 11:30; baseline finish none → 2015-05-13 13:30 |
| 275 | Newsletter | 2015-05-07 08:10 → 2015-05-14 13:30 (+7d) | 2015-05-08 08:10 → 2015-05-15 14:30 (+7d) | 0.89d → 1d | -47.64d → 0d |  | baseline start none → 2015-05-13 13:30; baseline finish none → 2015-05-14 14:30 |
| 276 | Mapa del sitio | 2015-05-08 08:10 → 2015-05-15 14:30 (+7d) | 2015-05-11 08:10 → 2015-05-19 15:30 (+8d) | 0.89d → 1d | -47.64d → 0d |  | baseline start none → 2015-05-14 14:30; baseline finish none → 2015-05-15 15:30 |
| 277 | Condiciones de uso | 2015-05-11 08:10 → 2015-05-19 15:30 (+8d) | 2015-05-12 08:10 → 2015-05-20 16:30 (+8d) | 0.89d → 1d | -47.64d → 0d |  | baseline start none → 2015-05-15 15:30; baseline finish none → 2015-05-19 16:30 |
| 278 | Contacto | 2015-05-12 08:10 → 2015-05-20 16:30 (+8d) | 2015-05-13 08:10 → 2015-05-22 08:30 (+9d) | 0.89d → 1d | -47.64d → 0d |  | baseline start none → 2015-05-19 16:30; baseline finish none → 2015-05-21 08:30 |
| 279 | Acerca de nosotros | 2015-05-13 08:10 → 2015-05-22 08:30 (+9d) | 2015-05-14 08:10 → 2015-05-25 09:30 (+11d) | 0.89d → 1d | -47.64d → 0d |  | baseline start none → 2015-05-21 08:30; baseline finish none → 2015-05-22 09:30 |
| 280 | **Pruebas** | 2015-06-26 15:30 → 2015-03-30 15:30 (-88d) | 2015-07-06 15:30 → 2015-04-07 09:30 (-90d) | 5.33d → 3d | -83.9d → 28.44d | 12 → none | baseline start none → 2015-06-11 16:30; baseline finish none → 2015-06-30 08:30 |

| ID | Task | Start | Finish | Duration | Total float | Predecessors | Other |
| --- | --- | --- | --- | --- | --- | --- | --- |
| 281 | Pruebas Generales | 2015-06-26 15:30 → 2015-03-30 15:30 (-88d) | 2015-07-01 15:30 → 2015-04-07 09:30 (-85d) | 2.67d → 3d | -83.9d → 28.44d |  | baseline start none → 2015-06-11 16:30; baseline finish none → 2015-06-18 10:30 |
| 282 | Correciones | 2015-07-01 15:30 → 2015-03-30 15:30 (-93d) | 2015-07-06 15:30 → 2015-04-07 09:30 (-90d) | 2.67d → 3d | -83.9d → 28.44d | 281 → none | baseline start none → 2015-06-18 10:30; baseline finish none → 2015-06-23 14:30 |
| 283 | Primeras visitas cliente | 2015-07-06 15:30 → 2015-03-30 15:30 (-98d) | 2015-07-09 15:30 → 2015-04-07 09:30 (-93d) | 2.67d → 3d | -83.9d → 28.44d | 280 → none | baseline start none → 2015-06-23 14:30; baseline finish none → 2015-06-30 08:30 |
| 284 | **Fase 2 (Tienda)** | 2015-07-09 15:30 → 2015-03-24 08:00 (-107d) | 2015-07-17 16:51 → 2015-03-26 17:00 (-113d) | 5.48d → 2.67d | -83.9d → 33.06d | 11 → none | baseline start none → 2015-06-30 08:30; baseline finish none → 2015-07-23 09:30 |
| 285 | **Desarrollo** | 2015-07-09 15:30 → 2015-03-24 08:00 (-107d) | 2015-07-15 10:30 → 2015-03-24 14:00 (-113d) | 3.11d → 0.56d | -83.9d → 35.17d |  | baseline start none → 2015-06-30 08:30; baseline finish none → 2015-07-14 09:30 |
| 286 | **Detalle del Vendedor (Usuario)** | 2015-07-09 15:30 → 2015-03-24 08:00 (-107d) | 2015-07-14 13:30 → 2015-03-24 14:00 (-112d) | 2.44d → 0.56d | -83.9d → 35.17d |  | baseline start none → 2015-05-20 09:30; baseline finish none → 2015-05-22 16:30 |
| 287 | Acceso a datos | 2015-07-09 15:30 → 2015-03-24 08:00 (-107d) | 2015-07-10 10:30 → 2015-03-24 12:00 (-108d) |  | -83.9d → 35.28d |  | baseline start none → 2015-05-20 09:30; baseline finish none → 2015-05-20 14:30 |
| 288 | Informacion Básica | 2015-07-10 10:30 → 2015-03-24 08:00 (-108d) | 2015-07-10 14:30 → 2015-03-24 11:00 (-108d) |  | -83.9d → 35.39d | 287 → none | baseline start none → 2015-05-20 14:30; baseline finish none → 2015-05-21 08:30 |
| 289 | Comentarios Recibidos | 2015-07-10 14:30 → 2015-03-24 08:00 (-108d) | 2015-07-13 08:30 → 2015-03-24 11:00 (-111d) |  | -83.9d → 35.39d | 288 → none | baseline start none → 2015-05-21 08:30; baseline finish none → 2015-05-21 11:30 |
| 290 | Enviar mensaje prviado | 2015-07-13 08:30 → 2015-03-24 08:00 (-111d) | 2015-07-13 14:30 → 2015-03-24 14:00 (-111d) |  | -83.9d → 35.17d | 289 → none | baseline start none → 2015-05-21 11:30; baseline finish none → 2015-05-22 08:30 |
| 291 | Contar experiencia | 2015-07-13 14:30 → 2015-03-24 08:00 (-111d) | 2015-07-14 10:30 → 2015-03-24 14:00 (-112d) |  | -83.9d → 35.17d | 290 → none | baseline start none → 2015-05-22 08:30; baseline finish none → 2015-05-22 14:30 |
| 292 | Enviar correos de notificación | 2015-07-14 10:30 → 2015-03-24 08:00 (-112d) | 2015-07-14 13:30 → 2015-03-24 10:00 (-112d) |  | -83.9d → 35.5d | 291 → none | baseline start none → 2015-05-22 14:30; baseline finish none → 2015-05-22 16:30 |
| 293 | **Categorias** | 2015-07-14 13:30 → 2015-03-24 08:00 (-112d) | 2015-07-15 10:30 → 2015-03-24 11:00 (-113d) | 0.67d → 0.33d | -83.9d → 35.39d | 286 → none | baseline start none → 2015-06-30 08:30; baseline finish none → 2015-06-30 15:30 |
| 294 | Revision de funcionalidad correcta | 2015-07-14 13:30 → 2015-03-24 08:00 (-112d) | 2015-07-14 16:30 → 2015-03-24 11:00 (-112d) |  | -83.9d → 35.39d |  | baseline start none → 2015-06-30 08:30; baseline finish none → 2015-06-30 11:30 |
| 295 | Pruebas unitarias | 2015-07-14 16:30 → 2015-03-24 08:00 (-112d) | 2015-07-15 10:30 → 2015-03-24 11:00 (-113d) |  | -83.9d → 35.39d | 294 → none | baseline start none → 2015-06-30 11:30; baseline finish none → 2015-06-30 15:30 |
| 296 | **Diseño Web** | 2015-07-09 15:30 → 2015-03-24 08:00 (-107d) | 2015-07-14 11:51 → 2015-03-24 17:00 (-112d) | 2.37d → 0.89d | -83.16d → 34.83d | 11 → none | baseline start none → 2015-06-30 08:30; baseline finish none → 2015-07-03 08:30 |
| 297 | Categorias | 2015-07-09 15:30 → 2015-03-24 08:00 (-107d) | 2015-07-10 14:37 → 2015-03-24 17:00 (-108d) | 0.79d → 0.89d | -83.16d → 34.83d |  | baseline start none → 2015-06-30 08:30; baseline finish none → 2015-07-01 08:30 |
| 298 | Detalle Tienda | 2015-07-10 14:37 → 2015-03-24 08:00 (-108d) | 2015-07-13 13:44 → 2015-03-24 17:00 (-111d) | 0.79d → 0.89d | -83.16d → 34.83d | 297 → none | baseline start none → 2015-07-01 08:30; baseline finish none → 2015-07-02 08:30 |
| 299 | Actualizacion de Tienda | 2015-07-13 13:44 → 2015-03-24 08:00 (-111d) | 2015-07-14 11:51 → 2015-03-24 17:00 (-112d) | 0.79d → 0.89d | -83.16d → 34.83d | 298 → none | baseline start none → 2015-07-02 08:30; baseline finish none → 2015-07-03 08:30 |
| 300 | Pruebas Generales | 2015-07-14 11:51 → 2015-03-24 08:00 (-112d) | 2015-07-17 09:13 → 2015-03-26 17:00 (-113d) | 2.37d → 2.67d | -83.16d → 33.06d | 296 → none | baseline start none → 2015-07-14 09:30; baseline finish none → 2015-07-17 09:30 |
| 301 | Correciones | 2015-07-15 10:30 → 2015-03-24 08:00 (-113d) | 2015-07-17 16:51 → 2015-03-26 17:00 (-113d) | 2.37d → 2.67d | -83.9d → 33.06d | 285 → none | baseline start none → 2015-07-17 09:30; baseline finish none → 2015-07-23 09:30 |
| 302 | **Fase 3 (Cotizaciones)** | 2015-07-17 16:51 → 2015-03-24 08:00 (-115d) | 2015-08-11 11:04 → 2015-03-26 17:00 (-138d) | 14.58d → 2.67d | -83.9d → 33.06d | 284 → none | baseline start none → 2015-07-23 09:30; baseline finish none → 2015-08-26 16:00 |
| 303 | **Desarrollo** | 2015-07-17 16:51 → 2015-03-24 08:00 (-115d) | 2015-08-04 08:21 → 2015-03-24 14:00 (-133d) | 9.83d → 0.56d | -83.9d → 35.17d |  | baseline start none → 2015-07-23 09:30; baseline finish none → 2015-08-18 16:00 |
| 304 | **Publicar Cotizacion** | 2015-07-17 16:51 → 2015-03-24 08:00 (-115d) | 2015-07-22 11:21 → 2015-03-24 12:00 (-120d) | 2.17d → 0.44d | -83.9d → 35.28d |  | baseline start none → 2015-07-30 15:30; baseline finish none → 2015-08-04 10:00 |
| 305 | BD | 2015-07-17 16:51 → 2015-03-24 08:00 (-115d) | 2015-07-20 10:51 → 2015-03-24 11:00 (-118d) |  | -83.9d → 35.39d |  | baseline start none → 2015-07-30 15:30; baseline finish none → 2015-07-31 09:30 |
| 306 | Datos basicos | 2015-07-20 10:51 → 2015-03-24 08:00 (-118d) | 2015-07-20 14:51 → 2015-03-24 11:00 (-118d) |  | -83.9d → 35.39d | 305 → none | baseline start none → 2015-07-31 09:30; baseline finish none → 2015-07-31 13:30 |
| 307 | Cambiar ubicacion | 2015-07-20 14:51 → 2015-03-24 08:00 (-118d) | 2015-07-20 16:51 → 2015-03-24 10:00 (-118d) |  | -83.9d → 35.5d | 306 → none | baseline start none → 2015-07-31 13:30; baseline finish none → 2015-07-31 15:30 |
| 308 | Cambiar moto | 2015-07-20 16:51 → 2015-03-24 08:00 (-118d) | 2015-07-21 10:51 → 2015-03-24 11:00 (-119d) |  | -83.9d → 35.39d | 307 → none | baseline start none → 2015-07-31 15:30; baseline finish none → 2015-08-03 09:30 |
| 309 | Cargar posibles problemas | 2015-07-21 10:51 → 2015-03-24 08:00 (-119d) | 2015-07-21 15:51 → 2015-03-24 12:00 (-119d) |  | -83.9d → 35.28d | 308 → none | baseline start none → 2015-08-03 09:30; baseline finish none → 2015-08-03 14:30 |
| 310 | Cargar imagenes | 2015-07-21 15:51 → 2015-03-24 08:00 (-119d) | 2015-07-22 08:21 → 2015-03-24 09:30 (-120d) |  | -83.9d → 35.56d | 309 → none | baseline start none → 2015-08-03 14:30; baseline finish none → 2015-08-03 16:00 |
| 311 | Pruebas unitarias | 2015-07-22 08:21 → 2015-03-24 08:00 (-120d) | 2015-07-22 11:21 → 2015-03-24 11:00 (-120d) |  | -83.9d → 35.39d | 310 → none | baseline start none → 2015-08-03 16:00; baseline finish none → 2015-08-04 10:00 |
| 312 | **Mis Cotizaciones (Taller)** | 2015-07-22 11:21 → 2015-03-24 08:00 (-120d) | 2015-07-24 13:21 → 2015-03-24 14:00 (-122d) | 1.89d → 0.56d | -83.9d → 35.17d | 304 → none | baseline start none → 2015-08-04 10:00; baseline finish none → 2015-08-06 11:00 |
| 313 | Mostrar indicadores | 2015-07-22 11:21 → 2015-03-24 08:00 (-120d) | 2015-07-22 15:21 → 2015-03-24 11:00 (-120d) |  | -83.9d → 35.39d |  | baseline start none → 2015-08-04 10:00; baseline finish none → 2015-08-04 14:00 |
| 314 | Cargar filtros | 2015-07-22 15:21 → 2015-03-24 08:00 (-120d) | 2015-07-23 11:21 → 2015-03-24 14:00 (-121d) |  | -83.9d → 35.17d | 313 → none | baseline start none → 2015-08-04 14:00; baseline finish none → 2015-08-05 10:00 |
| 315 | Listado de cotizaciones | 2015-07-23 11:21 → 2015-03-24 08:00 (-121d) | 2015-07-23 15:21 → 2015-03-24 11:00 (-121d) |  | -83.9d → 35.39d | 314 → none | baseline start none → 2015-08-05 10:00; baseline finish none → 2015-08-05 14:00 |
| 316 | Paginacion | 2015-07-23 15:21 → 2015-03-24 08:00 (-121d) | 2015-07-24 08:21 → 2015-03-24 10:00 (-122d) |  | -83.9d → 35.5d | 315 → none | baseline start none → 2015-08-05 14:00; baseline finish none → 2015-08-05 16:00 |
| 317 | BD | 2015-07-24 08:21 → 2015-03-24 08:00 (-122d) | 2015-07-24 10:21 → 2015-03-24 10:00 (-122d) |  | -83.9d → 35.5d | 316 → none | baseline start none → 2015-08-05 16:00; baseline finish none → 2015-08-06 09:00 |
| 318 | Pruebas unitarias | 2015-07-24 10:21 → 2015-03-24 08:00 (-122d) | 2015-07-24 13:21 → 2015-03-24 10:00 (-122d) |  | -83.9d → 35.5d | 317 → none | baseline start none → 2015-08-06 09:00; baseline finish none → 2015-08-06 11:00 |
| 319 | **Detalle Cotizacion(Taller)** | 2015-07-24 13:21 → 2015-03-24 08:00 (-122d) | 2015-07-28 15:21 → 2015-03-24 12:00 (-126d) | 2d → 0.44d | -83.9d → 35.28d | 312 → none | baseline start none → 2015-08-06 11:00; baseline finish none → 2015-08-11 14:00 |
| 320 | BD | 2015-07-24 13:21 → 2015-03-24 08:00 (-122d) | 2015-07-24 16:21 → 2015-03-24 11:00 (-122d) |  | -83.9d → 35.39d |  | baseline start none → 2015-08-06 11:00; baseline finish none → 2015-08-06 15:00 |
| 321 | Indicadores | 2015-07-24 16:21 → 2015-03-24 08:00 (-122d) | 2015-07-27 09:21 → 2015-03-24 10:00 (-125d) |  | -83.9d → 35.5d | 320 → none | baseline start none → 2015-08-06 15:00; baseline finish none → 2015-08-06 17:00 |
| 322 | Informacion de la solciitud | 2015-07-27 09:21 → 2015-03-24 08:00 (-125d) | 2015-07-27 13:21 → 2015-03-24 11:00 (-125d) |  | -83.9d → 35.39d | 321 → none | baseline start none → 2015-08-10 08:00; baseline finish none → 2015-08-10 11:00 |
| 323 | Imagenes | 2015-07-27 13:21 → 2015-03-24 08:00 (-125d) | 2015-07-27 15:21 → 2015-03-24 10:00 (-125d) |  | -83.9d → 35.5d | 322 → none | baseline start none → 2015-08-10 11:00; baseline finish none → 2015-08-10 14:00 |
| 324 | **Propuesta** | 2015-07-27 15:21 → 2015-03-24 08:00 (-125d) | 2015-07-28 10:21 → 2015-03-24 11:00 (-126d) | 0.44d → 0.33d | -83.9d → 35.39d | 323 → none | baseline start none → 2015-08-10 14:00; baseline finish none → 2015-08-11 09:00 |
| 325 | Datos basicos | 2015-07-27 15:21 → 2015-03-24 08:00 (-125d) | 2015-07-27 16:21 → 2015-03-24 09:00 (-125d) |  | -83.9d → 35.61d |  | baseline start none → 2015-08-10 14:00; baseline finish none → 2015-08-10 15:00 |
| 326 | Responder | 2015-07-27 16:21 → 2015-03-24 08:00 (-125d) | 2015-07-28 10:21 → 2015-03-24 11:00 (-126d) |  | -83.9d → 35.39d | 325 → none | baseline start none → 2015-08-10 15:00; baseline finish none → 2015-08-11 09:00 |
| 327 | Mensajes anteriores | 2015-07-28 10:21 → 2015-03-24 08:00 (-126d) | 2015-07-28 15:21 → 2015-03-24 12:00 (-126d) |  | -83.9d → 35.28d | 324 → none | baseline start none → 2015-08-11 09:00; baseline finish none → 2015-08-11 14:00 |
| 328 | **Mis Cotizaciones(Persona)** | 2015-07-28 15:21 → 2015-03-24 08:00 (-126d) | 2015-07-30 13:21 → 2015-03-24 12:00 (-128d) | 1.56d → 0.44d | -83.9d → 35.28d | 319 → none | baseline start none → 2015-08-11 14:00; baseline finish none → 2015-08-13 11:00 |
| 329 | BD | 2015-07-28 15:21 → 2015-03-24 08:00 (-126d) | 2015-07-29 08:21 → 2015-03-24 10:00 (-127d) |  | -83.9d → 35.5d |  | baseline start none → 2015-08-11 14:00; baseline finish none → 2015-08-11 16:00 |
| 330 | Indicadores | 2015-07-29 08:21 → 2015-03-24 08:00 (-127d) | 2015-07-29 10:21 → 2015-03-24 10:00 (-127d) |  | -83.9d → 35.5d | 329 → none | baseline start none → 2015-08-11 16:00; baseline finish none → 2015-08-12 09:00 |
| 331 | Filtro | 2015-07-29 10:21 → 2015-03-24 08:00 (-127d) | 2015-07-29 13:21 → 2015-03-24 10:00 (-127d) |  | -83.9d → 35.5d | 330 → none | baseline start none → 2015-08-12 09:00; baseline finish none → 2015-08-12 11:00 |
| 332 | Listado de propuestas | 2015-07-29 13:21 → 2015-03-24 08:00 (-127d) | 2015-07-30 08:21 → 2015-03-24 12:00 (-128d) |  | -83.9d → 35.28d | 331 → none | baseline start none → 2015-08-12 11:00; baseline finish none → 2015-08-12 16:00 |
| 333 | Paginacion | 2015-07-30 08:21 → 2015-03-24 08:00 (-128d) | 2015-07-30 10:21 → 2015-03-24 10:00 (-128d) |  | -83.9d → 35.5d | 332 → none | baseline start none → 2015-08-12 16:00; baseline finish none → 2015-08-13 09:00 |
| 334 | Pruebas unitarias | 2015-07-30 10:21 → 2015-03-24 08:00 (-128d) | 2015-07-30 13:21 → 2015-03-24 10:00 (-128d) |  | -83.9d → 35.5d | 333 → none | baseline start none → 2015-08-13 09:00; baseline finish none → 2015-08-13 11:00 |
| 335 | **Detalle Cotizacion(Persona)** | 2015-07-30 13:21 → 2015-03-24 08:00 (-128d) | 2015-08-04 08:21 → 2015-03-24 12:00 (-133d) | 2.22d → 0.44d | -83.9d → 35.28d | 328 → none | baseline start none → 2015-08-13 11:00; baseline finish none → 2015-08-18 16:00 |
| 336 | BD | 2015-07-30 13:21 → 2015-03-24 08:00 (-128d) | 2015-07-30 16:21 → 2015-03-24 11:00 (-128d) |  | -83.9d → 35.39d |  | baseline start none → 2015-08-13 11:00; baseline finish none → 2015-08-13 15:00 |
| 337 | Detalle de la solicitud | 2015-07-30 16:21 → 2015-03-24 08:00 (-128d) | 2015-07-31 09:21 → 2015-03-24 10:00 (-129d) |  | -83.9d → 35.5d | 336 → none | baseline start none → 2015-08-13 15:00; baseline finish none → 2015-08-13 17:00 |
| 338 | Listado de propuestas | 2015-07-31 09:21 → 2015-03-24 08:00 (-129d) | 2015-07-31 14:21 → 2015-03-24 12:00 (-129d) |  | -83.9d → 35.28d | 337 → none | baseline start none → 2015-08-14 08:00; baseline finish none → 2015-08-14 12:00 |
| 339 | Detalle de propuesta | 2015-07-31 14:21 → 2015-03-24 08:00 (-129d) | 2015-08-03 08:21 → 2015-03-24 11:00 (-132d) |  | -83.9d → 35.39d | 338 → none | baseline start none → 2015-08-14 13:00; baseline finish none → 2015-08-14 16:00 |
| 340 | Aceptar/Rechazar propiesta | 2015-08-03 08:21 → 2015-03-24 08:00 (-132d) | 2015-08-03 10:21 → 2015-03-24 10:00 (-132d) |  | -83.9d → 35.5d | 339 → none | baseline start none → 2015-08-14 16:00; baseline finish none → 2015-08-18 09:00 |
| 341 | Responder mensajes | 2015-08-03 10:21 → 2015-03-24 08:00 (-132d) | 2015-08-03 14:21 → 2015-03-24 11:00 (-132d) |  | -83.9d → 35.39d | 340 → none | baseline start none → 2015-08-18 09:00; baseline finish none → 2015-08-18 12:00 |
| 342 | Pruebas unitarias | 2015-08-03 14:21 → 2015-03-24 08:00 (-132d) | 2015-08-04 08:21 → 2015-03-24 11:00 (-133d) |  | -83.9d → 35.39d | 341 → none | baseline start none → 2015-08-18 13:00; baseline finish none → 2015-08-18 16:00 |
| 343 | **Diseño Web** | 2015-07-17 16:51 → 2015-03-24 08:00 (-115d) | 2015-07-29 16:56 → 2015-03-24 17:00 (-127d) | 7.12d → 0.89d | -76.44d → 34.83d | 284 → none | baseline start none → 2015-07-23 09:30; baseline finish none → 2015-08-04 09:30 |
| 345 | Paso1 | 2015-07-20 15:58 → 2015-03-24 08:00 (-118d) | 2015-07-21 15:06 → 2015-03-24 17:00 (-119d) | 0.79d → 0.89d | -76.44d → 34.83d | Publicacion Servicio → none | baseline start none → 2015-07-23 09:30; baseline finish none → 2015-07-24 09:30 |
| 346 | Paso2 | 2015-07-21 15:06 → 2015-03-24 08:00 (-119d) | 2015-07-22 14:13 → 2015-03-24 17:00 (-120d) | 0.79d → 0.89d | -76.44d → 34.83d | 345 → none | baseline start none → 2015-07-24 09:30; baseline finish none → 2015-07-27 09:30 |
| 347 | Paso3 | 2015-07-22 14:13 → 2015-03-24 08:00 (-120d) | 2015-07-23 13:20 → 2015-03-24 17:00 (-121d) | 0.79d → 0.89d | -76.44d → 34.83d | 346 → none | baseline start none → 2015-07-27 09:30; baseline finish none → 2015-07-28 09:30 |
| 348 | Publicar Cotizacion | 2015-07-23 13:20 → 2015-03-24 08:00 (-121d) | 2015-07-24 11:27 → 2015-03-24 17:00 (-122d) | 0.79d → 0.89d | -76.44d → 34.83d | 347 → none | baseline start none → 2015-07-28 09:30; baseline finish none → 2015-07-29 09:30 |
| 349 | Mis Cotizaciones (Taller) | 2015-07-24 11:27 → 2015-03-24 08:00 (-122d) | 2015-07-27 10:34 → 2015-03-24 17:00 (-125d) | 0.79d → 0.89d | -76.44d → 34.83d | 348 → none | baseline start none → 2015-07-29 09:30; baseline finish none → 2015-07-30 09:30 |
| 350 | Detalle Cotizacion(Taller) | 2015-07-27 10:34 → 2015-03-24 08:00 (-125d) | 2015-07-28 09:42 → 2015-03-24 17:00 (-126d) | 0.79d → 0.89d | -76.44d → 34.83d | 349 → none | baseline start none → 2015-07-30 09:30; baseline finish none → 2015-07-31 09:30 |
| 351 | Mis Cotizaciones(Persona) | 2015-07-28 09:42 → 2015-03-24 08:00 (-126d) | 2015-07-29 08:49 → 2015-03-24 17:00 (-127d) | 0.79d → 0.89d | -76.44d → 34.83d | 350 → none | baseline start none → 2015-07-31 09:30; baseline finish none → 2015-08-03 09:30 |

| ID | Task | Start | Finish | Duration | Total float | Predecessors | Other |
| --- | --- | --- | --- | --- | --- | --- | --- |
| 352 | Detalle Cotizacion(Persona) | 2015-07-29 08:49 → 2015-03-24 08:00 (-127d) | 2015-07-29 16:56 → 2015-03-24 17:00 (-127d) | 0.79d → 0.89d | -76.44d → 34.83d | 351 → none | baseline start none → 2015-08-03 09:30; baseline finish none → 2015-08-04 09:30 |
| 353 | Pruebas Generales | 2015-08-04 08:21 → 2015-03-24 08:00 (-133d) | 2015-08-06 14:43 → 2015-03-26 17:00 (-133d) | 2.37d → 2.67d | -83.9d → 33.06d | 303 → none | baseline start none → 2015-08-18 16:00; baseline finish none → 2015-08-21 16:00 |
| 354 | Correciones | 2015-08-06 14:43 → 2015-03-24 08:00 (-135d) | 2015-08-11 11:04 → 2015-03-26 17:00 (-138d) | 2.37d → 2.67d | -83.9d → 33.06d | 353 → none | baseline start none → 2015-08-21 16:00; baseline finish none → 2015-08-26 16:00 |
